# Palashbari Sualkuchi Bridge Project

Schedule from Primavera P6, 2024-02-01 to 2028-06-06, data date 2024-06-07, A marks actual dates.
Must finish by 2028-06-06

## Calendars

- Palasbari Project Calendar: Mon-Sat 08:00-16:00; Sun off. Exceptions (off unless hours are given): 2024-02-13 08:00-16:00, 2025-06-01 08:00-16:00, 2025-06-09 to 2025-06-14, 2025-06-16 to 2025-06-21, 2025-06-23 to 2025-06-28, 2025-06-30 to 2025-07-05, 2025-07-07 to 2025-07-12, 2025-07-14 to 2025-07-19, 2025-07-21 to 2025-07-26, 2025-07-28 to 2025-08-02, 2025-08-04 to 2025-08-09, 2025-08-11 to 2025-08-16, 2025-08-18 to 2025-08-23, 2025-08-25 to 2025-08-30, 2025-09-01 to 2025-09-06, 2025-09-08 to 2025-09-13, 2025-09-15 to 2025-09-20, 2025-09-22 to 2025-09-27, 2025-09-29 to 2025-09-30, 2026-06-08 to 2026-06-13, 2026-06-15 to 2026-06-20, 2026-06-22 to 2026-06-27, 2026-06-29 to 2026-07-04, 2026-07-06 to 2026-07-11, 2026-07-13 to 2026-07-18, 2026-07-20 to 2026-07-25, 2026-07-27 to 2026-08-01, 2026-08-03 to 2026-08-08, 2026-08-10 to 2026-08-15, 2026-08-17 to 2026-08-22, 2026-08-24 to 2026-08-29, 2026-08-31 to 2026-09-05, 2026-09-07 to 2026-09-12, 2026-09-14 to 2026-09-19, 2026-09-21 to 2026-09-26, 2026-09-28 to 2026-09-30, 2027-06-08 to 2027-06-12, 2027-06-14 to 2027-06-19, 2027-06-21 to 2027-06-26, 2027-06-28 to 2027-07-03, 2027-07-05 to 2027-07-10, 2027-07-12 to 2027-07-17, 2027-07-19 to 2027-07-24, 2027-07-26 to 2027-07-31, 2027-08-02 to 2027-08-07, 2027-08-09 to 2027-08-14, 2027-08-16 to 2027-08-21, 2027-08-23 to 2027-08-28, 2027-08-30 to 2027-09-04, 2027-09-06 to 2027-09-11, 2027-09-13 to 2027-09-18, 2027-09-20 to 2027-09-25, 2027-09-27 to 2027-09-30.
- 24x7 Calendar: Mon-Sun 01:00-12:00, 13:00-00:00.
- Monsoon Calendar: Mon-Sat 08:00-16:00; Sun off. Exceptions (off unless hours are given): 2025-04-05 08:00-16:00, 2025-04-12 08:00-16:00, 2025-04-19 08:00-16:00, 2025-04-26 08:00-16:00, 2025-05-03 08:00-16:00, 2025-05-10 08:00-16:00, 2025-05-17 08:00-16:00, 2025-05-24 08:00-16:00, 2025-05-31 08:00-16:00, 2025-06-02 to 2025-06-07 10:00-14:00, 2025-06-09 to 2025-06-14 10:00-14:00, 2025-06-16 to 2025-06-21 10:00-14:00, 2025-06-23 to 2025-06-28 10:00-14:00, 2025-06-30 to 2025-07-05 10:00-14:00, 2025-07-07 to 2025-07-12 10:00-14:00, 2025-07-14 to 2025-07-19 10:00-14:00, 2025-07-21 to 2025-07-26 10:00-14:00, 2025-07-28 to 2025-08-02 10:00-14:00, 2025-08-04 to 2025-08-09 10:00-14:00, 2025-08-11 to 2025-08-16 10:00-14:00, 2025-08-18 to 2025-08-23 10:00-14:00, 2025-08-25 to 2025-08-30 10:00-14:00, 2025-09-01 to 2025-09-06 10:00-14:00, 2025-09-08 to 2025-09-13 10:00-14:00, 2025-09-15 to 2025-09-20 10:00-14:00, 2025-09-22 to 2025-09-27 10:00-14:00, 2025-09-29 to 2025-09-30 10:00-14:00, 2025-10-04 08:00-16:00, 2025-10-11 08:00-16:00, 2025-10-18 08:00-16:00, 2025-10-25 08:00-16:00, 2025-11-01 08:00-16:00, 2025-11-08 08:00-16:00, 2025-11-15 08:00-16:00, 2025-11-22 08:00-16:00, 2025-11-29 08:00-16:00, 2025-12-06 08:00-16:00, 2025-12-13 08:00-16:00, 2025-12-20 08:00-16:00, 2025-12-27 08:00-16:00, 2026-01-03 08:00-16:00, 2026-01-10 08:00-16:00, 2026-01-17 08:00-16:00, 2026-01-24 08:00-16:00, 2026-01-31 08:00-16:00, 2026-02-07 08:00-16:00, 2026-02-14 08:00-16:00, 2026-02-21 08:00-16:00, 2026-02-28 08:00-16:00, 2026-03-07 08:00-16:00, 2026-03-14 08:00-16:00, 2026-03-21 08:00-16:00, 2026-03-28 08:00-16:00, 2026-04-04 08:00-16:00, 2026-04-11 08:00-16:00, 2026-04-18 08:00-16:00, 2026-04-25 08:00-16:00, 2026-05-02 08:00-16:00, 2026-05-09 08:00-16:00, 2026-05-16 08:00-16:00, 2026-05-23 08:00-16:00, 2026-05-30 08:00-16:00, 2026-06-01 to 2026-06-06 10:00-14:00, 2026-06-08 to 2026-06-13 10:00-14:00, 2026-06-15 to 2026-06-20 10:00-14:00, 2026-06-22 to 2026-06-27 10:00-14:00, 2026-06-29 to 2026-07-04 10:00-14:00, 2026-07-06 to 2026-07-11 10:00-14:00, 2026-07-13 to 2026-07-18 10:00-14:00, 2026-07-20 to 2026-07-25 10:00-14:00, 2026-07-27 to 2026-08-01 10:00-14:00, 2026-08-03 to 2026-08-08 10:00-14:00, 2026-08-10 to 2026-08-15 10:00-14:00, 2026-08-17 to 2026-08-22 10:00-14:00, 2026-08-24 to 2026-08-29 10:00-14:00, 2026-08-31 to 2026-09-05 10:00-14:00, 2026-09-07 to 2026-09-12 10:00-14:00, 2026-09-14 to 2026-09-19 10:00-14:00, 2026-09-21 to 2026-09-26 10:00-14:00, 2026-09-28 to 2026-09-30 10:00-14:00, 2026-11-07 08:00-16:00, 2026-11-14 08:00-16:00, 2026-11-21 08:00-16:00, 2026-11-28 08:00-16:00, 2026-12-05 08:00-16:00, 2026-12-12 08:00-16:00, 2026-12-19 08:00-16:00, 2026-12-26 08:00-16:00, 2027-01-02 08:00-16:00, 2027-01-09 08:00-16:00, 2027-01-16 08:00-16:00, 2027-01-23 08:00-16:00, 2027-01-30 08:00-16:00, 2027-02-06 08:00-16:00, 2027-02-13 08:00-16:00, 2027-02-20 08:00-16:00, 2027-02-27 08:00-16:00, 2027-03-06 08:00-16:00, 2027-03-13 08:00-16:00, 2027-03-20 08:00-16:00, 2027-03-27 08:00-16:00, 2027-04-03 08:00-16:00, 2027-04-10 08:00-16:00, 2027-04-17 08:00-16:00, 2027-04-24 08:00-16:00, 2027-05-15 08:00-16:00, 2027-05-22 08:00-16:00, 2027-05-29 08:00-16:00, 2027-06-01 to 2027-06-05 10:00-14:00, 2027-06-07 to 2027-06-12 10:00-14:00, 2027-06-14 to 2027-06-19 10:00-14:00, 2027-06-21 to 2027-06-26 10:00-14:00, 2027-06-28 to 2027-07-03 10:00-14:00, 2027-07-05 to 2027-07-10 10:00-14:00, 2027-07-12 to 2027-07-17 10:00-14:00, 2027-07-19 to 2027-07-24 10:00-14:00, 2027-07-26 to 2027-07-31 10:00-14:00, 2027-08-02 to 2027-08-07 10:00-14:00, 2027-08-09 to 2027-08-14 10:00-14:00, 2027-08-16 to 2027-08-21 10:00-14:00, 2027-08-23 to 2027-08-28 10:00-14:00, 2027-08-30 to 2027-09-04 10:00-14:00, 2027-09-06 to 2027-09-11 10:00-14:00, 2027-09-13 to 2027-09-18 10:00-14:00, 2027-09-20 to 2027-09-25 10:00-14:00, 2027-09-27 to 2027-09-30 10:00-14:00, 2027-10-02 08:00-16:00, 2027-10-09 08:00-16:00, 2027-10-16 08:00-16:00, 2027-10-23 08:00-16:00, 2027-10-30 08:00-16:00, 2027-11-06 08:00-16:00, 2027-11-13 08:00-16:00, 2027-11-20 08:00-16:00, 2027-11-27 08:00-16:00, 2027-12-04 08:00-16:00, 2027-12-11 08:00-16:00, 2027-12-18 08:00-16:00, 2027-12-25 08:00-16:00, 2028-01-01 08:00-16:00, 2028-01-08 08:00-16:00, 2028-01-15 08:00-16:00, 2028-01-22 08:00-16:00, 2028-01-29 08:00-16:00, 2028-02-05 08:00-16:00, 2028-02-12 08:00-16:00, 2028-02-19 08:00-16:00, 2028-02-26 08:00-16:00, 2028-03-04 08:00-16:00, 2028-03-11 08:00-16:00, 2028-03-18 08:00-16:00, 2028-03-25 08:00-16:00.

## Resources

| Resource | Group | Notes |
| --- | --- | --- |
| Piling Rig 1 | equipment | ï»¿ |
| Crane 1 | equipment | ï»¿ |
| Crane 2 | equipment | ï»¿ |
| Crane 14 | equipment | ï»¿ |
| Barge-1 | equipment | ï»¿ |
| Crane 15 | equipment | ï»¿ |
| Barge-2 | equipment | ï»¿ |
| Crane 16 | equipment | ï»¿ |
| Barge-3 | equipment | ï»¿ |
| Crane 17 | equipment | ï»¿ |
| Barge-4 | equipment | ï»¿ |
| Crane 18 | equipment | ï»¿ |
| Barge-5 | equipment | ï»¿ |
| Crane 19 | equipment | ï»¿ |
| Barge-6 | equipment | ï»¿ |
| Crane 6 | equipment | ï»¿ |
| Crane 7 | equipment | ï»¿ |
| Crane 8 | equipment | ï»¿ |
| Crane 9 | equipment | ï»¿ |
| Crane 10 | equipment | ï»¿ |
| Crane 11 | equipment | ï»¿ |
| Crane 12 | equipment | ï»¿ |
| Crane 13 | equipment | ï»¿ |
| Piling Rig 2 | equipment | ï»¿ |
| Bridge Builder-1 | equipment | ï»¿ |
| Bridge Builder-2 | equipment | ï»¿ |
| Barge-7 | equipment | ï»¿ |
| Bridge Builder-3 | equipment | ï»¿ |
| Bridge Builder-4 | equipment | ï»¿ |
| Bridge Builder-5 | equipment | ï»¿ |
| Bridge Builder-6 | equipment | ï»¿ |
| Bridge Builder-7 | equipment | ï»¿ |
| Bridge Builder-8 | equipment | ï»¿ |
| Bridge Builder-9 | equipment | ï»¿ |
| Crane 3 | equipment | ï»¿ |
| Crane 4 | equipment | ï»¿ |
| Crane 5 | equipment | ï»¿ |

## Schedule

| ID | WBS | Activity | Type | Duration | Start | Finish | Predecessors | Complete | Remaining | Planned start | Planned finish | Total float | Free float | Constraint | Calendar |
| --- | --- | --- | --- | --- | --- | --- | --- | --- | --- | --- | --- | --- | --- | --- | --- |
|  | 8 | **Activities Prior to Commencement** |  |  | 2024-02-01 | 2024-08-26 |  |  |  |  |  |  |  |  |  |
| A1020 |  | Submission of Initial Program |  | 13d | 2024-02-01 A | 2024-02-14 A | A1010 SS | 100% |  |  |  |  |  | finish on 2024-02-14 | 24x7 Calendar |
| A1060 |  | Submission of PBG & ESHS Performance Security |  | 18d | 2024-02-01 A | 2024-02-19 A | A1010 SS | 100% |  |  |  |  |  | finish on 2024-02-06 | 24x7 Calendar |
| A1010 |  | Issuance of LOA | milestone | 0d | 2024-02-01 A | 2024-02-01 A |  | 100% |  |  |  |  |  | mandatory start 2024-02-01 | 24x7 Calendar |
| A1030 |  | Submission of Construction Methodology |  | 13d | 2024-02-01 A | 2024-02-14 A | A1010 SS | 100% |  |  |  |  |  | finish on 2024-02-14 | 24x7 Calendar |
| A1040 |  | Submission of Environmental Management Plan |  | 13d | 2024-02-01 A | 2024-02-14 A | A1010 SS | 100% |  |  |  |  |  | finish on 2024-02-14 | 24x7 Calendar |
| A1070 |  | Signing of Contract Agreement | milestone | 0d | 2024-03-01 A | 2024-03-01 A |  | 100% |  |  |  |  |  | start on 2024-03-01 | 24x7 Calendar |
| A1080 |  | Submission of BG for Mobilization Advance - 1 |  | 17d | 2024-03-01 A | 2024-03-18 A | A1070 | 100% |  |  |  |  |  |  | 24x7 Calendar |
| A1120 |  | Submission of Other Insurances |  | 35d | 2024-03-01 A | 2024-04-05 A | A1070 | 100% |  |  |  |  |  | start on or after 2024-03-01 | 24x7 Calendar |
| A1110 |  | Submission of CAR Policy |  | 105d | 2024-03-01 A | 2024-06-15 A | A1070 | 100% |  | 2024-03-01 | 2024-06-14 |  |  |  | 24x7 Calendar |
| A1090 |  | Receipt of Mobilisation Advance-1 |  | 60d | 2024-03-07 A | 2024-05-06 A | A1080 | 100% |  |  |  |  |  |  | 24x7 Calendar |
| A1140 |  | Appointment of Design Director |  | 22d | 2024-03-12 A | 2024-04-03 A | A1070 | 100% |  |  |  |  |  |  | 24x7 Calendar |
| A1150 |  | Submission of credentials for Independent Design Checker |  | 23d | 2024-03-23 A | 2024-04-15 A | A1070 | 100% |  |  |  |  |  |  | 24x7 Calendar |
| A1130 |  | Appointment of Contractor's Representative |  | 128d | 2024-04-08 A | 2024-06-07 A | A1070 | 100% |  | 2024-02-01 | 2024-06-08 |  |  |  | 24x7 Calendar |
| A1170 |  | Submission of credentials of Safety Consultant |  | 37d | 2024-04-08 A | 2024-05-15 A | A1070 | 100% |  |  |  |  |  |  | 24x7 Calendar |
| A1190 |  | Appointment of DAAB |  | 25d | 2024-04-12 A | 2024-08-26 | A1070 FS+10.91d |  | 80d | 2024-04-12 | 2024-05-07 | 0d |  |  | 24x7 Calendar |
| A1160 |  | Approval of Independent Design Checker |  | 10d | 2024-05-18 A | 2024-05-28 A | A1150 | 100% |  |  |  |  |  |  | 24x7 Calendar |
| A1175 |  | Approval of Safety Consultant |  | 12d | 2024-05-29 A | 2024-06-10 A | A1170 | 100% |  |  |  |  |  |  | 24x7 Calendar |
| A1165 |  | Appointment of Independent Design Checker |  | 1d | 2024-06-06 A | 2024-06-07 A | A1160 | 100% |  | 2024-06-07 | 2024-06-08 |  |  |  | 24x7 Calendar |
| A1180 |  | Appointment of Safety Consultant |  | 10d | 2024-06-11 A | 2024-06-12 A | A1175 | 100% |  | 2024-06-11 | 2024-06-21 |  |  |  | 24x7 Calendar |
|  | 1 | **Milestones** |  |  | 2024-06-07 | 2028-06-06 |  |  |  |  |  |  |  |  |  |
| MS_1000 |  | "Commencement of Project" - To be notified by Employer/AE | milestone | 0d | 2024-06-07 | 2024-06-07 | A1080, A1090, A1110, A1120, A1130, A1140, A1150, A1160, A1170, A1180, A1165, A1190 SS |  |  |  |  | 0d |  | start on 2024-06-07 | 24x7 Calendar |
| MS_1010 |  | Milestone 1 - Financial Progress of 10% | milestone | 0d | 2025-08-31 | 2025-08-31 | MS_1000, C_SE_1080, C_SE_1060, C_SE_1070, C_SE_1100, C_SE_1085, C_SE_1055, C_SE_1040, C_SE_1030, C_SE_1000, C_SE_1005 |  |  |  |  | 0d | 1010.32d | finish on 2025-08-31 | 24x7 Calendar |
| MS_1020 |  | Milestone 2 - Financial Progress of 35% | milestone | 0d | 2026-06-06 | 2026-06-06 | MS_1000, ROW_1010 |  |  |  |  | 0d | 731.32d | finish on 2026-06-06 | 24x7 Calendar |
| MS_1030 |  | Milestone 3 - Financial Progress of 65% | milestone | 0d | 2027-06-06 | 2027-06-06 | MS_1000 |  |  |  |  | 0d | 366d | finish on 2027-06-06 | 24x7 Calendar |
| MS_1040 |  | End of Project: Milestone 4 - Financial Progress of 100% | milestone | 0d | 2028-06-06 | 2028-06-06 | C_FW_1010, C_FW_1000, C_FW_1020, C_FW_1030, C_Test_1000, C_Dr_1030, C_FW_1040, MS_1010, MS_1020, MS_1030, C_FW_1050 |  |  |  |  | 0d |  | finish on 2028-06-06 | 24x7 Calendar |

| ID | WBS | Activity | Type | Duration | Start | Finish | Predecessors | Total float | Free float | Constraint | Calendar |
| --- | --- | --- | --- | --- | --- | --- | --- | --- | --- | --- | --- |
|  | 2 | **Right of Way** |  |  | 2024-06-07 | 2024-12-04 |  |  |  |  |  |
| ROW_1010 |  | Stretch 2: Main Bridge P5 to Main Bridge P30 |  | 180d | 2024-06-07 | 2024-12-04 | MS_1000 | 22.32d | 0.32d | start on or after 2024-06-07 | 24x7 Calendar |
| ROW_1020 |  | Stretch 1: 0+000 to Main Bridge P5 | milestone | 0d | 2024-06-22 | 2024-06-22 | MS_1000 FS+15d | 7.32d | 0.32d |  | 24x7 Calendar |
| ROW_1030 |  | Stretch 3: Main Bridge P30 to 12+200 | milestone | 0d | 2024-06-22 | 2024-06-22 | MS_1000 FS+15d | 0.32d |  |  | 24x7 Calendar |
|  | 3 | **Others** |  |  | 2024-06-07 | 2024-11-16 |  |  |  |  |  |
| SI_1030 |  | Utility Clearances |  | 90d | 2024-06-07 | 2024-09-19 | MS_1000 | 41d | 8d |  |  |
| SI_1040 |  | Submision of BG for Mobilisation Advance - 2 |  | 120d | 2024-06-29 | 2024-10-27 | A1070 FF+240d | 24.32d | 0d |  | 24x7 Calendar |
| SI_1050 |  | Receipt of Mobilisation Advance-2 |  | 20d | 2024-10-27 | 2024-11-16 | SI_1040 | 24.32d | 17.32d |  | 24x7 Calendar |
|  | 4 | **Preliminary Surveys** |  |  | 2024-06-07 | 2024-06-24 |  |  |  |  |  |
|  | 1 | **Geotechnical Survey** |  |  | 2024-06-07 | 2024-06-24 |  |  |  |  |  |
| PS_GS_1000 |  | Identification of borehole locations with coordinates |  | 5d | 2024-06-07 | 2024-06-12 | MS_1000 | 15d | 0d |  |  |
| PS_GS_1010 |  | Collection and Interpretation of bore hole data |  | 10d | 2024-06-13 | 2024-06-24 | PS_GS_1000 | 15d | 0d |  |  |
|  | 2 | **Topographical & Bathymetry Survey** |  |  | 2024-06-07 | 2024-06-24 |  |  |  |  |  |
| PS_TS_1000 |  | DGPS Survey and Marking |  | 5d | 2024-06-07 | 2024-06-12 | MS_1000 | 39d | 0d |  |  |
| PS_TS_1010 |  | Establishment of concrete survey pillars |  | 10d | 2024-06-13 | 2024-06-24 | PS_TS_1000 | 183d | 60d |  |  |
|  | 5 | **Design** |  |  | 2024-06-07 | 2024-11-16 |  |  |  |  |  |
|  | 6 | **Initial Design Stage** |  |  | 2024-06-07 | 2024-09-02 |  |  |  |  |  |
|  | 1 | **Alignment Plan & Profile** |  |  | 2024-06-07 | 2024-08-01 |  |  |  |  |  |
| D_PP_1000 |  | P&P-Submission to Client |  | 20d | 2024-06-07 | 2024-06-27 | PS_TS_1000 SS | 46d | 0d |  | 24x7 Calendar |
| D_PP_1010 |  | P&P-Review/Approval by Client |  | 15d | 2024-06-27 | 2024-07-12 | D_PP_1000 | 46d | 0d |  | 24x7 Calendar |
| D_PP_1020 |  | P&P-Resubmission to Client |  | 10d | 2024-07-12 | 2024-07-22 | D_PP_1010 | 46d | 0d |  | 24x7 Calendar |
| D_PP_1030 |  | P&P-Approval by Client |  | 10d | 2024-07-22 | 2024-08-01 | D_PP_1020 | 46d | 0d |  | 24x7 Calendar |
|  | 7 | **Drainage Plan & Profile** |  |  | 2024-06-07 | 2024-08-01 |  |  |  |  |  |
| D_DPP_1000 |  | P&P-Submission to Client |  | 20d | 2024-06-07 | 2024-06-27 | MS_1000 | 203.32d | 0d |  | 24x7 Calendar |
| D_DPP_1010 |  | P&P-Review/Approval by Client |  | 15d | 2024-06-27 | 2024-07-12 | D_DPP_1000 | 203.32d | 0d |  | 24x7 Calendar |
| D_DPP_1020 |  | P&P-Resubmission to Client |  | 10d | 2024-07-12 | 2024-07-22 | D_DPP_1010 | 203.32d | 0d |  | 24x7 Calendar |
| D_DPP_1030 |  | P&P-Approval by Client |  | 10d | 2024-07-22 | 2024-08-01 | D_DPP_1020 | 203.32d | 0d |  | 24x7 Calendar |

| ID | WBS | Activity | Duration | Start | Finish | Predecessors | Total float | Free float | Calendar |
| --- | --- | --- | --- | --- | --- | --- | --- | --- | --- |
|  | 2 | **General Arrangement Drawing - Main Bridge** |  | 2024-06-29 | 2024-09-02 |  |  |  |  |
| D_GAD_MB_1000 |  | Bridge GAD-Submission to Client | 15d | 2024-06-29 | 2024-07-14 | PS_GS_1010 SS+15d | 18.68d | 0d | 24x7 Calendar |
| D_GAD_MB_1010 |  | Bridge GAD-Review/Approval by Client | 30d | 2024-07-14 | 2024-08-13 | D_GAD_MB_1000 | 18.68d | 0d | 24x7 Calendar |
| D_GAD_MB_1020 |  | Bridge GAD-Resubmission to Client | 10d | 2024-08-13 | 2024-08-23 | D_GAD_MB_1010 | 18.68d | 0d | 24x7 Calendar |
| D_GAD_MB_1030 |  | Bridge GAD-Approval by Client | 10d | 2024-08-23 | 2024-09-02 | D_GAD_MB_1020 | 18.68d | 0d | 24x7 Calendar |
|  | 3 | **General Arrangement Drawing - Wetland Viaduct** |  | 2024-06-07 | 2024-08-01 |  |  |  |  |
| D_GAD_WV_1000 |  | WV GAD-Submission to Client | 20d | 2024-06-07 | 2024-06-27 | MS_1000 | 38.32d | 0d | 24x7 Calendar |
| D_GAD_WV_1010 |  | WV GAD-Review/Approval by Client | 15d | 2024-06-27 | 2024-07-12 | D_GAD_WV_1000 | 38.32d | 0d | 24x7 Calendar |
| D_GAD_WV_1020 |  | WV GAD-Resubmission to Client | 10d | 2024-07-12 | 2024-07-22 | D_GAD_WV_1010 | 38.32d | 0d | 24x7 Calendar |
| D_GAD_WV_1030 |  | WV GAD-Approval by Client | 10d | 2024-07-22 | 2024-08-01 | D_GAD_WV_1020 | 38.32d | 0d | 24x7 Calendar |
|  | 6 | **General Arrangement Drawing - VUPs and Box Culverts** |  | 2024-06-07 | 2024-08-01 |  |  |  |  |
| D_GAD_Misc_1000 |  | Misc GAD-Submission to Client | 20d | 2024-06-07 | 2024-06-27 | MS_1000 | 36.5d | 0d | 24x7 Calendar |
| D_GAD_Misc_1010 |  | Misc GAD-Review/Approval by Client | 15d | 2024-06-27 | 2024-07-12 | D_GAD_Misc_1000 | 36.5d | 0d | 24x7 Calendar |
| D_GAD_Misc_1020 |  | Misc GAD-Resubmission to Client | 10d | 2024-07-12 | 2024-07-22 | D_GAD_Misc_1010 | 36.5d | 0d | 24x7 Calendar |
| D_GAD_Misc_1030 |  | Misc GAD-Approval by Client | 10d | 2024-07-22 | 2024-08-01 | D_GAD_Misc_1020 | 36.5d | 0d | 24x7 Calendar |
|  | 4 | **Design Basis Report - Main Bridge** |  | 2024-06-29 | 2024-09-02 |  |  |  |  |
| D_DBR_MB_1000 |  | Bridge DBR-Submission to Client | 15d | 2024-06-29 | 2024-07-14 | PS_GS_1010 SS+15d | 18.68d | 0d | 24x7 Calendar |
| D_DBR_MB_1010 |  | Bridge DBR-Review/Approval by Client | 30d | 2024-07-14 | 2024-08-13 | D_DBR_MB_1000 | 18.68d | 0d | 24x7 Calendar |
| D_DBR_MB_1020 |  | Bridge DBR-Resubmission to Client | 10d | 2024-08-13 | 2024-08-23 | D_DBR_MB_1010 | 18.68d | 0d | 24x7 Calendar |
| D_DBR_MB_1030 |  | Bridge DBR-Approval by Client | 10d | 2024-08-23 | 2024-09-02 | D_DBR_MB_1020 | 18.68d | 0d | 24x7 Calendar |
|  | 5 | **Design Basis Report - Wetland Viaduct** |  | 2024-06-07 | 2024-08-01 |  |  |  |  |
| D_DBR_WV_1000 |  | WV DBR-Submission to Client | 20d | 2024-06-07 | 2024-06-27 | MS_1000 SS | 453.32d | 0d | 24x7 Calendar |
| D_DBR_WV_1010 |  | WV DBR-Review/Approval by Client | 15d | 2024-06-27 | 2024-07-12 | D_DBR_WV_1000 | 453.32d | 0d | 24x7 Calendar |
| D_DBR_WV_1020 |  | WV DBR-Resubmission to Client | 10d | 2024-07-12 | 2024-07-22 | D_DBR_WV_1010 | 453.32d | 0d | 24x7 Calendar |
| D_DBR_WV_1030 |  | WV DBR-Approval by Client | 10d | 2024-07-22 | 2024-08-01 | D_DBR_WV_1020 | 453.32d | 0d | 24x7 Calendar |

| ID | WBS | Activity | Duration | Start | Finish | Predecessors | Total float | Free float | Calendar |
| --- | --- | --- | --- | --- | --- | --- | --- | --- | --- |
|  | 8 | **Technical & Construction Stage** |  | 2024-08-01 | 2024-11-16 |  |  |  |  |
|  | 4 | **Main Bridge - P31 to A2** |  | 2024-08-01 | 2024-11-01 |  |  |  |  |
|  | 1 | **Foundation** |  | 2024-08-01 | 2024-09-30 |  |  |  |  |
| D_MB_F_1040 |  | P31 to A2 Foundation-Submission to Client | 25d | 2024-08-01 | 2024-08-26 | D_GAD_WV_1030 | 894.32d | 0d | 24x7 Calendar |
| D_MB_F_1050 |  | P31 to A2 Foundation-Review/Approval by Client | 15d | 2024-08-26 | 2024-09-10 | D_MB_F_1040 | 894.32d | 0d | 24x7 Calendar |
| D_MB_F_1060 |  | P31 to A2 Foundation-Resubmission to Client | 10d | 2024-09-10 | 2024-09-20 | D_MB_F_1050 | 894.32d | 0d | 24x7 Calendar |
| D_MB_F_1070 |  | P31 to A2 Foundation-Approval by Client - GFC | 10d | 2024-09-20 | 2024-09-30 | D_MB_F_1060 | 894.32d | 234.32d | 24x7 Calendar |
|  | 2 | **Sub-Structure** |  | 2024-09-02 | 2024-11-01 |  |  |  |  |
| D_MB_SuS_1040 |  | P31 to A2 Sub Structure-Submission to Client | 25d | 2024-09-02 | 2024-09-27 | D_GAD_MB_1030 | 1169.68d | 0d | 24x7 Calendar |
| D_MB_SuS_1050 |  | P31 to A2 Sub Structure-Review/Approval by Client | 15d | 2024-09-27 | 2024-10-12 | D_MB_SuS_1040 | 1169.68d | 0d | 24x7 Calendar |
| D_MB_SuS_1060 |  | P31 to A2 Sub Structure-Resubmission to Client | 10d | 2024-10-12 | 2024-10-22 | D_MB_SuS_1050 | 1169.68d | 0d | 24x7 Calendar |
| D_MB_SuS_1070 |  | P31 to A2 Sub Structure-Approval by Client - GFC | 10d | 2024-10-22 | 2024-11-01 | D_MB_SuS_1060 | 1169.68d | 343.68d | 24x7 Calendar |
|  | 3 | **Super Structure** |  | 2024-09-02 | 2024-11-01 |  |  |  |  |
| D_MB_SS_1040 |  | P31 to A2 Super Structure-Submission to Client | 25d | 2024-09-02 | 2024-09-27 | D_GAD_MB_1030 | 913.86d | 0d | 24x7 Calendar |
| D_MB_SS_1050 |  | P31 to A2 Super Structure-Review/Approval by Client | 15d | 2024-09-27 | 2024-10-12 | D_MB_SS_1040 | 913.86d | 0d | 24x7 Calendar |
| D_MB_SS_1060 |  | P31 to A2 Super Structure-Resubmission to Client | 10d | 2024-10-12 | 2024-10-22 | D_MB_SS_1050 | 913.86d | 0d | 24x7 Calendar |
| D_MB_SS_1070 |  | P31 to A2 Super Structure-Approval by Client - GFC | 10d | 2024-10-22 | 2024-11-01 | D_MB_SS_1060 | 913.86d | 451.68d | 24x7 Calendar |
|  | 1 | **Main Bridge - A1 to P5** |  | 2024-08-01 | 2024-09-30 |  |  |  |  |
|  | 1 | **Foundation** |  | 2024-08-01 | 2024-09-30 |  |  |  |  |
| D_MB_F_1000 |  | A1 to P5 Foundation-Submission to Client | 25d | 2024-08-01 | 2024-08-26 | D_GAD_WV_1030 | 38.32d | 0d | 24x7 Calendar |
| D_MB_F_1010 |  | A1 to P5 Foundation-Review/Approval by Client | 15d | 2024-08-26 | 2024-09-10 | D_MB_F_1000 | 38.32d | 0d | 24x7 Calendar |
| D_MB_F_1020 |  | A1 to P5 Foundation-Resubmission to Client | 10d | 2024-09-10 | 2024-09-20 | D_MB_F_1010 | 38.32d | 0d | 24x7 Calendar |
| D_MB_F_1030 |  | A1 to P5 Foundation-Approval by Client - GFC | 10d | 2024-09-20 | 2024-09-30 | D_MB_F_1020 | 38.32d | 0.32d | 24x7 Calendar |
|  | 2 | **Sub-Structure** |  | 2024-08-01 | 2024-09-30 |  |  |  |  |
| D_MB_SuS_1000 |  | A1 to P5 Sub Structure-Submission to Client | 25d | 2024-08-01 | 2024-08-26 | D_MB_F_1000 SS | 911.5d | 0d | 24x7 Calendar |
| D_MB_SuS_1010 |  | A1 to P5 Sub Structure-Review/Approval by Client | 15d | 2024-08-26 | 2024-09-10 | D_MB_SuS_1000 | 1197.32d | 0d | 24x7 Calendar |
| D_MB_SuS_1020 |  | A1 to P5 Sub Structure-Resubmission to Client | 10d | 2024-09-10 | 2024-09-20 | D_MB_SuS_1010 | 1197.32d | 0d | 24x7 Calendar |
| D_MB_SuS_1030 |  | A1 to P5 Sub Structure-Approval by Client - GFC | 10d | 2024-09-20 | 2024-09-30 | D_MB_SuS_1020 | 1197.32d | 59.32d | 24x7 Calendar |

| ID | WBS | Activity | Duration | Start | Finish | Predecessors | Total float | Free float | Calendar |
| --- | --- | --- | --- | --- | --- | --- | --- | --- | --- |
|  | 3 | **Super Structure** |  | 2024-08-01 | 2024-09-30 |  |  |  |  |
| D_MB_SS_1000 |  | A1 to P5 Super Structure-Submission to Client | 25d | 2024-08-01 | 2024-08-26 | D_MB_SuS_1000 SS | 911.5d | 0d | 24x7 Calendar |
| D_MB_SS_1010 |  | A1 to P5 Super Structure-Review/Approval by Client | 15d | 2024-08-26 | 2024-09-10 | D_MB_SS_1000 | 911.5d | 0d | 24x7 Calendar |
| D_MB_SS_1020 |  | A1 to P5 Super Structure-Resubmission to Client | 10d | 2024-09-10 | 2024-09-20 | D_MB_SS_1010 | 911.5d | 0d | 24x7 Calendar |
| D_MB_SS_1030 |  | A1 to P5 Super Structure-Approval by Client - GFC | 10d | 2024-09-20 | 2024-09-30 | D_MB_SS_1020 | 911.5d | 373.32d | 24x7 Calendar |
|  | 2 | **Main Bridge - 30m Pylon Piers (P6-P30)** |  | 2024-09-02 | 2024-11-16 |  |  |  |  |
|  | 1 | **Foundation** |  | 2024-09-02 | 2024-11-16 |  |  |  |  |
| D_MB_F_1080 |  | 30m Piers Foundation-Submission to Client | 25d | 2024-09-02 | 2024-09-27 | PS_GS_1010, D_PP_1030, D_GAD_MB_1030, D_DBR_MB_1030 | 18.68d | 0d | 24x7 Calendar |
| D_MB_F_1090 |  | 30m Piers Foundation-Review/Approval by Client | 30d | 2024-09-27 | 2024-10-27 | D_MB_F_1080 | 18.68d | 0d | 24x7 Calendar |
| D_MB_F_1100 |  | 30m Piers Foundation-Resubmission to Client | 10d | 2024-10-27 | 2024-11-06 | D_MB_F_1090 | 18.68d | 0d | 24x7 Calendar |
| D_MB_F_1110 |  | 30m Piers Foundation-Approval by Client - GFC | 10d | 2024-11-06 | 2024-11-16 | D_MB_F_1100 | 18.68d | 13.77d | 24x7 Calendar |
|  | 2 | **Sub-Structure** |  | 2024-09-02 | 2024-11-16 |  |  |  |  |
| D_MB_SuS_1080 |  | 30m Piers Sub Structure-Submission to Client | 25d | 2024-09-02 | 2024-09-27 | D_MB_F_1080 SS | 710.68d | 0d | 24x7 Calendar |
| D_MB_SuS_1090 |  | 30m Piers Sub Structure-Review/Approval by Client | 30d | 2024-09-27 | 2024-10-27 | D_MB_SuS_1080 | 1298.36d | 0d | 24x7 Calendar |
| D_MB_SuS_1100 |  | 30m Piers Sub Structure-Resubmission to Client | 10d | 2024-10-27 | 2024-11-06 | D_MB_SuS_1090 | 1298.36d | 0d | 24x7 Calendar |
| D_MB_SuS_1110 |  | 30m Piers Sub Structure-Approval by Client - GFC | 10d | 2024-11-06 | 2024-11-16 | D_MB_SuS_1100 | 1298.36d | 1298d | 24x7 Calendar |
|  | 3 | **Super Structure** |  | 2024-09-02 | 2024-11-16 |  |  |  |  |
| D_MB_SS_1080 |  | 30m Piers Super Structure-Submission to Client | 25d | 2024-09-02 | 2024-09-27 | D_MB_SuS_1080 SS | 710.68d | 0d | 24x7 Calendar |
| D_MB_SS_1090 |  | 30m Piers Super Structure-Review/Approval by Client | 30d | 2024-09-27 | 2024-10-27 | D_MB_SS_1080 | 710.68d | 0d | 24x7 Calendar |
| D_MB_SS_1100 |  | 30m Piers Super Structure-Resubmission to Client | 10d | 2024-10-27 | 2024-11-06 | D_MB_SS_1090 | 710.68d | 0d | 24x7 Calendar |
| D_MB_SS_1110 |  | 30m Piers Super Structure-Approval by Client - GFC | 10d | 2024-11-06 | 2024-11-16 | D_MB_SS_1100 | 710.68d | 687.68d | 24x7 Calendar |
|  | 3 | **Main Bridge - 17m Pylon Piers (P6-P30)** |  | 2024-09-02 | 2024-11-16 |  |  |  |  |
|  | 1 | **Foundation** |  | 2024-09-02 | 2024-11-16 |  |  |  |  |
| D_MB_F_1120 |  | 17m Piers Foundation-Submission to Client | 25d | 2024-09-02 | 2024-09-27 | PS_GS_1010, PS_TS_1010, D_PP_1030, D_GAD_MB_1030, D_DBR_MB_1030 | 143.68d | 0d | 24x7 Calendar |
| D_MB_F_1130 |  | 17m Piers Foundation-Review/Approval by Client | 30d | 2024-09-27 | 2024-10-27 | D_MB_F_1120 | 143.68d | 0d | 24x7 Calendar |
| D_MB_F_1140 |  | 17m Piers Foundation-Resubmission to Client | 10d | 2024-10-27 | 2024-11-06 | D_MB_F_1130 | 143.68d | 0d | 24x7 Calendar |
| D_MB_F_1150 |  | 17m Piers Foundation-Approval by Client - GFC | 10d | 2024-11-06 | 2024-11-16 | D_MB_F_1140 | 143.68d | 11.95d | 24x7 Calendar |

| ID | WBS | Activity | Duration | Start | Finish | Predecessors | Total float | Free float | Calendar |
| --- | --- | --- | --- | --- | --- | --- | --- | --- | --- |
|  | 2 | **Sub-Structure** |  | 2024-09-02 | 2024-11-16 |  |  |  |  |
| D_MB_SuS_1120 |  | 17m Piers Sub Structure-Submission to Client | 25d | 2024-09-02 | 2024-09-27 | D_MB_F_1120 SS | 1077.68d | 0d | 24x7 Calendar |
| D_MB_SuS_1130 |  | 17m Piers Sub Structure-Review/Approval by Client | 30d | 2024-09-27 | 2024-10-27 | D_MB_SuS_1120 | 1298.36d | 0d | 24x7 Calendar |
| D_MB_SuS_1140 |  | 17m Piers Sub Structure-Resubmission to Client | 10d | 2024-10-27 | 2024-11-06 | D_MB_SuS_1130 | 1298.36d | 0d | 24x7 Calendar |
| D_MB_SuS_1150 |  | 17m Piers Sub Structure-Approval by Client - GFC | 10d | 2024-11-06 | 2024-11-16 | D_MB_SuS_1140 | 1298.36d | 1298d | 24x7 Calendar |
|  | 3 | **Super Structure** |  | 2024-09-02 | 2024-11-16 |  |  |  |  |
| D_MB_SS_1120 |  | 17m Piers Super Structure-Submission to Client | 25d | 2024-09-02 | 2024-09-27 | D_MB_SuS_1120 SS | 1077.68d | 0d | 24x7 Calendar |
| D_MB_SS_1130 |  | 17m Piers Super Structure-Review/Approval by Client | 30d | 2024-09-27 | 2024-10-27 | D_MB_SS_1120 | 1077.68d | 0d | 24x7 Calendar |
| D_MB_SS_1140 |  | 17m Piers Super Structure-Resubmission to Client | 10d | 2024-10-27 | 2024-11-06 | D_MB_SS_1130 | 1077.68d | 0d | 24x7 Calendar |
| D_MB_SS_1150 |  | 17m Piers Super Structure-Approval by Client - GFC | 10d | 2024-11-06 | 2024-11-16 | D_MB_SS_1140 | 1077.68d | 488.68d | 24x7 Calendar |
|  | 6 | **VUPs and Box Culverts** |  | 2024-08-01 | 2024-10-05 |  |  |  |  |
|  | 1 | **Foundation** |  | 2024-08-01 | 2024-10-05 |  |  |  |  |
| D_Misc_F_1000 |  | VUPs and Box Culverts Piers Foundation-Submission to Client | 20d | 2024-08-01 | 2024-08-21 | D_GAD_Misc_1030 | 36.5d | 0d | 24x7 Calendar |
| D_Misc_F_1010 |  | VUPs and Box Culverts Piers Foundation-Review/Approval by Client | 15d | 2024-08-21 | 2024-09-05 | D_Misc_F_1000 | 36.5d | 0d | 24x7 Calendar |
| D_Misc_F_1020 |  | VUPs and Box Culverts Piers Foundation-Resubmission to Client | 20d | 2024-09-05 | 2024-09-25 | D_Misc_F_1010 | 36.5d | 0d | 24x7 Calendar |
| D_Misc_F_1030 |  | VUPs and Box Culverts Piers Foundation-Approval by Client - GFC | 10d | 2024-09-25 | 2024-10-05 | D_Misc_F_1020 | 36.5d | 0.32d | 24x7 Calendar |
|  | 2 | **Sub-Structure** |  | 2024-08-01 | 2024-10-05 |  |  |  |  |
| D_Misc_SuS_1040 |  | VUPs and Box Culverts Piers Sub Structure-Submission to Client | 20d | 2024-08-01 | 2024-08-21 | D_Misc_F_1000 SS | 216.5d | 0d | 24x7 Calendar |
| D_Misc_SuS_1050 |  | VUPs and Box Culverts Piers Sub Structure-Review/Approval by Client | 15d | 2024-08-21 | 2024-09-05 | D_Misc_SuS_1040 | 216.5d | 0d | 24x7 Calendar |
| D_Misc_Sus_1060 |  | VUPs and Box Culverts Piers Sub Structure-Resubmission to Client | 20d | 2024-09-05 | 2024-09-25 | D_Misc_SuS_1050 | 216.5d | 0d | 24x7 Calendar |
| D_Misc_SuS_1070 |  | VUPs and Box Culverts Piers Sub Structure-Approval by Client - GFC | 10d | 2024-09-25 | 2024-10-05 | D_Misc_Sus_1060 | 216.5d | 180.32d | 24x7 Calendar |
|  | 3 | **Super Structure** |  | 2024-08-01 | 2024-10-05 |  |  |  |  |
| D_Misc_SS_1080 |  | VUPs and Box Culverts Piers Super Structure-Submission to Client | 20d | 2024-08-01 | 2024-08-21 | D_Misc_SuS_1040 SS | 216.5d | 0d | 24x7 Calendar |
| D_Misc_SS_1090 |  | VUPs and Box Culverts Piers Super Structure-Review/Approval by Client | 15d | 2024-08-21 | 2024-09-05 | D_Misc_SS_1080 | 216.5d | 0d | 24x7 Calendar |
| D_Misc_SS_1100 |  | VUPs and Box Culverts Piers Sub Structure-Resubmission to Client | 20d | 2024-09-05 | 2024-09-25 | D_Misc_SS_1090 | 216.5d | 0d | 24x7 Calendar |
| D_Misc_SS_1110 |  | VUPs and Box Culverts Piers Sub Structure-Approval by Client - GFC | 10d | 2024-09-25 | 2024-10-05 | D_Misc_SS_1100 | 216.5d | 180.32d | 24x7 Calendar |

| ID | WBS | Activity | Duration | Start | Finish | Predecessors | Total float | Free float | Calendar |
| --- | --- | --- | --- | --- | --- | --- | --- | --- | --- |
|  | 5 | **Wetland Viaduct** |  | 2024-08-01 | 2024-10-05 |  |  |  |  |
|  | 1 | **Foundation** |  | 2024-08-01 | 2024-10-05 |  |  |  |  |
| D_WV_F_1000 |  | Wetland Viaduct Foundation-Submission to Client | 20d | 2024-08-01 | 2024-08-21 | D_DBR_WV_1030, D_GAD_WV_1030, PS_GS_1010 SS+30d | 453.32d | 0d | 24x7 Calendar |
| D_WV_F_1010 |  | Wetland Viaduct Foundation-Review/Approval by Client | 15d | 2024-08-21 | 2024-09-05 | D_WV_F_1000 | 453.32d | 0d | 24x7 Calendar |
| D_WV_F_1020 |  | Wetland Viaduct Foundation-Resubmission to Client | 20d | 2024-09-05 | 2024-09-25 | D_WV_F_1010 | 453.32d | 0d | 24x7 Calendar |
| D_WV_F_1030 |  | Wetland Viaduct Foundation-Approval by Client - GFC | 10d | 2024-09-25 | 2024-10-05 | D_WV_F_1020 | 453.32d | 140.32d | 24x7 Calendar |
|  | 2 | **Sub-Structure** |  | 2024-08-01 | 2024-10-05 |  |  |  |  |
| D_WV_SuS_1000 |  | Wetland Viaduct Sub Structure-Submission to Client | 20d | 2024-08-01 | 2024-08-21 | D_WV_F_1000 SS | 1341d | 0d | 24x7 Calendar |
| D_WV_SuS_1010 |  | Wetland Viaduct Sub Structure-Review/Approval by Client | 15d | 2024-08-21 | 2024-09-05 | D_WV_SuS_1000 | 1341d | 0d | 24x7 Calendar |
| D_WV_SuS_1020 |  | Wetland Viaduct Sub Structure-Resubmission to Client | 20d | 2024-09-05 | 2024-09-25 | D_WV_SuS_1010 | 1341d | 0d | 24x7 Calendar |
| D_WV_SuS_1030 |  | Wetland Viaduct Sub Structure-Approval by Client - GFC | 10d | 2024-09-25 | 2024-10-05 | D_WV_SuS_1020 | 1341d | 1340.64d | 24x7 Calendar |
|  | 3 | **Super Structure** |  | 2024-08-01 | 2024-10-05 |  |  |  |  |
| D_WV_SS_1000 |  | Wetland Viaduct Super Structure-Submission to Client | 20d | 2024-08-01 | 2024-08-21 | D_WV_F_1000 SS | 620.41d | 0d | 24x7 Calendar |
| D_WV_SS_1010 |  | Wetland Viaduct Super Structure-Review/Approval by Client | 15d | 2024-08-21 | 2024-09-05 | D_WV_SS_1000 | 620.41d | 0d | 24x7 Calendar |
| D_WV_SS_1020 |  | Wetland Viaduct Super Structure-Resubmission to Client | 20d | 2024-09-05 | 2024-09-25 | D_WV_SS_1010 | 620.41d | 0d | 24x7 Calendar |
| D_WV_SS_1030 |  | Wetland Viaduct Super Structure-Approval by Client - GFC | 10d | 2024-09-25 | 2024-10-05 | D_WV_SS_1020 | 620.41d | 150.32d | 24x7 Calendar |
|  | 7 | **Highway Package** |  | 2024-08-01 | 2024-10-05 |  |  |  |  |
|  | 1 | **Detailed P&P** |  | 2024-08-01 | 2024-10-05 |  |  |  |  |
| D_HP_1000 |  | Detailed P&P-Submission to Client | 20d | 2024-08-01 | 2024-08-21 | D_PP_1030 | 46d | 0d | 24x7 Calendar |
| D_HP_1010 |  | Detailed P&P-Review/Approval by Client | 15d | 2024-08-21 | 2024-09-05 | D_HP_1000 | 46d | 0d | 24x7 Calendar |
| D_HP_1020 |  | Detailed P&P-Resubmission to Client | 20d | 2024-09-05 | 2024-09-25 | D_HP_1010 | 46d | 0d | 24x7 Calendar |
| D_HP_1030 |  | Detailed P&P-Approval by Client - GFC | 10d | 2024-09-25 | 2024-10-05 | D_HP_1020 | 46d | 0d | 24x7 Calendar |
|  | 2 | **Slope Stability** |  | 2024-08-01 | 2024-10-05 |  |  |  |  |
| D_HP_1040 |  | Slope Stability -Submission to Client | 20d | 2024-08-01 | 2024-08-21 | D_HP_1000 SS | 46d | 0d | 24x7 Calendar |
| D_HP_1050 |  | Slope Stability -Review/Approval by Client | 15d | 2024-08-21 | 2024-09-05 | D_HP_1040 | 46d | 0d | 24x7 Calendar |
| D_HP_1060 |  | Slope Stability -Resubmission to Client | 20d | 2024-09-05 | 2024-09-25 | D_HP_1050 | 46d | 0d | 24x7 Calendar |
| D_HP_1070 |  | Slope Stability -Approval by Client - GFC | 10d | 2024-09-25 | 2024-10-05 | D_HP_1060 | 46d | 0d | 24x7 Calendar |

| ID | WBS | Activity | Duration | Start | Finish | Predecessors | Total float | Free float | Calendar |
| --- | --- | --- | --- | --- | --- | --- | --- | --- | --- |
|  | 3 | **Cross Sections** |  | 2024-08-01 | 2024-10-05 |  |  |  |  |
| D_HP_1080 |  | Cross Sections-Submission to Client | 20d | 2024-08-01 | 2024-08-21 | D_HP_1000 SS | 46d | 0d | 24x7 Calendar |
| D_HP_1090 |  | Cross Sections-Review/Approval by Client | 15d | 2024-08-21 | 2024-09-05 | D_HP_1080 | 46d | 0d | 24x7 Calendar |
| D_HP_1100 |  | Cross Sections-Resubmission to Client | 20d | 2024-09-05 | 2024-09-25 | D_HP_1090 | 46d | 0d | 24x7 Calendar |
| D_HP_1110 |  | Cross Sections-Approval by Client - GFC | 10d | 2024-09-25 | 2024-10-05 | D_HP_1100 | 46d | 0d | 24x7 Calendar |
|  | 4 | **Drain Drawings** |  | 2024-08-01 | 2024-10-05 |  |  |  |  |
| D_DD_1000 |  | Drainage Drawings -Submission to Client | 20d | 2024-08-01 | 2024-08-21 | D_DPP_1030 | 203.32d | 0d | 24x7 Calendar |
| D_DD_1010 |  | Drainage Drawings-Review/Approval by Client | 15d | 2024-08-21 | 2024-09-05 | D_DD_1000 | 203.32d | 0d | 24x7 Calendar |
| D_DD_1020 |  | Drainage Drawings-Resubmission to Client | 20d | 2024-09-05 | 2024-09-25 | D_DD_1010 | 203.32d | 0d | 24x7 Calendar |
| D_DD_1030 |  | Drainage Drawings-Approval by Client - GFC | 10d | 2024-09-25 | 2024-10-05 | D_DD_1020 | 203.32d | 140.32d | 24x7 Calendar |
|  | 7 | **Construction** |  | 2024-06-07 | 2028-05-29 |  |  |  |  |
|  | 1 | **Site Establishment** |  | 2024-06-07 | 2025-01-27 |  |  |  |  |
| C_SE_1005 |  | Temporary Access Bridge - Palashbari | 120d | 2024-06-07 | 2024-10-24 | ROW_1010 SS | 39d | 33d |  |
| C_SE_1050 |  | Batching Plant_Sualkuchi - Foundation | 60d | 2024-06-07 | 2024-08-15 | MS_1000 | 235d | 0d |  |
| C_SE_1060 |  | Project Office Setup - Contractor | 40d | 2024-06-07 | 2024-07-23 | MS_1000 | 275d |  |  |
| C_SE_1070 |  | Project Office Setup - Employer | 45d | 2024-06-07 | 2024-07-29 | MS_1000 | 270d |  |  |
| C_SE_1080 |  | Workmen Camp- Palashbari | 60d | 2024-06-07 | 2024-08-15 | MS_1000 | 255d |  |  |
| C_SE_1085 |  | Workmen Camp - Sualkuchi | 60d | 2024-06-07 | 2024-08-15 | MS_1000 | 255d |  |  |
| C_SE_1090 |  | Batching Plant_Palashbari - Foundation | 60d | 2024-06-07 | 2024-08-15 | MS_1000 | 235d | 0d |  |
| C_SE_1010 |  | Access Preparation for Main Bridge Works - Palashbari | 140d | 2024-06-22 | 2024-12-02 | ROW_1020 | 6d | 0d |  |
| C_SE_1020 |  | Access Preparation for Main Bridge Works - Sualkuchi | 45d | 2024-06-22 | 2024-08-13 | ROW_1030 | 0d |  |  |
| C_SE_1030 |  | Precast Yard, Moulds Erection, Commissioning_Palashbari | 150d | 2024-08-06 | 2025-01-27 | A1090, MS_1000 FS+60d | 109d | 0d |  |
| C_SE_1040 |  | Precast Yard, Moulds Erection, Commissioning_Sualkuchi | 150d | 2024-08-06 | 2025-01-27 | A1090, MS_1000 FS+60d | 47d | 0d |  |
| C_SE_1000 |  | Temporary Access Bridge Installation P28-P30 | 102d | 2024-08-14 | 2024-12-10 | C_SE_1020 | 0d |  |  |
| C_SE_1055 |  | Batching Plant_Sualkuchi- Commisioning | 20d | 2024-08-16 | 2024-09-07 | C_SE_1050 | 235d |  |  |
| C_SE_1100 |  | Batching Plant_Palashbari - Commissioning | 20d | 2024-08-16 | 2024-09-07 | C_SE_1090 | 235d |  |  |

| ID | WBS | Activity | Duration | Start | Finish | Predecessors | Total float | Free float | Resources |
| --- | --- | --- | --- | --- | --- | --- | --- | --- | --- |
|  | 10 | **Pile Load Test** |  | 2024-07-30 | 2024-09-25 |  |  |  |  |
| A1220 |  | Pile Load Test | 50d | 2024-07-30 | 2024-09-25 | PS_GS_1010 FS+30d | 36d | 3d |  |
|  | 2 | **Main Bridge Palasbari Approach Viaduct** |  | 2024-09-30 | 2026-11-28 |  |  |  |  |
|  | 1 | **LHS** |  | 2024-09-30 | 2026-05-11 |  |  |  |  |
|  | 1 | **A1** |  | 2024-09-30 | 2024-11-26 |  |  |  |  |
| C_PAV_LHS_A1_1000 |  | Pile-LHS A1 | 20d | 2024-09-30 | 2024-10-22 | D_MB_F_1030, SI_1030, A1220 | 33d | 0d | Piling Rig 1 [200 h] |
| C_PAV_LHS_A1_1010 |  | Abutment Cap-LHS A1 | 15d | 2024-10-23 | 2024-11-08 | C_PAV_LHS_A1_1000 | 736d | 0d |  |
| C_PAV_LHS_A1_1030 |  | Dirt Wall-LHS A1 | 15d | 2024-11-09 | 2024-11-26 | C_PAV_LHS_A1_1010 | 809d |  |  |
|  | 2 | **P1** |  | 2024-10-23 | 2025-01-13 |  |  |  |  |
| C_PAV_LHS_P1_1000 |  | Pile-LHS P1 | 16d | 2024-10-23 | 2024-11-09 | C_PAV_LHS_A1_1000 | 33d | 0d | Piling Rig 1 [160 h] |
| C_PAV_LHS_P1_1010 |  | Pile Cap-LHS P1 | 15d | 2024-11-11 | 2024-11-27 | C_PAV_LHS_P1_1000 | 680d | 0d |  |
| C_PAV_LHS_P1_1020 |  | Pier-LHS P1 | 20d | 2024-11-28 | 2024-12-20 | C_PAV_LHS_P1_1010, D_MB_SuS_1030 | 680d | 0d |  |
| C_PAV_LHS_P1_1030 |  | Pier Cap-LHS P1 | 20d | 2024-12-21 | 2025-01-13 | C_PAV_LHS_P1_1020 | 680d | 169d |  |
|  | 3 | **P2** |  | 2024-11-11 | 2025-01-31 |  |  |  |  |
| C_PAV_LHS_P2_1000 |  | Pile-LHS P2 | 16d | 2024-11-11 | 2024-11-28 | C_PAV_LHS_P1_1000 | 33d | 0d | Piling Rig 1 [160 h] |
| C_PAV_LHS_P2_1010 |  | Pile Cap-LHS P2 | 15d | 2024-11-29 | 2024-12-16 | C_PAV_LHS_P2_1000 | 669d | 0d |  |
| C_PAV_LHS_P2_1020 |  | Pier-LHS P2 | 20d | 2024-12-17 | 2025-01-08 | C_PAV_LHS_P2_1010, D_MB_SuS_1030 | 669d | 0d |  |
| C_PAV_LHS_P2_1030 |  | Pier Cap-LHS P2 | 20d | 2025-01-09 | 2025-01-31 | C_PAV_LHS_P2_1020 | 669d | 173d |  |
|  | 4 | **P3** |  | 2024-11-29 | 2025-02-19 |  |  |  |  |
| C_PAV_LHS_P3_1000 |  | Pile-LHS P3 | 16d | 2024-11-29 | 2024-12-17 | C_PAV_LHS_P2_1000 | 33d | 0d | Piling Rig 1 [160 h] |
| C_PAV_LHS_P3_1010 |  | Pile Cap-LHS P3 | 15d | 2024-12-18 | 2025-01-03 | C_PAV_LHS_P3_1000 | 658d | 0d |  |
| C_PAV_LHS_P3_1020 |  | Pier-LHS P3 | 20d | 2025-01-04 | 2025-01-27 | C_PAV_LHS_P3_1010, C_PAV_LHS_P3_1010 FF, D_MB_SuS_1030 | 658d | 0d |  |
| C_PAV_LHS_P3_1030 |  | Pier Cap-LHS P3 | 20d | 2025-01-28 | 2025-02-19 | C_PAV_LHS_P3_1020, C_PAV_LHS_P3_1020 FF | 658d | 177d |  |
|  | 5 | **P4** |  | 2024-12-18 | 2026-02-12 |  |  |  |  |
| C_PAV_LHS_P4_1000 |  | Well-LHS P4 | 200d | 2024-12-18 | 2025-11-28 | C_PAV_LHS_P3_1000 | 453d | 0d |  |
| C_PAV_LHS_P4_1010 |  | Well Cap-LHS P4 | 30d | 2025-11-29 | 2026-01-02 | C_PAV_LHS_P4_1000 | 453d | 0d |  |
| C_PAV_LHS_P4_1020 |  | Pier-LHS P4 | 15d | 2026-01-03 | 2026-01-20 | C_PAV_LHS_P4_1010, D_MB_SuS_1030 | 453d | 0d |  |
| C_PAV_LHS_P4_1030 |  | Pier Cap-LHS P4 | 20d | 2026-01-21 | 2026-02-12 | C_PAV_LHS_P4_1020 | 453d | 0d |  |

| ID | WBS | Activity | Duration | Start | Finish | Predecessors | Total float | Free float | Calendar |
| --- | --- | --- | --- | --- | --- | --- | --- | --- | --- |
|  | 6 | **P5** |  | 2024-12-18 | 2026-02-12 |  |  |  |  |
| C_PAV_LHS_P5_1000 |  | Well-LHS P5 | 200d | 2024-12-18 | 2025-11-28 | C_PAV_LHS_P4_1000 SS | 458d | 0d |  |
| C_PAV_LHS_P5_1010 |  | Well Cap-LHS P5 | 30d | 2025-11-29 | 2026-01-02 | C_PAV_LHS_P5_1000 | 458d | 0d |  |
| C_PAV_LHS_P5_1020 |  | Pier-LHS P5 | 15d | 2026-01-03 | 2026-01-20 | C_PAV_LHS_P5_1010, D_MB_SuS_1030 | 458d | 0d |  |
| C_PAV_LHS_P5_1030 |  | Pier Cap-LHS P5 | 20d | 2026-01-21 | 2026-02-12 | C_PAV_LHS_P5_1020 | 458d | 7d |  |
|  | 9 | **I-Girder Casting** |  | 2025-10-08 | 2026-03-07 |  |  |  |  |
| C_PAV_LHS_IC_1000 |  | Casting - LHS A1-P1 | 30d | 2025-10-08 | 2025-11-11 | C_SE_1030 FS+120d, C_SE_1090, D_MB_SS_1030 | 409d | 0d | Monsoon Calendar |
| C_PAV_LHS_IC_1010 |  | Casting - LHS P1-P2 | 20d | 2025-11-12 | 2025-12-04 | C_PAV_LHS_IC_1000, D_MB_SS_1030 | 409d | 0d | Monsoon Calendar |
| C_PAV_LHS_IC_1020 |  | Casting - LHS P2-P3 | 20d | 2025-12-05 | 2025-12-27 | C_PAV_LHS_IC_1010, D_MB_SS_1030 | 409d | 0d | Monsoon Calendar |
| C_PAV_LHS_IC_1030 |  | Casting - LHS P3-P4 | 20d | 2025-12-29 | 2026-01-20 | C_PAV_LHS_IC_1020, D_MB_SS_1030 | 409d | 0d | Monsoon Calendar |
| C_PAV_LHS_IC_1040 |  | Casting - LHS P4-P5 | 20d | 2026-01-21 | 2026-02-12 | C_PAV_LHS_IC_1030, D_MB_SS_1030 | 409d | 0d | Monsoon Calendar |
| C_PAV_LHS_IC_1050 |  | Casting - LHS P5-P6 | 20d | 2026-02-13 | 2026-03-07 | C_PAV_LHS_IC_1040, D_MB_SS_1030 | 409d | 0d | Monsoon Calendar |
|  | 7 | **I-Girder Erection** |  | 2025-12-15 | 2026-04-15 |  |  |  |  |
| C_PAV_LHS_IG_1000 |  | Erection - LHS A1-P1 | 5d | 2025-12-15 | 2025-12-19 | C_PAV_LHS_P1_1030 FS+21d, C_PAV_LHS_IC_1000 FS+28d, C_PAV_LHS_A1_1010 FS+21d | 511d | 0d |  |
| C_PAV_LHS_IG_1010 |  | Erection - LHS P1-P2 | 5d | 2026-01-07 | 2026-01-12 | C_PAV_LHS_P1_1030 FS+21d, C_PAV_LHS_P2_1030 FS+21d, C_PAV_LHS_IC_1010 FS+28d, C_PAV_LHS_IG_1000 | 496d | 0d |  |
| C_PAV_LHS_IG_1020 |  | Erection - LHS P2-P3 | 5d | 2026-01-30 | 2026-02-04 | C_PAV_LHS_P2_1030 FS+21d, C_PAV_LHS_P3_1030 FS+21d, C_PAV_LHS_IC_1020 FS+28d, C_PAV_LHS_IG_1010 | 481d | 0d |  |
| C_PAV_LHS_IG_1030 |  | Erection - LHS P3-P4 | 5d | 2026-03-10 | 2026-03-14 | C_PAV_LHS_P3_1030 FS+21d, C_PAV_LHS_P4_1030 FS+21d, C_PAV_LHS_IC_1030 FS+28d, C_PAV_LHS_IG_1020 | 453d | 0d |  |
| C_PAV_LHS_IG_1040 |  | Erection - LHS P4-P5 | 5d | 2026-03-18 | 2026-03-23 | C_PAV_LHS_P4_1030 FS+21d, C_PAV_LHS_P5_1030 FS+21d, C_PAV_LHS_IC_1040 FS+28d, C_PAV_LHS_IG_1030 | 451d | 0d |  |
| C_PAV_LHS_IG_1050 |  | Erection - LHS P5-P6 | 5d | 2026-04-10 | 2026-04-15 | C_PAV_LHS_P5_1030 FS+21d, C_PAV_LHS_IC_1050 FS+28d, C_PAV_LHS_IG_1040 | 436d | 0d |  |
|  | 8 | **Deck Slab** |  | 2025-12-29 | 2026-05-11 |  |  |  |  |
| C_PAV_LHS_DS_1000 |  | Deck Slab - LHS A1-P1 | 15d | 2025-12-29 | 2026-01-14 | C_PAV_LHS_IG_1000 FS+7d | 536d | 527d |  |
| C_PAV_LHS_DS_1010 |  | Deck Slab - LHS P1-P2 | 15d | 2026-01-21 | 2026-02-06 | C_PAV_LHS_IG_1010 FS+7d | 516d | 507d |  |
| C_PAV_LHS_DS_1020 |  | Deck Slab - LHS P2-P3 | 15d | 2026-02-13 | 2026-03-02 | C_PAV_LHS_IG_1020 FS+7d | 496d | 487d |  |
| C_PAV_LHS_DS_1030 |  | Deck Slab - LHS P3-P4 | 15d | 2026-03-24 | 2026-04-09 | C_PAV_LHS_IG_1030 FS+7d | 463d | 454d |  |
| C_PAV_LHS_DS_1040 |  | Deck Slab - LHS P4-P5 | 15d | 2026-04-01 | 2026-04-17 | C_PAV_LHS_IG_1040 FS+7d | 456d | 447d |  |
| C_PAV_LHS_DS_1050 |  | Deck Slab - LHS P5-P6 | 15d | 2026-04-24 | 2026-05-11 | C_PAV_LHS_IG_1050 FS+7d | 436d | 427d |  |

| ID | WBS | Activity | Duration | Start | Finish | Predecessors | Total float | Free float | Resources |
| --- | --- | --- | --- | --- | --- | --- | --- | --- | --- |
|  | 7 | **RHS** |  | 2024-12-18 | 2026-11-28 |  |  |  |  |
|  | 1 | **A1** |  | 2025-02-12 | 2025-04-10 |  |  |  |  |
| C_PAV_RHS_A1_1040 |  | Pile-RHS A1 | 20d | 2025-02-12 | 2025-03-06 | C_PAV_RHS_P1_1040 | 33d | 0d | Piling Rig 1 [200 h] |
| C_PAV_RHS_A1_1050 |  | Abutment Cap-RHS A1 | 15d | 2025-03-07 | 2025-03-24 | C_PAV_RHS_A1_1040 | 620d | 0d |  |
| C_PAV_RHS_A1_1070 |  | Dirt Wall-RHS A1 | 15d | 2025-03-25 | 2025-04-10 | C_PAV_RHS_A1_1050 | 693d |  |  |
|  | 2 | **P1** |  | 2025-01-24 | 2025-04-10 |  |  |  |  |
| C_PAV_RHS_P1_1040 |  | Pile-RHS P1 | 16d | 2025-01-24 | 2025-02-11 | C_PAV_RHS_P2_1040 | 33d | 0d | Piling Rig 1 [160 h] |
| C_PAV_RHS_P1_1050 |  | Pile Cap-RHS P1 | 15d | 2025-02-12 | 2025-02-28 | C_PAV_RHS_P1_1040 | 605d | 0d |  |
| C_PAV_RHS_P1_1060 |  | Pier-RHS P1 | 15d | 2025-03-01 | 2025-03-18 | C_PAV_RHS_P1_1050, D_MB_SuS_1030 | 605d | 0d |  |
| C_PAV_RHS_P1_1070 |  | Pier Cap-RHS P1 | 20d | 2025-03-19 | 2025-04-10 | C_PAV_RHS_P1_1060 | 605d | 214d |  |
|  | 3 | **P2** |  | 2025-01-06 | 2025-03-22 |  |  |  |  |
| C_PAV_RHS_P2_1040 |  | Pile-RHS P2 | 16d | 2025-01-06 | 2025-01-23 | C_PAV_RHS_P3_1040 | 33d | 0d | Piling Rig 1 [160 h] |
| C_PAV_RHS_P2_1050 |  | Pile Cap-RHS P2 | 15d | 2025-01-24 | 2025-02-10 | C_PAV_RHS_P2_1040 | 626d | 0d |  |
| C_PAV_RHS_P2_1060 |  | Pier-RHS P2 | 15d | 2025-02-11 | 2025-02-27 | C_PAV_RHS_P2_1050, D_MB_SuS_1030 | 626d | 0d |  |
| C_PAV_RHS_P2_1070 |  | Pier Cap-RHS P2 | 20d | 2025-02-28 | 2025-03-22 | C_PAV_RHS_P2_1060 | 626d | 250d |  |
|  | 4 | **P3** |  | 2024-12-18 | 2025-03-04 |  |  |  |  |
| C_PAV_RHS_P3_1040 |  | Pile-RHS P3 | 16d | 2024-12-18 | 2025-01-04 | SI_1030, C_PAV_LHS_P3_1000 | 33d | 0d | Piling Rig 1 [160 h] |
| C_PAV_RHS_P3_1050 |  | Pile Cap-RHS P3 | 15d | 2025-01-06 | 2025-01-22 | C_PAV_RHS_P3_1040 | 647d | 0d |  |
| C_PAV_RHS_P3_1060 |  | Pier-RHS P3 | 15d | 2025-01-23 | 2025-02-08 | C_PAV_RHS_P3_1050, D_MB_SuS_1030 | 647d | 0d |  |
| C_PAV_RHS_P3_1070 |  | Pier Cap-RHS P3 | 20d | 2025-02-10 | 2025-03-04 | C_PAV_RHS_P3_1060 | 647d | 276d |  |
|  | 5 | **P4** |  | 2025-01-06 | 2026-03-03 |  |  |  |  |
| C_PAV_RHS_P4_1040 |  | Well-RHS P4 | 200d | 2025-01-06 | 2025-12-17 | C_PAV_RHS_P3_1040 | 437d | 0d |  |
| C_PAV_RHS_P4_1050 |  | Well Cap-RHS P4 | 30d | 2025-12-18 | 2026-01-21 | C_PAV_RHS_P4_1040 | 437d | 0d |  |
| C_PAV_RHS_P4_1060 |  | Pier-RHS P4 | 15d | 2026-01-22 | 2026-02-07 | C_PAV_RHS_P4_1050, D_MB_SuS_1030 | 437d | 0d |  |
| C_PAV_RHS_P4_1070 |  | Pier Cap-RHS P4 | 20d | 2026-02-09 | 2026-03-03 | C_PAV_RHS_P4_1060 | 437d | 66d |  |

| ID | WBS | Activity | Duration | Start | Finish | Predecessors | Total float | Free float | Calendar |
| --- | --- | --- | --- | --- | --- | --- | --- | --- | --- |
|  | 6 | **P5** |  | 2025-01-06 | 2026-03-03 |  |  |  |  |
| C_PAV_RHS_P5_1040 |  | Well-RHS P5 | 200d | 2025-01-06 | 2025-12-17 | C_PAV_RHS_P4_1040 SS | 442d | 0d |  |
| C_PAV_RHS_P5_1050 |  | Well Cap-RHS P5 | 30d | 2025-12-18 | 2026-01-21 | C_PAV_RHS_P5_1040 | 442d | 0d |  |
| C_PAV_RHS_P5_1060 |  | Pier-RHS P5 | 15d | 2026-01-22 | 2026-02-07 | C_PAV_RHS_P5_1050, D_MB_SuS_1030 | 442d | 0d |  |
| C_PAV_RHS_P5_1070 |  | Pier Cap-RHS P5 | 20d | 2026-02-09 | 2026-03-03 | C_PAV_RHS_P5_1060 | 442d | 71d |  |
|  | 9 | **I-Girder Casting** |  | 2026-03-09 | 2026-09-19 |  |  |  |  |
| C_PAV_RHS_IC_1000 |  | Casting - RHS A1-P1 | 20d | 2026-03-09 | 2026-03-31 | C_PAV_LHS_IC_1050, D_MB_SS_1030 | 409d | 0d | Monsoon Calendar |
| C_PAV_RHS_IC_1010 |  | Casting - RHS P1-P2 | 20d | 2026-04-01 | 2026-04-23 | C_PAV_RHS_IC_1000, D_MB_SS_1030 | 409d | 0d | Monsoon Calendar |
| C_PAV_RHS_IC_1020 |  | Casting - RHS P2-P3 | 20d | 2026-04-24 | 2026-05-16 | C_PAV_RHS_IC_1010, D_MB_SS_1030 | 409d | 0d | Monsoon Calendar |
| C_PAV_RHS_IC_1030 |  | Casting - RHS P3-P4 | 20d | 2026-05-18 | 2026-06-18 | C_PAV_RHS_IC_1020, D_MB_SS_1030 | 409d | 0d | Monsoon Calendar |
| C_PAV_RHS_IC_1040 |  | Casting - RHS P4-P5 | 20d | 2026-06-19 | 2026-08-04 | C_PAV_RHS_IC_1030, D_MB_SS_1030 | 409d | 0d | Monsoon Calendar |
| C_PAV_RHS_IC_1050 |  | Casting - RHS P5-P6 | 20d | 2026-08-05 | 2026-09-19 | C_PAV_RHS_IC_1040, D_MB_SS_1030 | 409d | 0d | Monsoon Calendar |
|  | 7 | **I-Girder Erection** |  | 2026-05-04 | 2026-11-03 |  |  |  |  |
| C_PAV_RHS_IG_1000 |  | I Girder - RHS A1-P1 | 5d | 2026-05-04 | 2026-05-08 | C_PAV_RHS_P1_1070 FS+21d, C_PAV_RHS_IC_1000 FS+28d, C_PAV_RHS_A1_1050 FS+21d | 391d | 0d |  |
| C_PAV_RHS_IG_1010 |  | I Girder - RHS P1-P2 | 5d | 2026-05-27 | 2026-06-01 | C_PAV_RHS_P1_1070 FS+21d, C_PAV_RHS_P2_1070 FS+21d, C_PAV_RHS_IC_1010 FS+28d, C_PAV_RHS_IG_1000 | 376d | 0d |  |
| C_PAV_RHS_IG_1020 |  | I Girder - RHS P2-P3 | 5d | 2026-10-01 | 2026-10-06 | C_PAV_RHS_P2_1070 FS+21d, C_PAV_RHS_P3_1070 FS+21d, C_PAV_RHS_IC_1020 FS+28d, C_PAV_RHS_IG_1010 | 371d | 0d |  |
| C_PAV_RHS_IG_1030 |  | I Girder - RHS P3-P4 | 5d | 2026-10-07 | 2026-10-12 | C_PAV_RHS_P3_1070 FS+21d, C_PAV_RHS_P4_1070 FS+21d, C_PAV_RHS_IC_1030 FS+28d, C_PAV_RHS_IG_1020 | 371d | 0d |  |
| C_PAV_RHS_IG_1040 |  | I Girder - RHS P4-P5 | 5d | 2026-10-13 | 2026-10-17 | C_PAV_RHS_P4_1070 FS+21d, C_PAV_RHS_P5_1070 FS+21d, C_PAV_RHS_IC_1040 FS+28d, C_PAV_RHS_IG_1030 | 371d | 0d |  |
| C_PAV_RHS_IG_1050 |  | I Girder - RHS P5-P6 | 5d | 2026-10-28 | 2026-11-03 | C_PAV_RHS_P5_1070 FS+21d, C_PAV_RHS_IC_1050 FS+28d, C_PAV_RHS_IG_1040 | 362.5d | 0d |  |
|  | 8 | **Deck Slab** |  | 2026-05-18 | 2026-11-28 |  |  |  |  |
| C_PAV_RHS_DS_1000 |  | Deck Slab - RHS A1-P1 | 15d | 2026-05-18 | 2026-06-03 | C_PAV_RHS_IG_1000 FS+7d | 416d | 407d |  |
| C_PAV_RHS_DS_1010 |  | Deck Slab - RHS P1-P2 | 15d | 2026-10-03 | 2026-10-20 | C_PAV_RHS_IG_1010 FS+7d | 396d | 387d |  |
| C_PAV_RHS_DS_1020 |  | Deck Slab - RHS P2-P3 | 15d | 2026-10-15 | 2026-10-31 | C_PAV_RHS_IG_1020 FS+7d | 386d | 377d |  |
| C_PAV_RHS_DS_1030 |  | Deck Slab - RHS P3-P4 | 15d | 2026-10-21 | 2026-11-06 | C_PAV_RHS_IG_1030 FS+7d | 381d | 372d |  |
| C_PAV_RHS_DS_1040 |  | Deck Slab - RHS P4-P5 | 15d | 2026-10-27 | 2026-11-12 | C_PAV_RHS_IG_1040 FS+7d | 376d | 367d |  |
| C_PAV_RHS_DS_1050 |  | Deck Slab - RHS P5-P6 | 15d | 2026-11-11 | 2026-11-28 | C_PAV_RHS_IG_1050 FS+7d | 362.5d | 353.5d |  |

| ID | WBS | Activity | Duration | Start | Finish | Predecessors | Total float | Free float | Resources |
| --- | --- | --- | --- | --- | --- | --- | --- | --- | --- |
|  | 3 | **Main Bridge** |  | 2024-12-03 | 2028-05-09 |  |  |  |  |
|  | 1 | **Foundation** |  | 2024-12-03 | 2026-12-11 |  |  |  |  |
|  | 1 | **Land** |  | 2024-12-03 | 2025-11-22 |  |  |  |  |
|  | 1 | **P6** |  | 2024-12-03 | 2025-10-07 |  |  |  |  |
|  | 1 | **Curb and Cutting Edge** |  | 2024-12-03 | 2025-01-06 |  |  |  |  |
| C_MB_F_L_P6_1000 |  | Placement of Cutting Edge and Alignment - P6 | 7d | 2024-12-03 | 2024-12-10 | D_MB_F_1110, C_SE_1010, SI_1050, C_SE_1005 | 281d | 0d |  |
| C_MB_F_L_P6_1010 |  | Placement of Curb Inner Shutters - P6 | 5d | 2024-12-11 | 2024-12-16 | C_MB_F_L_P6_1000 | 281d | 0d | Crane 1 [40 h] |
| C_MB_F_L_P6_1020 |  | Reinforcement tying for Curb - P6 | 10d | 2024-12-17 | 2024-12-27 | C_MB_F_L_P6_1010 | 281d | 0d |  |
| C_MB_F_L_P6_1030 |  | Curb Outer Shutter - P6 | 6d | 2024-12-28 | 2025-01-03 | C_MB_F_L_P6_1020 | 281d | 0d | Crane 1 [48 h] |
| C_MB_F_L_P6_1040 |  | Concreting of Curb - P6 | 2d | 2025-01-04 | 2025-01-06 | C_MB_F_L_P6_1030 | 281d | 0d |  |
|  | 2 | **Well Steining** |  | 2025-01-07 | 2025-05-31 |  |  |  |  |
| C_MB_F_L_P6_1050 |  | Steining Inner Shutter - P6 | 45d | 2025-01-07 | 2025-02-27 | C_MB_F_L_P6_1040 | 281d | 0d | Crane 1 [360 h] |
| C_MB_F_L_P6_1060 |  | Steining Reinforcement Tying - P6 | 30d | 2025-02-28 | 2025-04-03 | C_MB_F_L_P6_1050 | 281d | 0d |  |
| C_MB_F_L_P6_1070 |  | Steining Outer Shutter & Concreting - P6 | 30d | 2025-04-04 | 2025-05-08 | C_MB_F_L_P6_1060 | 281d | 0d | Crane 1 [240 h] |
| C_MB_F_L_P6_1080 |  | Sump Making & Bottom Plugging - P6 | 20d | 2025-05-09 | 2025-05-31 | C_MB_F_L_P6_1070 | 281d | 0d |  |
|  | 3 | **Well Cap** |  | 2025-06-01 | 2025-10-07 |  |  |  |  |
| C_MB_F_L_P6_1090 |  | Well Cap Reinforcement - P6 | 6d | 2025-06-01 | 2025-06-06 | C_MB_F_L_P6_1080 | 281d | 0d |  |
| C_MB_F_L_P6_1100 |  | Well Cap Shuttering - P6 | 5d | 2025-06-07 | 2025-10-04 | C_MB_F_L_P6_1090 | 281d | 0d | Crane 1 [40 h] |
| C_MB_F_L_P6_1110 |  | Well Cap Concreting - P6 | 2d | 2025-10-06 | 2025-10-07 | C_MB_F_L_P6_1100 | 281d | 0d |  |
|  | 4 | **P7** |  | 2024-12-03 | 2025-11-14 |  |  |  |  |
|  | 1 | **Curb and Cutting Edge** |  | 2024-12-03 | 2025-01-06 |  |  |  |  |
| C_MB_F_L_P7_1000 |  | Placement of Cutting Edge and Alignment - P7 | 7d | 2024-12-03 | 2024-12-10 | D_MB_F_1110 FS+2d, C_SE_1010, SI_1050, C_SE_1005 | 6d | 0d |  |
| C_MB_F_L_P7_1010 |  | Placement of Curb Inner Shutters - P7 | 5d | 2024-12-11 | 2024-12-16 | C_MB_F_L_P7_1000 | 6d | 0d | Crane 2 [40 h] |
| C_MB_F_L_P7_1020 |  | Reinforcement tying for Curb - P7 | 10d | 2024-12-17 | 2024-12-27 | C_MB_F_L_P7_1010 | 6d | 0d |  |
| C_MB_F_L_P7_1030 |  | Curb Outer Shutter - P7 | 6d | 2024-12-28 | 2025-01-03 | C_MB_F_L_P7_1020 | 6d | 0d | Crane 2 [48 h] |
| C_MB_F_L_P7_1040 |  | Concreting of Curb - P7 | 2d | 2025-01-04 | 2025-01-06 | C_MB_F_L_P7_1030 | 6d | 0d |  |

| ID | WBS | Activity | Duration | Start | Finish | Predecessors | Total float | Free float | Resources |
| --- | --- | --- | --- | --- | --- | --- | --- | --- | --- |
|  | 2 | **Well Steining** |  | 2025-01-07 | 2025-10-09 |  |  |  |  |
| C_MB_F_L_P7_1050 |  | Steining Inner Shutter - P7 | 45d | 2025-01-07 | 2025-02-27 | C_MB_F_L_P7_1040 | 6d | 0d | Crane 2 [360 h] |
| C_MB_F_L_P7_1060 |  | Steining Reinforcement Tying - P7 | 45d | 2025-02-28 | 2025-04-21 | C_MB_F_L_P7_1050 | 6d | 0d |  |
| C_MB_F_L_P7_1070 |  | Steining Outer Shutter & Concreting - P7 | 30d | 2025-04-22 | 2025-05-26 | C_MB_F_L_P7_1060 | 6d | 0d | Crane 2 [240 h] |
| C_MB_F_L_P7_1080 |  | Sump Making & Bottom Plugging - P7 | 20d | 2025-05-27 | 2025-10-09 | C_MB_F_L_P7_1070 | 6d | 0d |  |
|  | 3 | **Well Cap** |  | 2025-10-10 | 2025-11-14 |  |  |  |  |
| C_MB_F_L_P7_1090 |  | Well Cap Reinforcement - P7 | 13d | 2025-10-10 | 2025-10-24 | C_MB_F_L_P7_1080 | 6d | 0d |  |
| C_MB_F_L_P7_1100 |  | Well Cap Shuttering - P7 | 15d | 2025-10-25 | 2025-11-11 | C_MB_F_L_P7_1090 | 6d | 0d | Crane 2 [120 h] |
| C_MB_F_L_P7_1110 |  | Well Cap Concreting - P7 | 3d | 2025-11-12 | 2025-11-14 | C_MB_F_L_P7_1100 | 6d | 0d |  |
|  | 13 | **P8** |  | 2024-12-03 | 2025-10-07 |  |  |  |  |
|  | 1 | **Curb and Cutting Edge** |  | 2024-12-03 | 2025-01-06 |  |  |  |  |
| C_MB_F_L_P8_1000 |  | Placement of Cutting Edge and Alignment - P8 | 7d | 2024-12-03 | 2024-12-10 | D_MB_F_1150 FS+1.82d, C_SE_1010, SI_1050, C_SE_1005 | 122d | 0d |  |
| C_MB_F_L_P8_1010 |  | Placement of Curb Inner Shutters - P8 | 5d | 2024-12-11 | 2024-12-16 | C_MB_F_L_P8_1000 | 122d | 0d | Crane 1 [40 h] |
| C_MB_F_L_P8_1020 |  | Reinforcement tying for Curb - P8 | 10d | 2024-12-17 | 2024-12-27 | C_MB_F_L_P8_1010 | 122d | 0d |  |
| C_MB_F_L_P8_1030 |  | Curb Outer Shutter - P8 | 6d | 2024-12-28 | 2025-01-03 | C_MB_F_L_P8_1020 | 122d | 0d | Crane 1 [48 h] |
| C_MB_F_L_P8_1040 |  | Concreting of Curb - P8 | 2d | 2025-01-04 | 2025-01-06 | C_MB_F_L_P8_1030 | 122d | 0d |  |
|  | 2 | **Well Steining** |  | 2025-01-07 | 2025-05-31 |  |  |  |  |
| C_MB_F_L_P8_1050 |  | Steining Inner Shutter - P8 | 45d | 2025-01-07 | 2025-02-27 | C_MB_F_L_P8_1040 | 122d | 0d | Crane 1 [360 h] |
| C_MB_F_L_P8_1060 |  | Steining Reinforcement Tying - P8 | 30d | 2025-02-28 | 2025-04-03 | C_MB_F_L_P8_1050 | 122d | 0d |  |
| C_MB_F_L_P8_1070 |  | Steining Outer Shutter & Concreting - P8 | 30d | 2025-04-04 | 2025-05-08 | C_MB_F_L_P8_1060 | 122d | 0d | Crane 1 [240 h] |
| C_MB_F_L_P8_1080 |  | Sump Making & Bottom Plugging - P8 | 20d | 2025-05-09 | 2025-05-31 | C_MB_F_L_P8_1070 | 122d | 0d |  |
|  | 3 | **Well Cap** |  | 2025-06-01 | 2025-10-07 |  |  |  |  |
| C_MB_F_L_P8_1090 |  | Well Cap Reinforcement - P8 | 6d | 2025-06-01 | 2025-06-06 | C_MB_F_L_P8_1080 | 122d | 0d |  |
| C_MB_F_L_P8_1100 |  | Well Cap Shuttering - P8 | 5d | 2025-06-07 | 2025-10-04 | C_MB_F_L_P8_1090 | 122d | 0d | Crane 1 [40 h] |
| C_MB_F_L_P8_1110 |  | Well Cap Concreting - P8 | 2d | 2025-10-06 | 2025-10-07 | C_MB_F_L_P8_1100 | 122d | 0d |  |

| ID | WBS | Activity | Duration | Start | Finish | Predecessors | Total float | Free float | Resources |
| --- | --- | --- | --- | --- | --- | --- | --- | --- | --- |
|  | 14 | **P9** |  | 2024-12-03 | 2025-11-06 |  |  |  |  |
|  | 2 | **Curb and Cutting Edge** |  | 2024-12-03 | 2025-01-06 |  |  |  |  |
| C_MB_F_L_P9_1000 |  | Placement of cutting edge and alignment - P9 | 7d | 2024-12-03 | 2024-12-10 | C_SE_1010, SI_1050, D_MB_F_1110, C_SE_1005 | 13d | 0d |  |
| C_MB_F_L_P9_1010 |  | Placement of curb inner shutters - P9 | 5d | 2024-12-11 | 2024-12-16 | C_MB_F_L_P9_1000 | 13d | 0d | Crane 3 [40 h] |
| C_MB_F_L_P9_1020 |  | Reinforcement tying for curb - P9 | 10d | 2024-12-17 | 2024-12-27 | C_MB_F_L_P9_1010 | 13d | 0d |  |
| C_MB_F_L_P9_1030 |  | Curb outer shutters - P9 | 6d | 2024-12-28 | 2025-01-03 | C_MB_F_L_P9_1020 | 13d | 0d | Crane 3 [48 h] |
| C_MB_F_L_P9_1040 |  | Concreting of Curb - P9 | 2d | 2025-01-04 | 2025-01-06 | C_MB_F_L_P9_1030 | 13d | 0d |  |
|  | 3 | **Well Steining** |  | 2025-01-07 | 2025-10-02 |  |  |  |  |
| C_MB_F_L_P9_1050 |  | Steining Inner Shutters - P9 | 40d | 2025-01-07 | 2025-02-21 | C_MB_F_L_P9_1040 | 13d | 0d | Crane 3 [320 h] |
| C_MB_F_L_P9_1060 |  | Steining Reinforcement Tying - P9 | 44d | 2025-02-22 | 2025-04-14 | C_MB_F_L_P9_1050 | 13d | 0d |  |
| C_MB_F_L_P9_1070 |  | Steining Outer Shutter and Concreting - P9 | 30d | 2025-04-15 | 2025-05-19 | C_MB_F_L_P9_1060 | 13d | 0d | Crane 3 [240 h] |
| C_MB_F_L_P9_1080 |  | Sump Making and Bottom Plugging - P9 | 20d | 2025-05-20 | 2025-10-02 | C_MB_F_L_P9_1070 | 13d | 0d |  |
|  | 4 | **Well Cap** |  | 2025-10-03 | 2025-11-06 |  |  |  |  |
| C_MB_F_L_P9_1090 |  | Well Cap Reinforcement - P9 | 13d | 2025-10-03 | 2025-10-17 | C_MB_F_L_P9_1080 | 13d | 0d |  |
| C_MB_F_L_P9_1100 |  | Well Cap Shuttering - P9 | 15d | 2025-10-18 | 2025-11-04 | C_MB_F_L_P9_1090 | 13d | 0d | Crane 3 [120 h] |
| C_MB_F_L_P9_1110 |  | Well Cap Concreting - P9 | 2d | 2025-11-05 | 2025-11-06 | C_MB_F_L_P9_1100 | 13d | 0d |  |
|  | 15 | **P18** |  | 2024-12-11 | 2025-10-25 |  |  |  |  |
|  | 2 | **Curb and Cutting Edge** |  | 2024-12-11 | 2025-01-14 |  |  |  |  |
| C_MB_F_L_P18_1000 |  | Placement of cutting edge and alignment - P18 | 7d | 2024-12-11 | 2024-12-18 | D_MB_F_1150, SI_1050, C_SE_1000 | 265d | 0d |  |
| C_MB_F_L_P18_1010 |  | Placement of curb inner shutters - P18 | 5d | 2024-12-19 | 2024-12-24 | C_MB_F_L_P18_1000 | 265d | 0d | Crane 4 [40 h] |
| C_MB_F_L_P18_1020 |  | Reinforcement tying for curb - P18 | 10d | 2024-12-25 | 2025-01-04 | C_MB_F_L_P18_1010 | 265d | 0d |  |
| C_MB_F_L_P18_1030 |  | Curb outer shutters - P18 | 6d | 2025-01-06 | 2025-01-11 | C_MB_F_L_P18_1020 | 265d | 0d | Crane 4 [48 h] |
| C_MB_F_L_P18_1040 |  | Concreting of Curb - P18 | 2d | 2025-01-13 | 2025-01-14 | C_MB_F_L_P18_1030 | 265d | 0d |  |
|  | 3 | **Well Steining** |  | 2025-01-15 | 2025-10-10 |  |  |  |  |
| C_MB_F_L_P18_1050 |  | Steining Inner Shutters - P18 | 40d | 2025-01-15 | 2025-03-01 | C_MB_F_L_P18_1040 | 265d | 0d | Crane 4 [320 h] |
| C_MB_F_L_P18_1060 |  | Steining Reinforcement Tying - P18 | 44d | 2025-03-03 | 2025-04-22 | C_MB_F_L_P18_1050 | 265d | 0d |  |
| C_MB_F_L_P18_1070 |  | Steining Outer Shutter and Concreting - P18 | 30d | 2025-04-23 | 2025-05-27 | C_MB_F_L_P18_1060 | 265d | 0d | Crane 4 [240 h] |
| C_MB_F_L_P18_1080 |  | Sump Making and Bottom Plugging - P18 | 20d | 2025-05-28 | 2025-10-10 | C_MB_F_L_P18_1070 | 265d | 0d |  |

| ID | WBS | Activity | Duration | Start | Finish | Predecessors | Total float | Free float | Resources |
| --- | --- | --- | --- | --- | --- | --- | --- | --- | --- |
|  | 4 | **Well Cap** |  | 2025-10-11 | 2025-10-25 |  |  |  |  |
| C_MB_F_L_P18_1090 |  | Well Cap Reinforcement - P18 | 6d | 2025-10-11 | 2025-10-17 | C_MB_F_L_P18_1080 | 265d | 0d |  |
| C_MB_F_L_P18_1100 |  | Well Cap Shuttering - P18 | 5d | 2025-10-18 | 2025-10-23 | C_MB_F_L_P18_1090 | 265d | 0d | Crane 4 [40 h] |
| C_MB_F_L_P18_1110 |  | Well Cap Concreting - P18 | 2d | 2025-10-24 | 2025-10-25 | C_MB_F_L_P18_1100 | 265d | 0d |  |
|  | 16 | **P19** |  | 2024-12-11 | 2025-11-20 |  |  |  |  |
|  | 2 | **Curb and Cutting Edge** |  | 2024-12-11 | 2025-02-06 |  |  |  |  |
| C_MB_F_L_P19_1000 |  | Placement of cutting edge and alignment - P19 | 7d | 2024-12-11 | 2024-12-18 | D_MB_F_1110, SI_1050, C_SE_1000 | 1d | 0d |  |
| C_MB_F_L_P19_1010 |  | Placement of curb inner shutters - P19 | 5d | 2024-12-19 | 2024-12-24 | C_MB_F_L_P19_1000 | 1d | 0d | Crane 5 [40 h] |
| C_MB_F_L_P19_1020 |  | Reinforcement tying for curb - P19 | 20d | 2024-12-25 | 2025-01-16 | C_MB_F_L_P19_1010 | 1d | 0d |  |
| C_MB_F_L_P19_1030 |  | Curb outer shutters - P19 | 16d | 2025-01-17 | 2025-02-04 | C_MB_F_L_P19_1020 | 1d | 0d | Crane 5 [128 h] |
| C_MB_F_L_P19_1040 |  | Concreting of Curb - P19 | 2d | 2025-02-05 | 2025-02-06 | C_MB_F_L_P19_1030 | 1d | 0d |  |
|  | 3 | **Well Steining** |  | 2025-02-07 | 2025-11-03 |  |  |  |  |
| C_MB_F_L_P19_1050 |  | Steining Inner Shutters - P19 | 40d | 2025-02-07 | 2025-03-25 | C_MB_F_L_P19_1040 | 1d | 0d | Crane 5 [320 h] |
| C_MB_F_L_P19_1060 |  | Steining Reinforcement Tying - P19 | 44d | 2025-03-26 | 2025-05-15 | C_MB_F_L_P19_1050 | 1d | 0d |  |
| C_MB_F_L_P19_1070 |  | Steining Outer Shutter and Concreting - P19 | 30d | 2025-05-16 | 2025-10-10 | C_MB_F_L_P19_1060 | 1d | 0d | Crane 5 [240 h] |
| C_MB_F_L_P19_1080 |  | Sump Making and Bottom Plugging - P19 | 20d | 2025-10-11 | 2025-11-03 | C_MB_F_L_P19_1070 | 1d | 0d |  |
|  | 4 | **Well Cap** |  | 2025-11-04 | 2025-11-20 |  |  |  |  |
| C_MB_F_L_P19_1090 |  | Well Cap Reinforcement - P19 | 7d | 2025-11-04 | 2025-11-11 | C_MB_F_L_P19_1080 | 1d | 0d |  |
| C_MB_F_L_P19_1100 |  | Well Cap Shuttering - P19 | 5d | 2025-11-12 | 2025-11-17 | C_MB_F_L_P19_1090 | 1d | 0d | Crane 5 [40 h] |
| C_MB_F_L_P19_1110 |  | Well Cap Concreting - P19 | 3d | 2025-11-18 | 2025-11-20 | C_MB_F_L_P19_1100 | 1d | 0d |  |
|  | 17 | **P20** |  | 2024-12-11 | 2025-10-25 |  |  |  |  |
|  | 2 | **Curb and Cutting Edge** |  | 2024-12-11 | 2025-01-14 |  |  |  |  |
| C_MB_F_L_P20_1000 |  | Placement of cutting edge and alignment - P20 | 7d | 2024-12-11 | 2024-12-18 | SI_1050, D_MB_F_1150 FS+5d, C_SE_1000 | 106d | 0d |  |
| C_MB_F_L_P20_1010 |  | Placement of curb inner shutters - P20 | 5d | 2024-12-19 | 2024-12-24 | C_MB_F_L_P20_1000 | 106d | 0d | Crane 4 [40 h] |
| C_MB_F_L_P20_1020 |  | Reinforcement tying for curb - P20 | 10d | 2024-12-25 | 2025-01-04 | C_MB_F_L_P20_1010 | 106d | 0d |  |
| C_MB_F_L_P20_1030 |  | Curb outer shutters - P20 | 6d | 2025-01-06 | 2025-01-11 | C_MB_F_L_P20_1020 | 106d | 0d | Crane 4 [48 h] |
| C_MB_F_L_P20_1040 |  | Concreting of Curb - P20 | 2d | 2025-01-13 | 2025-01-14 | C_MB_F_L_P20_1030 | 106d | 0d |  |

| ID | WBS | Activity | Duration | Start | Finish | Predecessors | Total float | Free float | Resources |
| --- | --- | --- | --- | --- | --- | --- | --- | --- | --- |
|  | 3 | **Well Steining** |  | 2025-01-15 | 2025-10-10 |  |  |  |  |
| C_MB_F_L_P20_1050 |  | Steining Inner Shutters - P20 | 40d | 2025-01-15 | 2025-03-01 | C_MB_F_L_P20_1040 | 106d | 0d | Crane 4 [320 h] |
| C_MB_F_L_P20_1060 |  | Steining Reinforcement Tying - P20 | 44d | 2025-03-03 | 2025-04-22 | C_MB_F_L_P20_1050 | 106d | 0d |  |
| C_MB_F_L_P20_1070 |  | Steining Outer Shutter and Concreting - P20 | 30d | 2025-04-23 | 2025-05-27 | C_MB_F_L_P20_1060 | 106d | 0d | Crane 4 [240 h] |
| C_MB_F_L_P20_1080 |  | Sump Making and Bottom Plugging - P20 | 20d | 2025-05-28 | 2025-10-10 | C_MB_F_L_P20_1070 | 106d | 0d |  |
|  | 4 | **Well Cap** |  | 2025-10-11 | 2025-10-25 |  |  |  |  |
| C_MB_F_L_P20_1090 |  | Well Cap Reinforcement - P20 | 6d | 2025-10-11 | 2025-10-17 | C_MB_F_L_P20_1080 | 106d | 0d |  |
| C_MB_F_L_P20_1100 |  | Well Cap Shuttering - P20 | 5d | 2025-10-18 | 2025-10-23 | C_MB_F_L_P20_1090 | 106d | 0d | Crane 4 [40 h] |
| C_MB_F_L_P20_1110 |  | Well Cap Concreting - P20 | 2d | 2025-10-24 | 2025-10-25 | C_MB_F_L_P20_1100 | 106d | 0d |  |
|  | 2 | **P21** |  | 2024-12-11 | 2025-11-22 |  |  |  |  |
|  | 1 | **Curb and Cutting Edge** |  | 2024-12-11 | 2025-01-14 |  |  |  |  |
| C_MB_F_L_P21_1000 |  | Placement of Cutting Edge and Alignment - P21 | 7d | 2024-12-11 | 2024-12-18 | D_MB_F_1110 FS+6d, C_SE_1020, C_SE_1000 | 0d |  |  |
| C_MB_F_L_P21_1010 |  | Placement of Curb Inner Shutters - P21 | 5d | 2024-12-19 | 2024-12-24 | C_MB_F_L_P21_1000 | 0d |  | Crane 6 [40 h] |
| C_MB_F_L_P21_1020 |  | Reinforcement tying for Curb - P21 | 10d | 2024-12-25 | 2025-01-04 | C_MB_F_L_P21_1010 | 0d |  |  |
| C_MB_F_L_P21_1030 |  | Curb Outer Shutter - P21 | 6d | 2025-01-06 | 2025-01-11 | C_MB_F_L_P21_1020 | 0d |  | Crane 6 [48 h] |
| C_MB_F_L_P21_1040 |  | Concreting of Curb - P21 | 2d | 2025-01-13 | 2025-01-14 | C_MB_F_L_P21_1030 | 0d |  |  |
|  | 2 | **Well Steining** |  | 2025-01-15 | 2025-10-17 |  |  |  |  |
| C_MB_F_L_P21_1050 |  | Steining Inner Shutter - P21 | 45d | 2025-01-15 | 2025-03-07 | C_MB_F_L_P21_1040 | 0d |  | Crane 6 [360 h] |
| C_MB_F_L_P21_1060 |  | Steining Reinforcement Tying - P21 | 45d | 2025-03-08 | 2025-04-29 | C_MB_F_L_P21_1050 | 0d |  |  |
| C_MB_F_L_P21_1070 |  | Steining Outer Shutter & Concreting - P21 | 30d | 2025-04-30 | 2025-06-02 | C_MB_F_L_P21_1060 | 0d |  | Crane 6 [240 h] |
| C_MB_F_L_P21_1080 |  | Sump Making & Bottom Plugging - P21 | 20d | 2025-06-03 | 2025-10-17 | C_MB_F_L_P21_1070 | 0d |  |  |
|  | 3 | **Well Cap** |  | 2025-10-18 | 2025-11-22 |  |  |  |  |
| C_MB_F_L_P21_1090 |  | Well Cap Reinforcement - P21 | 13d | 2025-10-18 | 2025-11-01 | C_MB_F_L_P21_1080 | 0d |  |  |
| C_MB_F_L_P21_1100 |  | Well Cap Shuttering - P21 | 15d | 2025-11-03 | 2025-11-19 | C_MB_F_L_P21_1090 | 0d |  | Crane 6 [120 h] |
| C_MB_F_L_P21_1110 |  | Well Cap Concreting - P21 | 3d | 2025-11-20 | 2025-11-22 | C_MB_F_L_P21_1100 | 0d |  |  |

| ID | WBS | Activity | Duration | Start | Finish | Predecessors | Total float | Free float | Resources |
| --- | --- | --- | --- | --- | --- | --- | --- | --- | --- |
|  | 3 | **P22** |  | 2024-12-11 | 2025-10-15 |  |  |  |  |
|  | 1 | **Curb and Cutting Edge** |  | 2024-12-11 | 2025-01-14 |  |  |  |  |
| C_MB_F_L_P22_1000 |  | Placement of Cutting Edge and Alignment - P22 | 7d | 2024-12-11 | 2024-12-18 | D_MB_F_1150, C_SE_1000 | 352d | 0d |  |
| C_MB_F_L_P22_1010 |  | Placement of Curb Inner Shutters - P22 | 5d | 2024-12-19 | 2024-12-24 | C_MB_F_L_P22_1000 | 352d | 0d | Crane 7 [40 h] |
| C_MB_F_L_P22_1020 |  | Reinforcement tying for Curb - P22 | 10d | 2024-12-25 | 2025-01-04 | C_MB_F_L_P22_1010 | 352d | 0d |  |
| C_MB_F_L_P22_1030 |  | Curb Outer Shutter - P22 | 6d | 2025-01-06 | 2025-01-11 | C_MB_F_L_P22_1020 | 352d | 0d | Crane 7 [48 h] |
| C_MB_F_L_P22_1040 |  | Concreting of Curb - P22 | 2d | 2025-01-13 | 2025-01-14 | C_MB_F_L_P22_1030 | 352d | 0d |  |
|  | 2 | **Well Steining** |  | 2025-01-15 | 2025-06-07 |  |  |  |  |
| C_MB_F_L_P22_1050 |  | Steining Inner Shutter - P22 | 45d | 2025-01-15 | 2025-03-07 | C_MB_F_L_P22_1040 | 352d | 0d | Crane 7 [360 h] |
| C_MB_F_L_P22_1060 |  | Steining Reinforcement Tying - P22 | 30d | 2025-03-08 | 2025-04-11 | C_MB_F_L_P22_1050 | 352d | 0d |  |
| C_MB_F_L_P22_1070 |  | Steining Outer Shutter & Concreting - P22 | 30d | 2025-04-12 | 2025-05-16 | C_MB_F_L_P22_1060 | 352d | 0d | Crane 7 [240 h] |
| C_MB_F_L_P22_1080 |  | Sump Making & Bottom Plugging - P22 | 20d | 2025-05-17 | 2025-06-07 | C_MB_F_L_P22_1070 | 352d | 0d |  |
|  | 3 | **Well Cap** |  | 2025-10-01 | 2025-10-15 |  |  |  |  |
| C_MB_F_L_P22_1090 |  | Well Cap Reinforcement - P22 | 6d | 2025-10-01 | 2025-10-07 | C_MB_F_L_P22_1080 | 352d | 0d |  |
| C_MB_F_L_P22_1100 |  | Well Cap Shuttering - P22 | 5d | 2025-10-08 | 2025-10-13 | C_MB_F_L_P22_1090 | 352d | 0d | Crane 7 [40 h] |
| C_MB_F_L_P22_1110 |  | Well Cap Concreting - P22 | 2d | 2025-10-14 | 2025-10-15 | C_MB_F_L_P22_1100 | 352d | 0d |  |
|  | 5 | **P23** |  | 2024-12-11 | 2025-11-22 |  |  |  |  |
|  | 1 | **Curb and Cutting Edge** |  | 2024-12-11 | 2025-01-14 |  |  |  |  |
| C_MB_F_L_P23_1000 |  | Placement of Cutting Edge and Alignment - P23 | 7d | 2024-12-11 | 2024-12-18 | ROW_1010, D_MB_F_1110, C_SE_1000 | 169d | 0d |  |
| C_MB_F_L_P23_1010 |  | Placement of Curb Inner Shutters - P23 | 5d | 2024-12-19 | 2024-12-24 | C_MB_F_L_P23_1000 | 169d | 0d | Crane 8 [40 h] |
| C_MB_F_L_P23_1020 |  | Reinforcement tying for Curb - P23 | 10d | 2024-12-25 | 2025-01-04 | C_MB_F_L_P23_1010 | 169d | 0d |  |
| C_MB_F_L_P23_1030 |  | Curb Outer Shutter - P23 | 6d | 2025-01-06 | 2025-01-11 | C_MB_F_L_P23_1020 | 169d | 0d | Crane 8 [48 h] |
| C_MB_F_L_P23_1040 |  | Concreting of Curb - P23 | 2d | 2025-01-13 | 2025-01-14 | C_MB_F_L_P23_1030 | 169d | 0d |  |
|  | 2 | **Well Steining** |  | 2025-01-15 | 2025-10-17 |  |  |  |  |
| C_MB_F_L_P23_1050 |  | Steining Inner Shutter - P23 | 45d | 2025-01-15 | 2025-03-07 | C_MB_F_L_P23_1040 | 169d | 0d | Crane 8 [360 h] |
| C_MB_F_L_P23_1060 |  | Steining Reinforcement Tying - P23 | 45d | 2025-03-08 | 2025-04-29 | C_MB_F_L_P23_1050 | 169d | 0d |  |
| C_MB_F_L_P23_1070 |  | Steining Outer Shutter & Concreting - P23 | 30d | 2025-04-30 | 2025-06-02 | C_MB_F_L_P23_1060 | 169d | 0d | Crane 8 [240 h] |
| C_MB_F_L_P23_1080 |  | Sump Making & Bottom Plugging - P23 | 20d | 2025-06-03 | 2025-10-17 | C_MB_F_L_P23_1070 | 169d | 0d |  |

| ID | WBS | Activity | Duration | Start | Finish | Predecessors | Total float | Free float | Resources |
| --- | --- | --- | --- | --- | --- | --- | --- | --- | --- |
|  | 3 | **Well Cap** |  | 2025-10-18 | 2025-11-22 |  |  |  |  |
| C_MB_F_L_P23_1090 |  | Well Cap Reinforcement - P23 | 13d | 2025-10-18 | 2025-11-01 | C_MB_F_L_P23_1080 | 169d | 0d |  |
| C_MB_F_L_P23_1100 |  | Well Cap Shuttering - P23 | 15d | 2025-11-03 | 2025-11-19 | C_MB_F_L_P23_1090 | 169d | 0d | Crane 8 [120 h] |
| C_MB_F_L_P23_1110 |  | Well Cap Concreting - P23 | 3d | 2025-11-20 | 2025-11-22 | C_MB_F_L_P23_1100 | 169d | 0d |  |
|  | 6 | **P24** |  | 2024-12-11 | 2025-10-15 |  |  |  |  |
|  | 1 | **Curb and Cutting Edge** |  | 2024-12-11 | 2025-01-14 |  |  |  |  |
| C_MB_F_L_P24_1000 |  | Placement of Cutting Edge and Alignment - P24 | 7d | 2024-12-11 | 2024-12-18 | D_MB_F_1150 FS+5.09d, C_SE_1000 | 307d | 0d |  |
| C_MB_F_L_P24_1010 |  | Placement of Curb Inner Shutters - P24 | 5d | 2024-12-19 | 2024-12-24 | C_MB_F_L_P24_1000 | 307d | 0d | Crane 7 [40 h] |
| C_MB_F_L_P24_1020 |  | Reinforcement tying for Curb - P24 | 10d | 2024-12-25 | 2025-01-04 | C_MB_F_L_P24_1010 | 307d | 0d |  |
| C_MB_F_L_P24_1030 |  | Curb Outer Shutter - P24 | 6d | 2025-01-06 | 2025-01-11 | C_MB_F_L_P24_1020 | 307d | 0d | Crane 7 [48 h] |
| C_MB_F_L_P24_1040 |  | Concreting of Curb - P24 | 2d | 2025-01-13 | 2025-01-14 | C_MB_F_L_P24_1030 | 307d | 0d |  |
|  | 2 | **Well Steining** |  | 2025-01-15 | 2025-06-07 |  |  |  |  |
| C_MB_F_L_P24_1050 |  | Steining Inner Shutter - P24 | 45d | 2025-01-15 | 2025-03-07 | C_MB_F_L_P24_1040 | 307d | 0d | Crane 7 [360 h] |
| C_MB_F_L_P24_1060 |  | Steining Reinforcement Tying - P24 | 30d | 2025-03-08 | 2025-04-11 | C_MB_F_L_P24_1050 | 307d | 0d |  |
| C_MB_F_L_P24_1070 |  | Steining Outer Shutter & Concreting - P24 | 30d | 2025-04-12 | 2025-05-16 | C_MB_F_L_P24_1060 | 307d | 0d | Crane 7 [240 h] |
| C_MB_F_L_P24_1080 |  | Sump Making & Bottom Plugging - P24 | 20d | 2025-05-17 | 2025-06-07 | C_MB_F_L_P24_1070 | 307d | 0d |  |
|  | 3 | **Well Cap** |  | 2025-10-01 | 2025-10-15 |  |  |  |  |
| C_MB_F_L_P24_1090 |  | Well Cap Reinforcement - P24 | 6d | 2025-10-01 | 2025-10-07 | C_MB_F_L_P24_1080 | 307d | 0d |  |
| C_MB_F_L_P24_1100 |  | Well Cap Shuttering - P24 | 5d | 2025-10-08 | 2025-10-13 | C_MB_F_L_P24_1090 | 307d | 0d | Crane 7 [40 h] |
| C_MB_F_L_P24_1110 |  | Well Cap Concreting - P24 | 2d | 2025-10-14 | 2025-10-15 | C_MB_F_L_P24_1100 | 307d | 0d |  |
|  | 7 | **P25** |  | 2024-12-11 | 2025-11-22 |  |  |  |  |
|  | 1 | **Curb and Cutting Edge** |  | 2024-12-11 | 2025-01-14 |  |  |  |  |
| C_MB_F_L_P25_1000 |  | Placement of Cutting Edge and Alignment - P25 | 7d | 2024-12-11 | 2024-12-18 | D_MB_F_1110 FS+10.91d, C_SE_1000, ROW_1010 | 159d | 0d |  |
| C_MB_F_L_P25_1010 |  | Placement of Curb Inner Shutters - P25 | 5d | 2024-12-19 | 2024-12-24 | C_MB_F_L_P25_1000 | 159d | 0d | Crane 9 [40 h] |
| C_MB_F_L_P25_1020 |  | Reinforcement tying for Curb - P25 | 10d | 2024-12-25 | 2025-01-04 | C_MB_F_L_P25_1010 | 159d | 0d |  |
| C_MB_F_L_P25_1030 |  | Curb Outer Shutter - P25 | 6d | 2025-01-06 | 2025-01-11 | C_MB_F_L_P25_1020 | 159d | 0d | Crane 9 [48 h] |
| C_MB_F_L_P25_1040 |  | Concreting of Curb - P25 | 2d | 2025-01-13 | 2025-01-14 | C_MB_F_L_P25_1030 | 159d | 0d |  |

| ID | WBS | Activity | Duration | Start | Finish | Predecessors | Total float | Free float | Resources |
| --- | --- | --- | --- | --- | --- | --- | --- | --- | --- |
|  | 2 | **Well Steining** |  | 2025-01-15 | 2025-10-17 |  |  |  |  |
| C_MB_F_L_P25_1050 |  | Steining Inner Shutter - P25 | 45d | 2025-01-15 | 2025-03-07 | C_MB_F_L_P25_1040 | 159d | 0d | Crane 9 [360 h] |
| C_MB_F_L_P25_1060 |  | Steining Reinforcement Tying - P25 | 45d | 2025-03-08 | 2025-04-29 | C_MB_F_L_P25_1050 | 159d | 0d |  |
| C_MB_F_L_P25_1070 |  | Steining Outer Shutter & Concreting - P25 | 30d | 2025-04-30 | 2025-06-02 | C_MB_F_L_P25_1060 | 159d | 0d | Crane 9 [240 h] |
| C_MB_F_L_P25_1080 |  | Sump Making & Bottom Plugging - P25 | 20d | 2025-06-03 | 2025-10-17 | C_MB_F_L_P25_1070 | 159d | 0d |  |
|  | 3 | **Well Cap** |  | 2025-10-18 | 2025-11-22 |  |  |  |  |
| C_MB_F_L_P25_1090 |  | Well Cap Reinforcement - P25 | 13d | 2025-10-18 | 2025-11-01 | C_MB_F_L_P25_1080 | 159d | 0d |  |
| C_MB_F_L_P25_1100 |  | Well Cap Shuttering - P25 | 15d | 2025-11-03 | 2025-11-19 | C_MB_F_L_P25_1090 | 159d | 0d | Crane 9 [120 h] |
| C_MB_F_L_P25_1110 |  | Well Cap Concreting - P25 | 3d | 2025-11-20 | 2025-11-22 | C_MB_F_L_P25_1100 | 159d | 0d |  |
|  | 8 | **P26** |  | 2024-12-11 | 2025-10-15 |  |  |  |  |
|  | 1 | **Curb and Cutting Edge** |  | 2024-12-11 | 2025-01-14 |  |  |  |  |
| C_MB_F_L_P26_1000 |  | Placement of Cutting Edge and Alignment - P26 | 7d | 2024-12-11 | 2024-12-18 | D_MB_F_1150 FS+12.73d, C_SE_1000, ROW_1010 | 456d | 0d |  |
| C_MB_F_L_P26_1010 |  | Placement of Curb Inner Shutters - P26 | 5d | 2024-12-19 | 2024-12-24 | C_MB_F_L_P26_1000 | 456d | 0d | Crane 10 [40 h] |
| C_MB_F_L_P26_1020 |  | Reinforcement tying for Curb - P26 | 10d | 2024-12-25 | 2025-01-04 | C_MB_F_L_P26_1010 | 456d | 0d |  |
| C_MB_F_L_P26_1030 |  | Curb Outer Shutter - P26 | 6d | 2025-01-06 | 2025-01-11 | C_MB_F_L_P26_1020 | 456d | 0d | Crane 10 [48 h] |
| C_MB_F_L_P26_1040 |  | Concreting of Curb - P26 | 2d | 2025-01-13 | 2025-01-14 | C_MB_F_L_P26_1030 | 456d | 0d |  |
|  | 2 | **Well Steining** |  | 2025-01-15 | 2025-06-07 |  |  |  |  |
| C_MB_F_L_P26_1050 |  | Steining Inner Shutter - P26 | 45d | 2025-01-15 | 2025-03-07 | C_MB_F_L_P26_1040 | 456d | 0d | Crane 10 [360 h] |
| C_MB_F_L_P26_1060 |  | Steining Reinforcement Tying - P26 | 30d | 2025-03-08 | 2025-04-11 | C_MB_F_L_P26_1050 | 456d | 0d |  |
| C_MB_F_L_P26_1070 |  | Steining Outer Shutter & Concreting - P26 | 30d | 2025-04-12 | 2025-05-16 | C_MB_F_L_P26_1060 | 456d | 0d | Crane 10 [240 h] |
| C_MB_F_L_P26_1080 |  | Sump Making & Bottom Plugging - P26 | 20d | 2025-05-17 | 2025-06-07 | C_MB_F_L_P26_1070 | 456d | 0d |  |
|  | 3 | **Well Cap** |  | 2025-10-01 | 2025-10-15 |  |  |  |  |
| C_MB_F_L_P26_1090 |  | Well Cap Reinforcement - P26 | 6d | 2025-10-01 | 2025-10-07 | C_MB_F_L_P26_1080 | 456d | 0d |  |
| C_MB_F_L_P26_1100 |  | Well Cap Shuttering - P26 | 5d | 2025-10-08 | 2025-10-13 | C_MB_F_L_P26_1090 | 456d | 0d | Crane 10 [40 h] |
| C_MB_F_L_P26_1110 |  | Well Cap Concreting - P26 | 2d | 2025-10-14 | 2025-10-15 | C_MB_F_L_P26_1100 | 456d | 0d |  |

| ID | WBS | Activity | Duration | Start | Finish | Predecessors | Total float | Free float | Resources |
| --- | --- | --- | --- | --- | --- | --- | --- | --- | --- |
|  | 9 | **P27** |  | 2024-12-11 | 2025-11-22 |  |  |  |  |
|  | 1 | **Curb and Cutting Edge** |  | 2024-12-11 | 2025-01-14 |  |  |  |  |
| C_MB_F_L_P27_1000 |  | Placement of Cutting Edge and Alignment - P27 | 7d | 2024-12-11 | 2024-12-18 | D_MB_F_1110 FS+10.91d, C_SE_1000, ROW_1010 | 159d | 0d |  |
| C_MB_F_L_P27_1010 |  | Placement of Curb Inner Shutters - P27 | 5d | 2024-12-19 | 2024-12-24 | C_MB_F_L_P27_1000 | 159d | 0d | Crane 11 [40 h] |
| C_MB_F_L_P27_1020 |  | Reinforcement tying for Curb - P27 | 10d | 2024-12-25 | 2025-01-04 | C_MB_F_L_P27_1010 | 159d | 0d |  |
| C_MB_F_L_P27_1030 |  | Curb Outer Shutter - P27 | 6d | 2025-01-06 | 2025-01-11 | C_MB_F_L_P27_1020 | 159d | 0d | Crane 11 [48 h] |
| C_MB_F_L_P27_1040 |  | Concreting of Curb - P27 | 2d | 2025-01-13 | 2025-01-14 | C_MB_F_L_P27_1030 | 159d | 0d |  |
|  | 2 | **Well Steining** |  | 2025-01-15 | 2025-10-17 |  |  |  |  |
| C_MB_F_L_P27_1050 |  | Steining Inner Shutter - P27 | 45d | 2025-01-15 | 2025-03-07 | C_MB_F_L_P27_1040 | 159d | 0d | Crane 11 [360 h] |
| C_MB_F_L_P27_1060 |  | Steining Reinforcement Tying - P27 | 45d | 2025-03-08 | 2025-04-29 | C_MB_F_L_P27_1050 | 159d | 0d |  |
| C_MB_F_L_P27_1070 |  | Steining Outer Shutter & Concreting - P27 | 30d | 2025-04-30 | 2025-06-02 | C_MB_F_L_P27_1060 | 159d | 0d | Crane 11 [240 h] |
| C_MB_F_L_P27_1080 |  | Sump Making & Bottom Plugging - P27 | 20d | 2025-06-03 | 2025-10-17 | C_MB_F_L_P27_1070 | 159d | 0d |  |
|  | 3 | **Well Cap** |  | 2025-10-18 | 2025-11-22 |  |  |  |  |
| C_MB_F_L_P27_1090 |  | Well Cap Reinforcement - P27 | 13d | 2025-10-18 | 2025-11-01 | C_MB_F_L_P27_1080 | 159d | 0d |  |
| C_MB_F_L_P27_1100 |  | Well Cap Shuttering - P27 | 15d | 2025-11-03 | 2025-11-19 | C_MB_F_L_P27_1090 | 159d | 0d | Crane 11 [120 h] |
| C_MB_F_L_P27_1110 |  | Well Cap Concreting - P27 | 3d | 2025-11-20 | 2025-11-22 | C_MB_F_L_P27_1100 | 159d | 0d |  |
|  | 10 | **P28** |  | 2024-12-11 | 2025-10-15 |  |  |  |  |
|  | 1 | **Curb and Cutting Edge** |  | 2024-12-11 | 2025-01-14 |  |  |  |  |
| C_MB_F_L_P28_1000 |  | Placement of Cutting Edge and Alignment - P28 | 7d | 2024-12-11 | 2024-12-18 | D_MB_F_1150 FS+2.91d, C_SE_1000, ROW_1010 SS+21.82d | 297d | 0d |  |
| C_MB_F_L_P28_1010 |  | Placement of Curb Inner Shutters - P28 | 5d | 2024-12-19 | 2024-12-24 | C_MB_F_L_P28_1000 | 297d | 0d | Crane 10 [40 h] |
| C_MB_F_L_P28_1020 |  | Reinforcement tying for Curb - P28 | 10d | 2024-12-25 | 2025-01-04 | C_MB_F_L_P28_1010 | 297d | 0d |  |
| C_MB_F_L_P28_1030 |  | Curb Outer Shutter - P28 | 6d | 2025-01-06 | 2025-01-11 | C_MB_F_L_P28_1020 | 297d | 0d | Crane 10 [48 h] |
| C_MB_F_L_P28_1040 |  | Concreting of Curb - P28 | 2d | 2025-01-13 | 2025-01-14 | C_MB_F_L_P28_1030 | 297d | 0d |  |
|  | 2 | **Well Steining** |  | 2025-01-15 | 2025-06-07 |  |  |  |  |
| C_MB_F_L_P28_1050 |  | Steining Inner Shutter - P28 | 45d | 2025-01-15 | 2025-03-07 | C_MB_F_L_P28_1040 | 297d | 0d | Crane 10 [360 h] |
| C_MB_F_L_P28_1060 |  | Steining Reinforcement Tying - P28 | 30d | 2025-03-08 | 2025-04-11 | C_MB_F_L_P28_1050 | 297d | 0d |  |
| C_MB_F_L_P28_1070 |  | Steining Outer Shutter & Concreting - P28 | 30d | 2025-04-12 | 2025-05-16 | C_MB_F_L_P28_1060 | 297d | 0d | Crane 10 [240 h] |
| C_MB_F_L_P28_1080 |  | Sump Making & Bottom Plugging - P28 | 20d | 2025-05-17 | 2025-06-07 | C_MB_F_L_P28_1070 | 297d | 0d |  |

| ID | WBS | Activity | Duration | Start | Finish | Predecessors | Total float | Free float | Resources |
| --- | --- | --- | --- | --- | --- | --- | --- | --- | --- |
|  | 3 | **Well Cap** |  | 2025-10-01 | 2025-10-15 |  |  |  |  |
| C_MB_F_L_P28_1090 |  | Well Cap Reinforcement - P28 | 6d | 2025-10-01 | 2025-10-07 | C_MB_F_L_P28_1080 | 297d | 0d |  |
| C_MB_F_L_P28_1100 |  | Well Cap Shuttering - P28 | 5d | 2025-10-08 | 2025-10-13 | C_MB_F_L_P28_1090 | 297d | 0d | Crane 10 [40 h] |
| C_MB_F_L_P28_1110 |  | Well Cap Concreting - P28 | 2d | 2025-10-14 | 2025-10-15 | C_MB_F_L_P28_1100 | 297d | 0d |  |
|  | 11 | **P29** |  | 2024-12-11 | 2025-11-22 |  |  |  |  |
|  | 1 | **Curb and Cutting Edge** |  | 2024-12-11 | 2025-01-14 |  |  |  |  |
| C_MB_F_L_P29_1000 |  | Placement of Cutting Edge and Alignment - P29 | 7d | 2024-12-11 | 2024-12-18 | D_MB_F_1110 FS+10.91d, C_SE_1000, ROW_1010 | 13d | 0d |  |
| C_MB_F_L_P29_1010 |  | Placement of Curb Inner Shutters - P29 | 5d | 2024-12-19 | 2024-12-24 | C_MB_F_L_P29_1000 | 13d | 0d | Crane 12 [40 h] |
| C_MB_F_L_P29_1020 |  | Reinforcement tying for Curb - P29 | 10d | 2024-12-25 | 2025-01-04 | C_MB_F_L_P29_1010 | 13d | 0d |  |
| C_MB_F_L_P29_1030 |  | Curb Outer Shutter - P29 | 6d | 2025-01-06 | 2025-01-11 | C_MB_F_L_P29_1020 | 13d | 0d | Crane 12 [48 h] |
| C_MB_F_L_P29_1040 |  | Concreting of Curb - P29 | 2d | 2025-01-13 | 2025-01-14 | C_MB_F_L_P29_1030 | 13d | 0d |  |
|  | 2 | **Well Steining** |  | 2025-01-15 | 2025-10-17 |  |  |  |  |
| C_MB_F_L_P29_1050 |  | Steining Inner Shutter - P29 | 45d | 2025-01-15 | 2025-03-07 | C_MB_F_L_P29_1040 | 13d | 0d | Crane 12 [360 h] |
| C_MB_F_L_P29_1060 |  | Steining Reinforcement Tying - P29 | 45d | 2025-03-08 | 2025-04-29 | C_MB_F_L_P29_1050 | 13d | 0d |  |
| C_MB_F_L_P29_1070 |  | Steining Outer Shutter & Concreting - P29 | 30d | 2025-04-30 | 2025-06-02 | C_MB_F_L_P29_1060 | 13d | 0d | Crane 12 [240 h] |
| C_MB_F_L_P29_1080 |  | Sump Making & Bottom Plugging - P29 | 20d | 2025-06-03 | 2025-10-17 | C_MB_F_L_P29_1070 | 13d | 0d |  |
|  | 3 | **Well Cap** |  | 2025-10-18 | 2025-11-22 |  |  |  |  |
| C_MB_F_L_P29_1090 |  | Well Cap Reinforcement - P29 | 13d | 2025-10-18 | 2025-11-01 | C_MB_F_L_P29_1080 | 13d | 0d |  |
| C_MB_F_L_P29_1100 |  | Well Cap Shuttering - P29 | 15d | 2025-11-03 | 2025-11-19 | C_MB_F_L_P29_1090 | 13d | 0d | Crane 12 [120 h] |
| C_MB_F_L_P29_1110 |  | Well Cap Concreting - P29 | 3d | 2025-11-20 | 2025-11-22 | C_MB_F_L_P29_1100 | 13d | 0d |  |
|  | 12 | **P30** |  | 2024-12-11 | 2025-10-15 |  |  |  |  |
|  | 1 | **Curb and Cutting Edge** |  | 2024-12-11 | 2025-01-14 |  |  |  |  |
| C_MB_F_L_P30_1000 |  | Placement of Cutting Edge and Alignment - P30 | 7d | 2024-12-11 | 2024-12-18 | D_MB_F_1150 FS+12.73d, C_SE_1000, ROW_1010 | 406d | 0d |  |
| C_MB_F_L_P30_1010 |  | Placement of Curb Inner Shutters - P30 | 5d | 2024-12-19 | 2024-12-24 | C_MB_F_L_P30_1000 | 406d | 0d | Crane 13 [40 h] |
| C_MB_F_L_P30_1020 |  | Reinforcement tying for Curb - P30 | 10d | 2024-12-25 | 2025-01-04 | C_MB_F_L_P30_1010 | 406d | 0d |  |
| C_MB_F_L_P30_1030 |  | Curb Outer Shutter - P30 | 6d | 2025-01-06 | 2025-01-11 | C_MB_F_L_P30_1020 | 406d | 0d | Crane 13 [48 h] |
| C_MB_F_L_P30_1040 |  | Concreting of Curb - P30 | 2d | 2025-01-13 | 2025-01-14 | C_MB_F_L_P30_1030 | 406d | 0d |  |

| ID | WBS | Activity | Duration | Start | Finish | Predecessors | Total float | Free float | Resources |
| --- | --- | --- | --- | --- | --- | --- | --- | --- | --- |
|  | 2 | **Well Steining** |  | 2025-01-15 | 2025-06-07 |  |  |  |  |
| C_MB_F_L_P30_1050 |  | Steining Inner Shutter - P30 | 45d | 2025-01-15 | 2025-03-07 | C_MB_F_L_P30_1040 | 406d | 0d | Crane 13 [360 h] |
| C_MB_F_L_P30_1060 |  | Steining Reinforcement Tying - P30 | 30d | 2025-03-08 | 2025-04-11 | C_MB_F_L_P30_1050 | 406d | 0d |  |
| C_MB_F_L_P30_1070 |  | Steining Outer Shutter & Concreting - P30 | 30d | 2025-04-12 | 2025-05-16 | C_MB_F_L_P30_1060 | 406d | 0d | Crane 13 [240 h] |
| C_MB_F_L_P30_1080 |  | Sump Making & Bottom Plugging - P30 | 20d | 2025-05-17 | 2025-06-07 | C_MB_F_L_P30_1070 | 406d | 0d |  |
|  | 3 | **Well Cap** |  | 2025-10-01 | 2025-10-15 |  |  |  |  |
| C_MB_F_L_P30_1090 |  | Well Cap Reinforcement - P30 | 6d | 2025-10-01 | 2025-10-07 | C_MB_F_L_P30_1080 | 406d | 0d |  |
| C_MB_F_L_P30_1100 |  | Well Cap Shuttering - P30 | 5d | 2025-10-08 | 2025-10-13 | C_MB_F_L_P30_1090 | 406d | 0d | Crane 13 [40 h] |
| C_MB_F_L_P30_1110 |  | Well Cap Concreting - P30 | 2d | 2025-10-14 | 2025-10-15 | C_MB_F_L_P30_1100 | 406d | 0d |  |
|  | 2 | **Marine** |  | 2025-10-08 | 2026-12-11 |  |  |  |  |
|  | 2 | **P10** |  | 2025-10-08 | 2026-05-19 |  |  |  |  |
|  | 2 | **Curb and Cutting Edge** |  | 2025-10-08 | 2025-12-16 |  |  |  |  |
| C_MB_F_M_P10_1030 |  | Sheet Pile Driving-P10 | 30d | 2025-10-08 | 2025-11-11 | C_MB_F_L_P6_1110, C_SE_1005 | 281d | 0d | Crane 14 [240 h]; Barge-1 [240 h] |
| C_MB_F_M_P10_1040 |  | Fabrication & Placement of cutting edge and alignment - P10 | 7d | 2025-11-12 | 2025-11-19 | D_PP_1030, D_GAD_MB_1030, D_DBR_MB_1030, D_MB_F_1150 FS+160d, ROW_1010, C_MB_F_M_P10_1030 | 281d | 0d |  |
| C_MB_F_M_P10_1050 |  | Placement of curb inner shutters - P10 | 5d | 2025-11-20 | 2025-11-25 | C_MB_F_M_P10_1040 | 281d | 0d | Crane 14 [40 h]; Barge-1 [40 h] |
| C_MB_F_M_P10_1060 |  | Reinforcement tying for curb - P10 | 10d | 2025-11-26 | 2025-12-06 | C_MB_F_M_P10_1050 | 281d | 0d |  |
| C_MB_F_M_P10_1070 |  | Curb outer shutters - P10 | 6d | 2025-12-08 | 2025-12-13 | C_MB_F_M_P10_1060 | 281d | 0d | Crane 14 [48 h]; Barge-1 [48 h] |
| C_MB_F_M_P10_1080 |  | Concreting of Curb - P10 | 2d | 2025-12-15 | 2025-12-16 | C_MB_F_M_P10_1070 | 281d | 0d |  |
|  | 3 | **Well Steining** |  | 2025-12-17 | 2026-05-04 |  |  |  |  |
| C_MB_F_M_P10_1090 |  | Steining Inner Shutters - P10 | 40d | 2025-12-17 | 2026-01-31 | C_MB_F_M_P10_1080 | 281d | 0d | Crane 14 [320 h]; Barge-1 [320 h] |
| C_MB_F_M_P10_1100 |  | Steining Reinforcement Tying - P10 | 44d | 2026-02-02 | 2026-03-24 | C_MB_F_M_P10_1090 | 281d | 0d |  |
| C_MB_F_M_P10_1110 |  | Steining Outer Shutter and Concreting - P10 | 15d | 2026-03-25 | 2026-04-10 | C_MB_F_M_P10_1100 | 281d | 0d | Crane 14 [120 h]; Barge-1 [120 h] |
| C_MB_F_M_P10_1120 |  | Sump Making and Bottom Plugging - P10 | 20d | 2026-04-11 | 2026-05-04 | C_MB_F_M_P10_1110 | 281d | 0d |  |
|  | 4 | **Well Cap** |  | 2026-05-05 | 2026-05-19 |  |  |  |  |
| C_MB_F_M_P10_1130 |  | Well Cap Reinforcement - P10 | 6d | 2026-05-05 | 2026-05-11 | C_MB_F_M_P10_1120 | 281d | 0d |  |
| C_MB_F_M_P10_1140 |  | Well Cap Shuttering - P10 | 5d | 2026-05-12 | 2026-05-16 | C_MB_F_M_P10_1130 | 281d | 0d | Crane 14 [40 h]; Barge-1 [40 h] |
| C_MB_F_M_P10_1150 |  | Well Cap Concreting - P10 | 2d | 2026-05-18 | 2026-05-19 | C_MB_F_M_P10_1140 | 281d | 0d |  |

| ID | WBS | Activity | Duration | Start | Finish | Predecessors | Total float | Free float | Resources |
| --- | --- | --- | --- | --- | --- | --- | --- | --- | --- |
|  | 3 | **P11** |  | 2025-11-15 | 2026-12-03 |  |  |  |  |
|  | 2 | **Curb and Cutting Edge** |  | 2025-11-15 | 2026-02-16 |  |  |  |  |
| C_MB_F_M_P11_1030 |  | Sheet Pile Driving-P11 | 30d | 2025-11-15 | 2025-12-19 | C_MB_F_L_P7_1110, C_SE_1005 | 6d | 0d | Crane 15 [240 h]; Barge-2 [240 h] |
| C_MB_F_M_P11_1040 |  | Placement of cutting edge and alignment - P11 | 7d | 2025-12-20 | 2025-12-27 | D_MB_F_1110 FS+130d, ROW_1010, C_MB_F_M_P11_1030 | 6d | 0d |  |
| C_MB_F_M_P11_1050 |  | Placement of curb inner shutters - P11 | 5d | 2025-12-29 | 2026-01-02 | C_MB_F_M_P11_1040 | 6d | 0d | Crane 15 [40 h]; Barge-2 [40 h] |
| C_MB_F_M_P11_1060 |  | Reinforcement tying for curb - P11 | 20d | 2026-01-03 | 2026-01-26 | C_MB_F_M_P11_1050 | 6d | 0d |  |
| C_MB_F_M_P11_1070 |  | Curb outer shutters - P11 | 16d | 2026-01-27 | 2026-02-13 | C_MB_F_M_P11_1060 | 6d | 0d | Crane 15 [128 h]; Barge-2 [128 h] |
| C_MB_F_M_P11_1080 |  | Concreting of Curb - P11 | 2d | 2026-02-14 | 2026-02-16 | C_MB_F_M_P11_1070 | 6d | 0d |  |
|  | 3 | **Well Steining** |  | 2026-02-17 | 2026-10-28 |  |  |  |  |
| C_MB_F_M_P11_1090 |  | Steining Inner Shutters - P11 | 40d | 2026-02-17 | 2026-04-03 | C_MB_F_M_P11_1080 | 6d | 0d | Crane 15 [320 h]; Barge-2 [320 h] |
| C_MB_F_M_P11_1100 |  | Steining Reinforcement Tying - P11 | 44d | 2026-04-04 | 2026-05-25 | C_MB_F_M_P11_1090 | 6d | 0d |  |
| C_MB_F_M_P11_1110 |  | Steining Outer Shutter and Concreting - P11 | 15d | 2026-05-26 | 2026-10-05 | C_MB_F_M_P11_1100 | 6d | 0d | Crane 15 [120 h]; Barge-2 [120 h] |
| C_MB_F_M_P11_1120 |  | Sump Making and Bottom Plugging - P11 | 20d | 2026-10-06 | 2026-10-28 | C_MB_F_M_P11_1110 | 6d | 0d |  |
|  | 4 | **Well Cap** |  | 2026-10-29 | 2026-12-03 |  |  |  |  |
| C_MB_F_M_P11_1130 |  | Well Cap Reinforcement - P11 | 13d | 2026-10-29 | 2026-11-12 | C_MB_F_M_P11_1120 | 6d | 0d |  |
| C_MB_F_M_P11_1140 |  | Well Cap Shuttering - P11 | 15d | 2026-11-13 | 2026-11-30 | C_MB_F_M_P11_1130 | 6d | 0d | Crane 15 [120 h]; Barge-2 [120 h] |
| C_MB_F_M_P11_1150 |  | Well Cap Concreting - P11 | 3d | 2026-12-01 | 2026-12-03 | C_MB_F_M_P11_1140 | 6d | 0d |  |
|  | 4 | **P12** |  | 2025-10-08 | 2026-05-19 |  |  |  |  |
|  | 2 | **Curb and Cutting Edge** |  | 2025-10-08 | 2025-12-16 |  |  |  |  |
| C_MB_F_M_P12_1030 |  | Sheet Pile Driving-P12 | 30d | 2025-10-08 | 2025-11-11 | C_MB_F_L_P8_1110, C_SE_1005 | 122d | 0d | Crane 14 [240 h]; Barge-1 [240 h] |
| C_MB_F_M_P12_1040 |  | Placement of cutting edge and alignment - P12 | 7d | 2025-11-12 | 2025-11-19 | D_MB_F_1150 FS+165d, ROW_1010, C_MB_F_M_P12_1030 | 122d | 0d |  |
| C_MB_F_M_P12_1050 |  | Placement of curb inner shutters - P12 | 5d | 2025-11-20 | 2025-11-25 | C_MB_F_M_P12_1040 | 122d | 0d | Crane 14 [40 h]; Barge-1 [40 h] |
| C_MB_F_M_P12_1060 |  | Reinforcement tying for curb - P12 | 10d | 2025-11-26 | 2025-12-06 | C_MB_F_M_P12_1050 | 122d | 0d |  |
| C_MB_F_M_P12_1070 |  | Curb outer shutters - P12 | 6d | 2025-12-08 | 2025-12-13 | C_MB_F_M_P12_1060 | 122d | 0d | Crane 14 [48 h]; Barge-1 [48 h] |
| C_MB_F_M_P12_1080 |  | Concreting of Curb - P12 | 2d | 2025-12-15 | 2025-12-16 | C_MB_F_M_P12_1070 | 122d | 0d |  |

| ID | WBS | Activity | Duration | Start | Finish | Predecessors | Total float | Free float | Resources |
| --- | --- | --- | --- | --- | --- | --- | --- | --- | --- |
|  | 3 | **Well Steining** |  | 2025-12-17 | 2026-05-04 |  |  |  |  |
| C_MB_F_M_P12_1090 |  | Steining Inner Shutters - P12 | 40d | 2025-12-17 | 2026-01-31 | C_MB_F_M_P12_1080 | 122d | 0d | Crane 14 [320 h]; Barge-1 [320 h] |
| C_MB_F_M_P12_1100 |  | Steining Reinforcement Tying - P12 | 44d | 2026-02-02 | 2026-03-24 | C_MB_F_M_P12_1090 | 122d | 0d |  |
| C_MB_F_M_P12_1110 |  | Steining Outer Shutter and Concreting - P12 | 15d | 2026-03-25 | 2026-04-10 | C_MB_F_M_P12_1100 | 122d | 0d | Crane 14 [120 h]; Barge-1 [120 h] |
| C_MB_F_M_P12_1120 |  | Sump Making and Bottom Plugging - P12 | 20d | 2026-04-11 | 2026-05-04 | C_MB_F_M_P12_1110 | 122d | 0d |  |
|  | 4 | **Well Cap** |  | 2026-05-05 | 2026-05-19 |  |  |  |  |
| C_MB_F_M_P12_1130 |  | Well Cap Reinforcement - P12 | 6d | 2026-05-05 | 2026-05-11 | C_MB_F_M_P12_1120 | 122d | 0d |  |
| C_MB_F_M_P12_1140 |  | Well Cap Shuttering - P12 | 5d | 2026-05-12 | 2026-05-16 | C_MB_F_M_P12_1130 | 122d | 0d | Crane 14 [40 h]; Barge-1 [40 h] |
| C_MB_F_M_P12_1150 |  | Well Cap Concreting - P12 | 2d | 2026-05-18 | 2026-05-19 | C_MB_F_M_P12_1140 | 122d | 0d |  |
|  | 6 | **P13** |  | 2025-11-07 | 2026-11-25 |  |  |  |  |
|  | 2 | **Curb and Cutting Edge** |  | 2025-11-07 | 2026-02-07 |  |  |  |  |
| C_MB_F_M_P13_1030 |  | Sheet Pile Driving-P13 | 30d | 2025-11-07 | 2025-12-11 | C_MB_F_L_P9_1110, C_SE_1005 | 13d | 0d | Crane 16 [240 h]; Barge-3 [240 h] |
| C_MB_F_M_P13_1040 |  | Placement of cutting edge and alignment - P13 | 7d | 2025-12-12 | 2025-12-19 | D_MB_F_1110 FS+135d, ROW_1010, C_MB_F_M_P13_1030 | 13d | 0d |  |
| C_MB_F_M_P13_1050 |  | Placement of curb inner shutters - P13 | 5d | 2025-12-20 | 2025-12-25 | C_MB_F_M_P13_1040 | 13d | 0d | Crane 16 [40 h]; Barge-3 [40 h] |
| C_MB_F_M_P13_1060 |  | Reinforcement tying for curb - P13 | 20d | 2025-12-26 | 2026-01-17 | C_MB_F_M_P13_1050 | 13d | 0d |  |
| C_MB_F_M_P13_1070 |  | Curb outer shutters - P13 | 16d | 2026-01-19 | 2026-02-05 | C_MB_F_M_P13_1060 | 13d | 0d | Crane 16 [128 h]; Barge-3 [128 h] |
| C_MB_F_M_P13_1080 |  | Concreting of Curb - P13 | 2d | 2026-02-06 | 2026-02-07 | C_MB_F_M_P13_1070 | 13d | 0d |  |
|  | 3 | **Well Steining** |  | 2026-02-09 | 2026-10-20 |  |  |  |  |
| C_MB_F_M_P13_1090 |  | Steining Inner Shutters - P13 | 40d | 2026-02-09 | 2026-03-26 | C_MB_F_M_P13_1080 | 13d | 0d | Crane 16 [320 h]; Barge-3 [320 h] |
| C_MB_F_M_P13_1100 |  | Steining Reinforcement Tying - P13 | 44d | 2026-03-27 | 2026-05-16 | C_MB_F_M_P13_1090 | 13d | 0d |  |
| C_MB_F_M_P13_1110 |  | Steining Outer Shutter and Concreting - P13 | 15d | 2026-05-18 | 2026-06-03 | C_MB_F_M_P13_1100 | 13d | 0d | Crane 16 [120 h]; Barge-3 [120 h] |
| C_MB_F_M_P13_1120 |  | Sump Making and Bottom Plugging - P13 | 20d | 2026-06-04 | 2026-10-20 | C_MB_F_M_P13_1110 | 13d | 0d |  |
|  | 4 | **Well Cap** |  | 2026-10-21 | 2026-11-25 |  |  |  |  |
| C_MB_F_M_P13_1130 |  | Well Cap Reinforcement - P13 | 13d | 2026-10-21 | 2026-11-04 | C_MB_F_M_P13_1120 | 13d | 0d |  |
| C_MB_F_M_P13_1140 |  | Well Cap Shuttering - P13 | 15d | 2026-11-05 | 2026-11-21 | C_MB_F_M_P13_1130 | 13d | 0d | Crane 16 [120 h]; Barge-3 [120 h] |
| C_MB_F_M_P13_1150 |  | Well Cap Concreting - P13 | 3d | 2026-11-23 | 2026-11-25 | C_MB_F_M_P13_1140 | 13d | 0d |  |

| ID | WBS | Activity | Duration | Start | Finish | Predecessors | Total float | Free float | Resources |
| --- | --- | --- | --- | --- | --- | --- | --- | --- | --- |
|  | 7 | **P14** |  | 2025-10-27 | 2026-06-06 |  |  |  |  |
|  | 2 | **Curb and Cutting Edge** |  | 2025-10-27 | 2026-01-03 |  |  |  |  |
| C_MB_F_M_P14_1030 |  | Sheet Pile Driving-P14 | 30d | 2025-10-27 | 2025-11-29 | C_MB_F_L_P18_1110, C_SE_1005 | 265d | 0d | Crane 17 [240 h]; Barge-4 [240 h] |
| C_MB_F_M_P14_1040 |  | Placement of cutting edge and alignment - P14 | 7d | 2025-12-01 | 2025-12-08 | D_MB_F_1150 FS+162d, ROW_1010, C_MB_F_M_P14_1030 | 265d | 0d |  |
| C_MB_F_M_P14_1050 |  | Placement of curb inner shutters - P14 | 5d | 2025-12-09 | 2025-12-13 | C_MB_F_M_P14_1040 | 265d | 0d | Crane 17 [40 h]; Barge-4 [40 h] |
| C_MB_F_M_P14_1060 |  | Reinforcement tying for curb - P14 | 10d | 2025-12-15 | 2025-12-25 | C_MB_F_M_P14_1050 | 265d | 0d |  |
| C_MB_F_M_P14_1070 |  | Curb outer shutters - P14 | 6d | 2025-12-26 | 2026-01-01 | C_MB_F_M_P14_1060 | 265d | 0d | Crane 17 [48 h]; Barge-4 [48 h] |
| C_MB_F_M_P14_1080 |  | Concreting of Curb - P14 | 2d | 2026-01-02 | 2026-01-03 | C_MB_F_M_P14_1070 | 265d | 0d |  |
|  | 3 | **Well Steining** |  | 2026-01-05 | 2026-05-22 |  |  |  |  |
| C_MB_F_M_P14_1090 |  | Steining Inner Shutters - P14 | 40d | 2026-01-05 | 2026-02-19 | C_MB_F_M_P14_1080 | 265d | 0d | Crane 17 [320 h]; Barge-4 [320 h] |
| C_MB_F_M_P14_1100 |  | Steining Reinforcement Tying - P14 | 44d | 2026-02-20 | 2026-04-11 | C_MB_F_M_P14_1090 | 265d | 0d |  |
| C_MB_F_M_P14_1110 |  | Steining Outer Shutter and Concreting - P14 | 15d | 2026-04-13 | 2026-04-29 | C_MB_F_M_P14_1100 | 265d | 0d | Crane 17 [120 h]; Barge-4 [120 h] |
| C_MB_F_M_P14_1120 |  | Sump Making and Bottom Plugging - P14 | 20d | 2026-04-30 | 2026-05-22 | C_MB_F_M_P14_1110 | 265d | 0d |  |
|  | 4 | **Well Cap** |  | 2026-05-23 | 2026-06-06 |  |  |  |  |
| C_MB_F_M_P14_1130 |  | Well Cap Reinforcement - P14 | 6d | 2026-05-23 | 2026-05-29 | C_MB_F_M_P14_1120 | 265d | 0d |  |
| C_MB_F_M_P14_1140 |  | Well Cap Shuttering - P14 | 5d | 2026-05-30 | 2026-06-04 | C_MB_F_M_P14_1130 | 265d | 0d | Crane 17 [40 h]; Barge-4 [40 h] |
| C_MB_F_M_P14_1150 |  | Well Cap Concreting - P14 | 2d | 2026-06-05 | 2026-06-06 | C_MB_F_M_P14_1140 | 265d | 0d |  |
|  | 8 | **P15** |  | 2025-11-21 | 2026-12-09 |  |  |  |  |
|  | 2 | **Curb and Cutting Edge** |  | 2025-11-21 | 2026-02-21 |  |  |  |  |
| C_MB_F_M_P15_1030 |  | Sheet Pile Driving-P15 | 30d | 2025-11-21 | 2025-12-25 | C_MB_F_L_P19_1110, C_SE_1005 | 1d | 0d | Crane 18 [240 h]; Barge-5 [240 h] |
| C_MB_F_M_P15_1040 |  | Placement of cutting edge and alignment - P15 | 7d | 2025-12-26 | 2026-01-02 | D_MB_F_1110 FS+135d, ROW_1010, C_MB_F_M_P15_1030 | 1d | 0d |  |
| C_MB_F_M_P15_1050 |  | Placement of curb inner shutters - P15 | 5d | 2026-01-03 | 2026-01-08 | C_MB_F_M_P15_1040 | 1d | 0d | Crane 18 [40 h]; Barge-5 [40 h] |
| C_MB_F_M_P15_1060 |  | Reinforcement tying for curb - P15 | 20d | 2026-01-09 | 2026-01-31 | C_MB_F_M_P15_1050 | 1d | 0d |  |
| C_MB_F_M_P15_1070 |  | Curb outer shutters - P15 | 16d | 2026-02-02 | 2026-02-19 | C_MB_F_M_P15_1060 | 1d | 0d | Crane 18 [128 h]; Barge-5 [128 h] |
| C_MB_F_M_P15_1080 |  | Concreting of Curb - P15 | 2d | 2026-02-20 | 2026-02-21 | C_MB_F_M_P15_1070 | 1d | 0d |  |

| ID | WBS | Activity | Duration | Start | Finish | Predecessors | Total float | Free float | Resources |
| --- | --- | --- | --- | --- | --- | --- | --- | --- | --- |
|  | 3 | **Well Steining** |  | 2026-02-23 | 2026-11-03 |  |  |  |  |
| C_MB_F_M_P15_1090 |  | Steining Inner Shutters - P15 | 40d | 2026-02-23 | 2026-04-09 | C_MB_F_M_P15_1080 | 1d | 0d | Crane 18 [320 h]; Barge-5 [320 h] |
| C_MB_F_M_P15_1100 |  | Steining Reinforcement Tying - P15 | 44d | 2026-04-10 | 2026-05-30 | C_MB_F_M_P15_1090 | 1d | 0d |  |
| C_MB_F_M_P15_1110 |  | Steining Outer Shutter and Concreting - P15 | 15d | 2026-06-01 | 2026-10-10 | C_MB_F_M_P15_1100 | 1d | 0d | Crane 18 [120 h]; Barge-5 [120 h] |
| C_MB_F_M_P15_1120 |  | Sump Making and Bottom Plugging - P15 | 20d | 2026-10-12 | 2026-11-03 | C_MB_F_M_P15_1110 | 1d | 0d |  |
|  | 4 | **Well Cap** |  | 2026-11-04 | 2026-12-09 |  |  |  |  |
| C_MB_F_M_P15_1130 |  | Well Cap Reinforcement - P15 | 13d | 2026-11-04 | 2026-11-18 | C_MB_F_M_P15_1120 | 1d | 0d |  |
| C_MB_F_M_P15_1140 |  | Well Cap Shuttering - P15 | 15d | 2026-11-19 | 2026-12-05 | C_MB_F_M_P15_1130 | 1d | 0d | Crane 18 [120 h]; Barge-5 [120 h] |
| C_MB_F_M_P15_1150 |  | Well Cap Concreting - P15 | 3d | 2026-12-07 | 2026-12-09 | C_MB_F_M_P15_1140 | 1d | 0d |  |
|  | 9 | **P16** |  | 2025-10-27 | 2026-06-06 |  |  |  |  |
|  | 2 | **Curb and Cutting Edge** |  | 2025-10-27 | 2026-01-03 |  |  |  |  |
| C_MB_F_M_P16_1030 |  | Sheet Pile Driving-P16 | 30d | 2025-10-27 | 2025-11-29 | C_MB_F_L_P20_1110, C_SE_1005 | 106d | 0d | Crane 17 [240 h]; Barge-4 [240 h] |
| C_MB_F_M_P16_1040 |  | Placement of cutting edge and alignment - P16 | 7d | 2025-12-01 | 2025-12-08 | D_MB_F_1150 FS+168d, ROW_1010, C_MB_F_M_P16_1030 | 106d | 0d |  |
| C_MB_F_M_P16_1050 |  | Placement of curb inner shutters - P16 | 5d | 2025-12-09 | 2025-12-13 | C_MB_F_M_P16_1040 | 106d | 0d | Crane 17 [40 h]; Barge-4 [40 h] |
| C_MB_F_M_P16_1060 |  | Reinforcement tying for curb - P16 | 10d | 2025-12-15 | 2025-12-25 | C_MB_F_M_P16_1050 | 106d | 0d |  |
| C_MB_F_M_P16_1070 |  | Curb outer shutters - P16 | 6d | 2025-12-26 | 2026-01-01 | C_MB_F_M_P16_1060 | 106d | 0d | Crane 17 [48 h]; Barge-4 [48 h] |
| C_MB_F_M_P16_1080 |  | Concreting of Curb - P16 | 2d | 2026-01-02 | 2026-01-03 | C_MB_F_M_P16_1070 | 106d | 0d |  |
|  | 3 | **Well Steining** |  | 2026-01-05 | 2026-05-22 |  |  |  |  |
| C_MB_F_M_P16_1090 |  | Steining Inner Shutters - P16 | 40d | 2026-01-05 | 2026-02-19 | C_MB_F_M_P16_1080 | 106d | 0d | Crane 17 [320 h]; Barge-4 [320 h] |
| C_MB_F_M_P16_1100 |  | Steining Reinforcement Tying - P16 | 44d | 2026-02-20 | 2026-04-11 | C_MB_F_M_P16_1090 | 106d | 0d |  |
| C_MB_F_M_P16_1110 |  | Steining Outer Shutter and Concreting - P16 | 15d | 2026-04-13 | 2026-04-29 | C_MB_F_M_P16_1100 | 106d | 0d | Crane 17 [120 h]; Barge-4 [120 h] |
| C_MB_F_M_P16_1120 |  | Sump Making and Bottom Plugging - P16 | 20d | 2026-04-30 | 2026-05-22 | C_MB_F_M_P16_1110 | 106d | 0d |  |
|  | 4 | **Well Cap** |  | 2026-05-23 | 2026-06-06 |  |  |  |  |
| C_MB_F_M_P16_1130 |  | Well Cap Reinforcement - P16 | 6d | 2026-05-23 | 2026-05-29 | C_MB_F_M_P16_1120 | 106d | 0d |  |
| C_MB_F_M_P16_1140 |  | Well Cap Shuttering - P16 | 5d | 2026-05-30 | 2026-06-04 | C_MB_F_M_P16_1130 | 106d | 0d | Crane 17 [40 h]; Barge-4 [40 h] |
| C_MB_F_M_P16_1150 |  | Well Cap Concreting - P16 | 2d | 2026-06-05 | 2026-06-06 | C_MB_F_M_P16_1140 | 106d | 0d |  |

| ID | WBS | Activity | Duration | Start | Finish | Predecessors | Total float | Free float | Resources |
| --- | --- | --- | --- | --- | --- | --- | --- | --- | --- |
|  | 10 | **P17** |  | 2025-11-24 | 2026-12-11 |  |  |  |  |
|  | 2 | **Curb and Cutting Edge** |  | 2025-11-24 | 2026-02-24 |  |  |  |  |
| C_MB_F_M_P17_1030 |  | Sheet Pile Driving-P17 | 30d | 2025-11-24 | 2025-12-27 | C_MB_F_L_P21_1110, C_SE_1000 | 0d |  | Crane 19 [240 h]; Barge-6 [240 h] |
| C_MB_F_M_P17_1040 |  | Placement of cutting edge and alignment - P17 | 7d | 2025-12-29 | 2026-01-05 | D_PP_1030, D_GAD_MB_1030, D_DBR_MB_1030, D_MB_F_1110 FS+130d, ROW_1010, C_MB_F_M_P17_1030 | 0d |  |  |
| C_MB_F_M_P17_1050 |  | Placement of curb inner shutters - P17 | 5d | 2026-01-06 | 2026-01-10 | C_MB_F_M_P17_1040 | 0d |  | Crane 19 [40 h]; Barge-6 [40 h] |
| C_MB_F_M_P17_1060 |  | Reinforcement tying for curb - P17 | 20d | 2026-01-12 | 2026-02-03 | C_MB_F_M_P17_1050 | 0d |  |  |
| C_MB_F_M_P17_1070 |  | Curb outer shutters - P17 | 16d | 2026-02-04 | 2026-02-21 | C_MB_F_M_P17_1060 | 0d |  | Crane 19 [128 h]; Barge-6 [128 h] |
| C_MB_F_M_P17_1080 |  | Concreting of Curb - P17 | 2d | 2026-02-23 | 2026-02-24 | C_MB_F_M_P17_1070 | 0d |  |  |
|  | 3 | **Well Steining** |  | 2026-02-25 | 2026-11-05 |  |  |  |  |
| C_MB_F_M_P17_1090 |  | Steining Inner Shutters - P17 | 40d | 2026-02-25 | 2026-04-11 | C_MB_F_M_P17_1080 | 0d |  | Crane 19 [320 h]; Barge-6 [320 h] |
| C_MB_F_M_P17_1100 |  | Steining Reinforcement Tying - P17 | 44d | 2026-04-13 | 2026-06-02 | C_MB_F_M_P17_1090 | 0d |  |  |
| C_MB_F_M_P17_1110 |  | Steining Outer Shutter and Concreting - P17 | 15d | 2026-06-03 | 2026-10-13 | C_MB_F_M_P17_1100 | 0d |  | Crane 19 [120 h]; Barge-6 [120 h] |
| C_MB_F_M_P17_1120 |  | Sump Making and Bottom Plugging - P17 | 20d | 2026-10-14 | 2026-11-05 | C_MB_F_M_P17_1110 | 0d |  |  |
|  | 4 | **Well Cap** |  | 2026-11-06 | 2026-12-11 |  |  |  |  |
| C_MB_F_M_P17_1130 |  | Well Cap Reinforcement - P17 | 13d | 2026-11-06 | 2026-11-20 | C_MB_F_M_P17_1120 | 0d |  |  |
| C_MB_F_M_P17_1140 |  | Well Cap Shuttering - P17 | 15d | 2026-11-21 | 2026-12-08 | C_MB_F_M_P17_1130 | 0d |  | Crane 19 [120 h]; Barge-6 [120 h] |
| C_MB_F_M_P17_1150 |  | Well Cap Concreting - P17 | 3d | 2026-12-09 | 2026-12-11 | C_MB_F_M_P17_1140 | 0d |  |  |
|  | 3 | **Sub Structure** |  | 2025-10-08 | 2027-04-28 |  |  |  |  |
|  | 1 | **Land** |  | 2025-10-08 | 2026-10-12 |  |  |  |  |
|  | 1 | **P6** |  | 2025-10-08 | 2026-03-23 |  |  |  |  |
|  | 1 | **Lower Pylon** |  | 2025-10-08 | 2025-12-10 |  |  |  |  |
| C_MB_Sus_L_P6_1000 |  | Lower Pylon Reinforcement Tying - P6 | 25d | 2025-10-08 | 2025-11-05 | C_MB_F_L_P6_1110, D_MB_SuS_1150 | 349d | 0d |  |
| C_MB_Sus_L_P6_1010 |  | Lower Pylon Shuttering - P6 | 25d | 2025-11-06 | 2025-12-04 | C_MB_Sus_L_P6_1000 | 349d | 0d | Crane 1 [200 h] |
| C_MB_Sus_L_P6_1020 |  | Lower Pylon Concreting - P6 | 5d | 2025-12-05 | 2025-12-10 | C_MB_Sus_L_P6_1010 | 349d | 0d |  |

| ID | WBS | Activity | Duration | Start | Finish | Predecessors | Total float | Free float | Resources |
| --- | --- | --- | --- | --- | --- | --- | --- | --- | --- |
|  | 2 | **Pier Table** |  | 2025-12-11 | 2026-03-23 |  |  |  |  |
| C_MB_SuS_L_P6_1030 |  | Scaffold & Bottom Soffit for Pier Table - P6 | 40d | 2025-12-11 | 2026-01-26 | C_MB_Sus_L_P6_1020 | 349d | 0d | Crane 1 [320 h] |
| C_MB_SuS_L_P6_1040 |  | Pier Table Reinforcement Tying - P6 | 30d | 2026-01-27 | 2026-03-02 | C_MB_SuS_L_P6_1030 | 349d | 0d |  |
| C_MB_SuS_L_P6_1050 |  | Pier Table Side Shuttering - P6 | 15d | 2026-03-03 | 2026-03-19 | C_MB_SuS_L_P6_1040 | 349d | 0d | Crane 1 [120 h] |
| C_MB_SuS_L_P6_1060 |  | Pier Table Concreting - P6 | 3d | 2026-03-20 | 2026-03-23 | C_MB_SuS_L_P6_1050 | 349d | 183d |  |
|  | 3 | **P7** |  | 2025-11-15 | 2026-10-03 |  |  |  |  |
|  | 1 | **Lower Pylon** |  | 2025-11-15 | 2026-02-27 |  |  |  |  |
| C_MB_SuS_L_P7_1000 |  | Lower Pylon 1 Reinforcement Tying - P7 | 20d | 2025-11-15 | 2025-12-08 | C_MB_F_L_P7_1110, D_MB_SuS_1110 | 166d | 0d |  |
| C_MB_SuS_L_P7_1010 |  | Lower Pylon 1 Shuttering - P7 | 20d | 2025-12-09 | 2025-12-31 | C_MB_SuS_L_P7_1000 | 166d | 0d | Crane 2 [160 h] |
| C_MB_SuS_L_P7_1020 |  | Lower Pylon 1 Concreting - P7 | 5d | 2026-01-01 | 2026-01-06 | C_MB_SuS_L_P7_1010 | 166d | 0d |  |
| C_MB_SuS_L_P7_1070 |  | Lower Pylon 2 Reinforcement Tying - P7 | 20d | 2026-01-07 | 2026-01-29 | C_MB_SuS_L_P7_1020 | 166d | 0d |  |
| C_MB_SuS_L_P7_1080 |  | Lower Pylon 2 Shuttering - P7 | 20d | 2026-01-30 | 2026-02-21 | C_MB_SuS_L_P7_1070 | 166d | 0d | Crane 2 [160 h] |
| C_MB_SuS_L_P7_1090 |  | Lower Pylon 2 Concreting - P7 | 5d | 2026-02-23 | 2026-02-27 | C_MB_SuS_L_P7_1080 | 166d | 0d |  |
|  | 2 | **Pier Table** |  | 2026-02-28 | 2026-10-03 |  |  |  |  |
| C_MB_SuS_L_P7_1030 |  | Scaffold & Bottom Soffit for Pier Table - P7 | 40d | 2026-02-28 | 2026-04-15 | C_MB_SuS_L_P7_1090 | 166d | 0d | Crane 2 [320 h] |
| C_MB_SuS_L_P7_1040 |  | Pier Table Reinforcement Tying - P7 | 30d | 2026-04-16 | 2026-05-20 | C_MB_SuS_L_P7_1030 | 166d | 0d |  |
| C_MB_SuS_L_P7_1050 |  | Pier Table Side Shuttering - P7 | 15d | 2026-05-21 | 2026-06-06 | C_MB_SuS_L_P7_1040 | 166d | 0d | Crane 2 [120 h] |
| C_MB_SuS_L_P7_1060 |  | Pier Table Concreting - P7 | 3d | 2026-10-01 | 2026-10-03 | C_MB_SuS_L_P7_1050 | 166d | 0d |  |
|  | 2 | **P8** |  | 2025-10-08 | 2026-04-03 |  |  |  |  |
|  | 1 | **Lower Pylon** |  | 2025-10-08 | 2025-12-10 |  |  |  |  |
| C_MB_SuS_L_P8_1000 |  | Lower Pylon Reinforcement Tying - P8 | 25d | 2025-10-08 | 2025-11-05 | C_MB_F_L_P8_1110, D_MB_SuS_1150 | 294d | 0d |  |
| C_MB_SuS_L_P8_1010 |  | Lower Pylon Shuttering - P8 | 25d | 2025-11-06 | 2025-12-04 | C_MB_SuS_L_P8_1000 | 294d | 0d | Crane 1 [200 h] |
| C_MB_SuS_L_P8_1020 |  | Lower Pylon Concreting - P8 | 5d | 2025-12-05 | 2025-12-10 | C_MB_SuS_L_P8_1010 | 294d | 0d |  |
|  | 2 | **Pier Table** |  | 2025-12-23 | 2026-04-03 |  |  |  |  |
| C_MB_SuS_L_P8_1030 |  | Scaffold & Bottom Soffit for Pier Table - P8 | 40d | 2025-12-23 | 2026-02-06 | C_MB_SuS_L_P8_1020 FS+10d | 294d | 0d | Crane 1 [320 h] |
| C_MB_SuS_L_P8_1040 |  | Pier Table Reinforcement Tying - P8 | 30d | 2026-02-07 | 2026-03-13 | C_MB_SuS_L_P8_1030 | 294d | 0d |  |
| C_MB_SuS_L_P8_1050 |  | Pier Table Side Shuttering - P8 | 15d | 2026-03-14 | 2026-03-31 | C_MB_SuS_L_P8_1040 | 294d | 0d | Crane 1 [120 h] |
| C_MB_SuS_L_P8_1060 |  | Pier Table Concreting - P8 | 3d | 2026-04-01 | 2026-04-03 | C_MB_SuS_L_P8_1050 | 294d | 0d |  |

| ID | WBS | Activity | Duration | Start | Finish | Predecessors | Total float | Free float | Resources |
| --- | --- | --- | --- | --- | --- | --- | --- | --- | --- |
|  | 14 | **P9** |  | 2025-11-07 | 2026-10-07 |  |  |  |  |
|  | 1 | **Lower Pylon** |  | 2025-11-07 | 2026-02-19 |  |  |  |  |
| C_MB_SuS_L_P9_1000 |  | Lower Pylon 1 Reinforcement Tying - P9 | 20d | 2025-11-07 | 2025-11-29 | C_MB_F_L_P9_1110, D_MB_SuS_1110 | 162.5d | 0d |  |
| C_MB_SuS_L_P9_1010 |  | Lower Pylon 1 Shuttering - P9 | 20d | 2025-12-01 | 2025-12-23 | C_MB_SuS_L_P9_1000 | 162.5d | 0d | Crane 3 [160 h] |
| C_MB_SuS_L_P9_1020 |  | Lower Pylon 1 Concreting - P9 | 5d | 2025-12-24 | 2025-12-29 | C_MB_SuS_L_P9_1010 | 162.5d | 0d |  |
| C_MB_SuS_L_P9_1070 |  | Lower Pylon 2 Reinforcement Tying - P9 | 20d | 2025-12-30 | 2026-01-21 | C_MB_SuS_L_P9_1020 | 162.5d | 0d |  |
| C_MB_SuS_L_P9_1080 |  | Lower Pylon 2 Shuttering - P9 | 20d | 2026-01-22 | 2026-02-13 | C_MB_SuS_L_P9_1070 | 162.5d | 0d | Crane 3 [160 h] |
| C_MB_SuS_L_P9_1090 |  | Lower Pylon 2 Concreting - P9 | 5d | 2026-02-14 | 2026-02-19 | C_MB_SuS_L_P9_1080 | 162.5d | 0d |  |
|  | 2 | **Pier Table** |  | 2026-03-04 | 2026-10-07 |  |  |  |  |
| C_MB_SuS_L_P9_1030 |  | Scaffold & Bottom Soffit for Pier Table - P9 | 40d | 2026-03-04 | 2026-04-18 | C_MB_SuS_L_P9_1090 FS+10d | 162.5d | 0d | Crane 3 [320 h] |
| C_MB_SuS_L_P9_1040 |  | Pier Table Reinforcement Tying - P9 | 30d | 2026-04-20 | 2026-05-23 | C_MB_SuS_L_P9_1030 | 162.5d | 0d |  |
| C_MB_SuS_L_P9_1050 |  | Pier Table Side Shuttering - P9 | 15d | 2026-05-25 | 2026-10-03 | C_MB_SuS_L_P9_1040 | 162.5d | 0d | Crane 3 [120 h] |
| C_MB_SuS_L_P9_1060 |  | Pier Table Concreting - P9 | 3d | 2026-10-05 | 2026-10-07 | C_MB_SuS_L_P9_1050 | 162.5d | 0d |  |
|  | 15 | **P18** |  | 2025-10-27 | 2026-04-10 |  |  |  |  |
|  | 1 | **Lower Pylon** |  | 2025-10-27 | 2025-12-29 |  |  |  |  |
| C_MB_SuS_L_P18_1000 |  | Lower Pylon Reinforcement Tying - P18 | 25d | 2025-10-27 | 2025-11-24 | C_MB_F_L_P18_1110, D_MB_SuS_1150, D_MB_SuS_1150 FF | 447d | 0d |  |
| C_MB_SuS_L_P18_1010 |  | Lower Pylon Shuttering - P18 | 25d | 2025-11-25 | 2025-12-23 | C_MB_SuS_L_P18_1000 | 447d | 0d | Crane 4 [200 h] |
| C_MB_SuS_L_P18_1020 |  | Lower Pylon Concreting - P18 | 5d | 2025-12-24 | 2025-12-29 | C_MB_SuS_L_P18_1010 | 447d | 0d |  |
|  | 2 | **Pier Table** |  | 2025-12-30 | 2026-04-10 |  |  |  |  |
| C_MB_SuS_L_P18_1030 |  | Scaffold & Bottom Soffit for Pier Table - P18 | 40d | 2025-12-30 | 2026-02-13 | C_MB_SuS_L_P18_1020 | 447d | 0d | Crane 4 [320 h] |
| C_MB_SuS_L_P18_1040 |  | Pier Table Reinforcement Tying - P18 | 30d | 2026-02-14 | 2026-03-20 | C_MB_SuS_L_P18_1030 | 447d | 0d |  |
| C_MB_SuS_L_P18_1050 |  | Pier Table Side Shuttering - P18 | 15d | 2026-03-21 | 2026-04-07 | C_MB_SuS_L_P18_1040 | 447d | 0d | Crane 4 [120 h] |
| C_MB_SuS_L_P18_1060 |  | Pier Table Concreting - P18 | 3d | 2026-04-08 | 2026-04-10 | C_MB_SuS_L_P18_1050 | 447d | 438d |  |
|  | 16 | **P19** |  | 2025-11-21 | 2026-10-09 |  |  |  |  |
|  | 1 | **Lower Pylon** |  | 2025-11-21 | 2026-03-05 |  |  |  |  |
| C_MB_SuS_L_P19_1000 |  | Lower Pylon 1 Reinforcement Tying - P19 | 20d | 2025-11-21 | 2025-12-13 | C_MB_F_L_P19_1110, D_MB_SuS_1110 | 161d | 0d |  |
| C_MB_SuS_L_P19_1010 |  | Lower Pylon 1 Shuttering - P19 | 20d | 2025-12-15 | 2026-01-06 | C_MB_SuS_L_P19_1000 | 161d | 0d | Crane 5 [160 h] |
| C_MB_SuS_L_P19_1020 |  | Lower Pylon 1 Concreting - P19 | 5d | 2026-01-07 | 2026-01-12 | C_MB_SuS_L_P19_1010 | 161d | 0d |  |
| C_MB_SuS_L_P19_1070 |  | Lower Pylon 2 Reinforcement Tying - P19 | 20d | 2026-01-13 | 2026-02-04 | C_MB_SuS_L_P19_1020 | 161d | 0d |  |
| C_MB_SuS_L_P19_1080 |  | Lower Pylon 2 Shuttering - P19 | 20d | 2026-02-05 | 2026-02-27 | C_MB_SuS_L_P19_1070 | 161d | 0d | Crane 5 [160 h] |
| C_MB_SuS_L_P19_1090 |  | Lower Pylon 2 Concreting - P19 | 5d | 2026-02-28 | 2026-03-05 | C_MB_SuS_L_P19_1080 | 161d | 0d |  |

| ID | WBS | Activity | Duration | Start | Finish | Predecessors | Total float | Free float | Resources |
| --- | --- | --- | --- | --- | --- | --- | --- | --- | --- |
|  | 2 | **Pier Table** |  | 2026-03-06 | 2026-10-09 |  |  |  |  |
| C_MB_SuS_L_P19_1030 |  | Scaffold & Bottom Soffit for Pier Table - P19 | 40d | 2026-03-06 | 2026-04-21 | C_MB_SuS_L_P19_1090 | 161d | 0d | Crane 5 [320 h] |
| C_MB_SuS_L_P19_1040 |  | Pier Table Reinforcement Tying - P19 | 30d | 2026-04-22 | 2026-05-26 | C_MB_SuS_L_P19_1030 | 161d | 0d |  |
| C_MB_SuS_L_P19_1050 |  | Pier Table Side Shuttering - P19 | 15d | 2026-05-27 | 2026-10-06 | C_MB_SuS_L_P19_1040 | 161d | 0d | Crane 5 [120 h] |
| C_MB_SuS_L_P19_1060 |  | Pier Table Concreting - P19 | 3d | 2026-10-07 | 2026-10-09 | C_MB_SuS_L_P19_1050 | 161d | 0d |  |
|  | 17 | **P20** |  | 2025-10-27 | 2026-03-30 |  |  |  |  |
|  | 1 | **Lower Pylon** |  | 2025-10-27 | 2025-12-17 |  |  |  |  |
| C_MB_SuS_L_P20_1000 |  | Lower Pylon Reinforcement Tying - P20 | 20d | 2025-10-27 | 2025-11-18 | C_MB_F_L_P20_1110, D_MB_SuS_1150 | 298d | 0d |  |
| C_MB_SuS_L_P20_1010 |  | Lower Pylon Shuttering - P20 | 20d | 2025-11-19 | 2025-12-11 | C_MB_SuS_L_P20_1000 | 298d | 0d | Crane 4 [160 h] |
| C_MB_SuS_L_P20_1020 |  | Lower Pylon Concreting - P20 | 5d | 2025-12-12 | 2025-12-17 | C_MB_SuS_L_P20_1010 | 298d | 0d |  |
|  | 2 | **Pier Table** |  | 2025-12-18 | 2026-03-30 |  |  |  |  |
| C_MB_SuS_L_P20_1030 |  | Scaffold & Bottom Soffit for Pier Table - P20 | 40d | 2025-12-18 | 2026-02-02 | C_MB_SuS_L_P20_1020 | 298d | 0d | Crane 4 [320 h] |
| C_MB_SuS_L_P20_1040 |  | Pier Table Reinforcement Tying - P20 | 30d | 2026-02-03 | 2026-03-09 | C_MB_SuS_L_P20_1030 | 298d | 0d |  |
| C_MB_SuS_L_P20_1050 |  | Pier Table Side Shuttering - P20 | 15d | 2026-03-10 | 2026-03-26 | C_MB_SuS_L_P20_1040 | 298d | 0d | Crane 4 [120 h] |
| C_MB_SuS_L_P20_1060 |  | Pier Table Concreting - P20 | 3d | 2026-03-27 | 2026-03-30 | C_MB_SuS_L_P20_1050 | 298d | 0d |  |
|  | 4 | **P21** |  | 2025-11-24 | 2026-10-12 |  |  |  |  |
|  | 1 | **Lower Pylon** |  | 2025-11-24 | 2026-03-07 |  |  |  |  |
| C_MB_SuS_L_P21_1000 |  | Lower Pylon 1 Reinforcement Tying - P21 | 20d | 2025-11-24 | 2025-12-16 | C_MB_F_L_P21_1110, D_MB_SuS_1110 | 159.5d | 0d |  |
| C_MB_SuS_L_P21_1010 |  | Lower Pylon 1 Shuttering - P21 | 20d | 2025-12-17 | 2026-01-08 | C_MB_SuS_L_P21_1000 | 159.5d | 0d | Crane 6 [160 h] |
| C_MB_SuS_L_P21_1020 |  | Lower Pylon 1 Concreting - P21 | 5d | 2026-01-09 | 2026-01-14 | C_MB_SuS_L_P21_1010 | 159.5d | 0d |  |
| C_MB_SuS_L_P21_1070 |  | Lower Pylon 2 Reinforcement Tying - P21 | 20d | 2026-01-15 | 2026-02-06 | C_MB_SuS_L_P21_1020 | 159.5d | 0d |  |
| C_MB_SuS_L_P21_1080 |  | Lower Pylon 2 Shuttering - P21 | 20d | 2026-02-07 | 2026-03-02 | C_MB_SuS_L_P21_1070 | 159.5d | 0d | Crane 6 [160 h] |
| C_MB_SuS_L_P21_1090 |  | Lower Pylon 2 Concreting - P21 | 5d | 2026-03-03 | 2026-03-07 | C_MB_SuS_L_P21_1080 | 159.5d | 0d |  |
|  | 2 | **Pier Table** |  | 2026-03-09 | 2026-10-12 |  |  |  |  |
| C_MB_SuS_L_P21_1030 |  | Scaffold & Bottom Soffit for Pier Table - P21 | 40d | 2026-03-09 | 2026-04-23 | C_MB_SuS_L_P21_1090 | 159.5d | 0d | Crane 6 [320 h] |
| C_MB_SuS_L_P21_1040 |  | Pier Table Reinforcement Tying - P21 | 30d | 2026-04-24 | 2026-05-28 | C_MB_SuS_L_P21_1030 | 159.5d | 0d |  |
| C_MB_SuS_L_P21_1050 |  | Pier Table Side Shuttering - P21 | 15d | 2026-05-29 | 2026-10-08 | C_MB_SuS_L_P21_1040 | 159.5d | 0d | Crane 6 [120 h] |
| C_MB_SuS_L_P21_1060 |  | Pier Table Concreting - P21 | 3d | 2026-10-09 | 2026-10-12 | C_MB_SuS_L_P21_1050 | 159.5d | 0d |  |

| ID | WBS | Activity | Duration | Start | Finish | Predecessors | Total float | Free float | Resources |
| --- | --- | --- | --- | --- | --- | --- | --- | --- | --- |
|  | 5 | **P22** |  | 2025-10-16 | 2026-03-19 |  |  |  |  |
|  | 1 | **Lower Pylon** |  | 2025-10-16 | 2025-12-06 |  |  |  |  |
| C_MB_SuS_L_P22_1000 |  | Lower Pylon Reinforcement Tying - P22 | 20d | 2025-10-16 | 2025-11-07 | C_MB_F_L_P22_1110, D_MB_SuS_1150 | 352d | 0d |  |
| C_MB_SuS_L_P22_1010 |  | Lower Pylon Shuttering - P22 | 20d | 2025-11-08 | 2025-12-01 | C_MB_SuS_L_P22_1000 | 352d | 0d | Crane 7 [160 h] |
| C_MB_SuS_L_P22_1020 |  | Lower Pylon Concreting - P22 | 5d | 2025-12-02 | 2025-12-06 | C_MB_SuS_L_P22_1010 | 352d | 0d |  |
|  | 2 | **Pier Table** |  | 2025-12-08 | 2026-03-19 |  |  |  |  |
| C_MB_SuS_L_P22_1030 |  | Scaffold & Bottom Soffit for Pier Table - P22 | 40d | 2025-12-08 | 2026-01-22 | C_MB_SuS_L_P22_1020 | 352d | 0d | Crane 7 [320 h] |
| C_MB_SuS_L_P22_1040 |  | Pier Table Reinforcement Tying - P22 | 30d | 2026-01-23 | 2026-02-26 | C_MB_SuS_L_P22_1030 | 352d | 0d |  |
| C_MB_SuS_L_P22_1050 |  | Pier Table Side Shuttering - P22 | 15d | 2026-02-27 | 2026-03-16 | C_MB_SuS_L_P22_1040 | 352d | 0d | Crane 7 [120 h] |
| C_MB_SuS_L_P22_1060 |  | Pier Table Concreting - P22 | 3d | 2026-03-17 | 2026-03-19 | C_MB_SuS_L_P22_1050 | 352d | 183d |  |
|  | 6 | **P23** |  | 2025-11-24 | 2026-10-12 |  |  |  |  |
|  | 1 | **Lower Pylon** |  | 2025-11-24 | 2026-03-07 |  |  |  |  |
| C_MB_SuS_L_P23_1000 |  | Lower Pylon 1 Reinforcement Tying - P23 | 20d | 2025-11-24 | 2025-12-16 | C_MB_F_L_P23_1110, D_MB_SuS_1110 | 169d | 0d |  |
| C_MB_SuS_L_P23_1010 |  | Lower Pylon 1 Shuttering - P23 | 20d | 2025-12-17 | 2026-01-08 | C_MB_SuS_L_P23_1000 | 169d | 0d | Crane 8 [160 h] |
| C_MB_SuS_L_P23_1020 |  | Lower Pylon 1 Concreting - P23 | 5d | 2026-01-09 | 2026-01-14 | C_MB_SuS_L_P23_1010 | 169d | 0d |  |
| C_MB_SuS_L_P23_1070 |  | Lower Pylon 2 Reinforcement Tying - P23 | 20d | 2026-01-15 | 2026-02-06 | C_MB_SuS_L_P23_1020 | 169d | 0d |  |
| C_MB_SuS_L_P23_1080 |  | Lower Pylon 2 Shuttering - P23 | 20d | 2026-02-07 | 2026-03-02 | C_MB_SuS_L_P23_1070 | 169d | 0d | Crane 8 [160 h] |
| C_MB_SuS_L_P23_1090 |  | Lower Pylon 2 Concreting - P23 | 5d | 2026-03-03 | 2026-03-07 | C_MB_SuS_L_P23_1080 | 169d | 0d |  |
|  | 2 | **Pier Table** |  | 2026-03-09 | 2026-10-12 |  |  |  |  |
| C_MB_SuS_L_P23_1030 |  | Scaffold & Bottom Soffit for Pier Table - P23 | 40d | 2026-03-09 | 2026-04-23 | C_MB_SuS_L_P23_1090 | 169d | 0d | Crane 8 [320 h] |
| C_MB_SuS_L_P23_1040 |  | Pier Table Reinforcement Tying - P23 | 30d | 2026-04-24 | 2026-05-28 | C_MB_SuS_L_P23_1030 | 169d | 0d |  |
| C_MB_SuS_L_P23_1050 |  | Pier Table Side Shuttering - P23 | 15d | 2026-05-29 | 2026-10-08 | C_MB_SuS_L_P23_1040 | 169d | 0d | Crane 8 [120 h] |
| C_MB_SuS_L_P23_1060 |  | Pier Table Concreting - P23 | 3d | 2026-10-09 | 2026-10-12 | C_MB_SuS_L_P23_1050 | 169d | 0d |  |
|  | 7 | **P24** |  | 2025-10-16 | 2026-03-19 |  |  |  |  |
|  | 1 | **Lower Pylon** |  | 2025-10-16 | 2025-12-06 |  |  |  |  |
| C_MB_SuS_L_P24_1000 |  | Lower Pylon Reinforcement Tying - P24 | 20d | 2025-10-16 | 2025-11-07 | C_MB_F_L_P24_1110, D_MB_SuS_1150 | 307d | 0d |  |
| C_MB_SuS_L_P24_1010 |  | Lower Pylon Shuttering - P24 | 20d | 2025-11-08 | 2025-12-01 | C_MB_SuS_L_P24_1000 | 307d | 0d | Crane 7 [160 h] |
| C_MB_SuS_L_P24_1020 |  | Lower Pylon Concreting - P24 | 5d | 2025-12-02 | 2025-12-06 | C_MB_SuS_L_P24_1010 | 307d | 0d |  |

| ID | WBS | Activity | Duration | Start | Finish | Predecessors | Total float | Free float | Resources |
| --- | --- | --- | --- | --- | --- | --- | --- | --- | --- |
|  | 2 | **Pier Table** |  | 2025-12-08 | 2026-03-19 |  |  |  |  |
| C_MB_SuS_L_P24_1030 |  | Scaffold & Bottom Soffit for Pier Table - P24 | 40d | 2025-12-08 | 2026-01-22 | C_MB_SuS_L_P24_1020 | 307d | 0d | Crane 7 [320 h] |
| C_MB_SuS_L_P24_1040 |  | Pier Table Reinforcement Tying - P24 | 30d | 2026-01-23 | 2026-02-26 | C_MB_SuS_L_P24_1030 | 307d | 0d |  |
| C_MB_SuS_L_P24_1050 |  | Pier Table Side Shuttering - P24 | 15d | 2026-02-27 | 2026-03-16 | C_MB_SuS_L_P24_1040 | 307d | 0d | Crane 7 [120 h] |
| C_MB_SuS_L_P24_1060 |  | Pier Table Concreting - P24 | 3d | 2026-03-17 | 2026-03-19 | C_MB_SuS_L_P24_1050 | 307d | 0d |  |
|  | 8 | **P25** |  | 2025-11-24 | 2026-10-12 |  |  |  |  |
|  | 1 | **Lower Pylon** |  | 2025-11-24 | 2026-03-07 |  |  |  |  |
| C_MB_SuS_L_P25_1000 |  | Lower Pylon 1 Reinforcement Tying - P25 | 20d | 2025-11-24 | 2025-12-16 | C_MB_F_L_P25_1110, D_MB_SuS_1110 | 159d | 0d |  |
| C_MB_SuS_L_P25_1010 |  | Lower Pylon 1 Shuttering - P25 | 20d | 2025-12-17 | 2026-01-08 | C_MB_SuS_L_P25_1000 | 159d | 0d | Crane 9 [160 h] |
| C_MB_SuS_L_P25_1020 |  | Lower Pylon 1 Concreting - P25 | 5d | 2026-01-09 | 2026-01-14 | C_MB_SuS_L_P25_1010 | 159d | 0d |  |
| C_MB_SuS_L_P25_1070 |  | Lower Pylon 2 Reinforcement Tying - P25 | 20d | 2026-01-15 | 2026-02-06 | C_MB_SuS_L_P25_1020 | 159d | 0d |  |
| C_MB_SuS_L_P25_1080 |  | Lower Pylon 2 Shuttering - P25 | 20d | 2026-02-07 | 2026-03-02 | C_MB_SuS_L_P25_1070 | 159d | 0d | Crane 9 [160 h] |
| C_MB_SuS_L_P25_1090 |  | Lower Pylon 2 Concreting - P25 | 5d | 2026-03-03 | 2026-03-07 | C_MB_SuS_L_P25_1080 | 159d | 0d |  |
|  | 2 | **Pier Table** |  | 2026-03-09 | 2026-10-12 |  |  |  |  |
| C_MB_SuS_L_P25_1030 |  | Scaffold & Bottom Soffit for Pier Table - P25 | 40d | 2026-03-09 | 2026-04-23 | C_MB_SuS_L_P25_1090 | 159d | 0d | Crane 9 [320 h] |
| C_MB_SuS_L_P25_1040 |  | Pier Table Reinforcement Tying - P25 | 30d | 2026-04-24 | 2026-05-28 | C_MB_SuS_L_P25_1030 | 159d | 0d |  |
| C_MB_SuS_L_P25_1050 |  | Pier Table Side Shuttering - P25 | 15d | 2026-05-29 | 2026-10-08 | C_MB_SuS_L_P25_1040 | 159d | 0d | Crane 9 [120 h] |
| C_MB_SuS_L_P25_1060 |  | Pier Table Concreting - P25 | 3d | 2026-10-09 | 2026-10-12 | C_MB_SuS_L_P25_1050 | 159d | 0d |  |
|  | 9 | **P26** |  | 2025-10-16 | 2026-03-31 |  |  |  |  |
|  | 1 | **Lower Pylon** |  | 2025-10-16 | 2025-12-18 |  |  |  |  |
| C_MB_SuS_L_P26_1000 |  | Lower Pylon Reinforcement Tying - P26 | 25d | 2025-10-16 | 2025-11-13 | C_MB_F_L_P26_1110, D_MB_SuS_1150 | 456d | 0d |  |
| C_MB_SuS_L_P26_1010 |  | Lower Pylon Shuttering - P26 | 25d | 2025-11-14 | 2025-12-12 | C_MB_SuS_L_P26_1000 | 456d | 0d | Crane 10 [200 h] |
| C_MB_SuS_L_P26_1020 |  | Lower Pylon Concreting - P26 | 5d | 2025-12-13 | 2025-12-18 | C_MB_SuS_L_P26_1010 | 456d | 0d |  |
|  | 2 | **Pier Table** |  | 2025-12-19 | 2026-03-31 |  |  |  |  |
| C_MB_SuS_L_P26_1030 |  | Scaffold & Bottom Soffit for Pier Table - P26 | 40d | 2025-12-19 | 2026-02-03 | C_MB_SuS_L_P26_1020 | 456d | 0d | Crane 10 [320 h] |
| C_MB_SuS_L_P26_1040 |  | Pier Table Reinforcement Tying - P26 | 30d | 2026-02-04 | 2026-03-10 | C_MB_SuS_L_P26_1030 | 456d | 0d |  |
| C_MB_SuS_L_P26_1050 |  | Pier Table Shuttering - P26 | 15d | 2026-03-11 | 2026-03-27 | C_MB_SuS_L_P26_1040 | 456d | 0d | Crane 10 [120 h] |
| C_MB_SuS_L_P26_1060 |  | Pier Table Concreting - P26 | 3d | 2026-03-28 | 2026-03-31 | C_MB_SuS_L_P26_1050 | 456d | 447d |  |

| ID | WBS | Activity | Duration | Start | Finish | Predecessors | Total float | Free float | Resources |
| --- | --- | --- | --- | --- | --- | --- | --- | --- | --- |
|  | 10 | **P27** |  | 2025-11-24 | 2026-10-12 |  |  |  |  |
|  | 1 | **Lower Pylon** |  | 2025-11-24 | 2026-03-07 |  |  |  |  |
| C_MB_SuS_L_P27_1000 |  | Lower Pylon 1 Reinforcement Tying - P27 | 20d | 2025-11-24 | 2025-12-16 | C_MB_F_L_P27_1110, D_MB_SuS_1110 | 159d | 0d |  |
| C_MB_SuS_L_P27_1010 |  | Lower Pylon 1 Shuttering - P27 | 20d | 2025-12-17 | 2026-01-08 | C_MB_SuS_L_P27_1000 | 159d | 0d | Crane 11 [160 h] |
| C_MB_SuS_L_P27_1020 |  | Lower Pylon 1 Concreting - P27 | 5d | 2026-01-09 | 2026-01-14 | C_MB_SuS_L_P27_1010 | 159d | 0d |  |
| C_MB_SuS_L_P27_1070 |  | Lower Pylon 2 Reinforcement Tying - P27 | 20d | 2026-01-15 | 2026-02-06 | C_MB_SuS_L_P27_1020 | 159d | 0d |  |
| C_MB_SuS_L_P27_1080 |  | Lower Pylon 2 Shuttering - P27 | 20d | 2026-02-07 | 2026-03-02 | C_MB_SuS_L_P27_1070 | 159d | 0d | Crane 11 [160 h] |
| C_MB_SuS_L_P27_1090 |  | Lower Pylon 2 Concreting - P27 | 5d | 2026-03-03 | 2026-03-07 | C_MB_SuS_L_P27_1080 | 159d | 0d |  |
|  | 2 | **Pier Table** |  | 2026-03-09 | 2026-10-12 |  |  |  |  |
| C_MB_SuS_L_P27_1030 |  | Scaffold & Bottom Soffit for Pier Table - P27 | 40d | 2026-03-09 | 2026-04-23 | C_MB_SuS_L_P27_1090 | 159d | 0d | Crane 11 [320 h] |
| C_MB_SuS_L_P27_1040 |  | Pier Table Reinforcement Tying - P27 | 30d | 2026-04-24 | 2026-05-28 | C_MB_SuS_L_P27_1030 | 159d | 0d |  |
| C_MB_SuS_L_P27_1050 |  | Pier Table Side Shuttering - P27 | 15d | 2026-05-29 | 2026-10-08 | C_MB_SuS_L_P27_1040 | 159d | 0d | Crane 11 [120 h] |
| C_MB_SuS_L_P27_1060 |  | Pier Table Concreting - P27 | 3d | 2026-10-09 | 2026-10-12 | C_MB_SuS_L_P27_1050 | 159d | 0d |  |
|  | 11 | **P28** |  | 2025-10-16 | 2026-03-31 |  |  |  |  |
|  | 1 | **Lower Pylon** |  | 2025-10-16 | 2025-12-18 |  |  |  |  |
| C_MB_SuS_L_P28_1000 |  | Lower Pylon Reinforcement Tying - P28 | 25d | 2025-10-16 | 2025-11-13 | C_MB_F_L_P28_1110, D_MB_SuS_1150 | 297d | 0d |  |
| C_MB_SuS_L_P28_1010 |  | Lower Pylon Shuttering - P28 | 25d | 2025-11-14 | 2025-12-12 | C_MB_SuS_L_P28_1000 | 297d | 0d | Crane 10 [200 h] |
| C_MB_SuS_L_P28_1020 |  | Lower Pylon Concreting - P28 | 5d | 2025-12-13 | 2025-12-18 | C_MB_SuS_L_P28_1010 | 297d | 0d |  |
|  | 2 | **Pier Table** |  | 2025-12-19 | 2026-03-31 |  |  |  |  |
| C_MB_SuS_L_P28_1030 |  | Scaffold & Bottom Soffit for Pier Table- P28 | 40d | 2025-12-19 | 2026-02-03 | C_MB_SuS_L_P28_1020 | 297d | 0d | Crane 10 [320 h] |
| C_MB_SuS_L_P28_1040 |  | Pier Table Reinforcement Tying - P28 | 30d | 2026-02-04 | 2026-03-10 | C_MB_SuS_L_P28_1030 | 297d | 0d |  |
| C_MB_SuS_L_P28_1050 |  | Pier Table Side Shuttering - P28 | 15d | 2026-03-11 | 2026-03-27 | C_MB_SuS_L_P28_1040 | 297d | 0d | Crane 10 [120 h] |
| C_MB_SuS_L_P28_1060 |  | Pier Table Concreting - P28 | 3d | 2026-03-28 | 2026-03-31 | C_MB_SuS_L_P28_1050 | 297d | 0d |  |
|  | 12 | **P29** |  | 2025-11-24 | 2026-10-12 |  |  |  |  |
|  | 1 | **Lower Pylon** |  | 2025-11-24 | 2026-03-07 |  |  |  |  |
| C_MB_SuS_L_P29_1000 |  | Lower Pylon 1 Reinforcement Tying - P29 | 20d | 2025-11-24 | 2025-12-16 | C_MB_F_L_P29_1110, D_MB_SuS_1110 | 13d | 0d |  |
| C_MB_SuS_L_P29_1010 |  | Lower Pylon 1 Shuttering - P29 | 20d | 2025-12-17 | 2026-01-08 | C_MB_SuS_L_P29_1000 | 13d | 0d | Crane 12 [160 h] |
| C_MB_SuS_L_P29_1020 |  | Lower Pylon 1 Concreting - P29 | 5d | 2026-01-09 | 2026-01-14 | C_MB_SuS_L_P29_1010 | 13d | 0d |  |
| C_MB_SuS_L_P29_1070 |  | Lower Pylon 2 Reinforcement Tying - P29 | 20d | 2026-01-15 | 2026-02-06 | C_MB_SuS_L_P29_1020 | 13d | 0d |  |
| C_MB_SuS_L_P29_1080 |  | Lower Pylon 2 Shuttering - P29 | 20d | 2026-02-07 | 2026-03-02 | C_MB_SuS_L_P29_1070 | 13d | 0d | Crane 12 [160 h] |
| C_MB_SuS_L_P29_1090 |  | Lower Pylon 2 Concreting - P29 | 5d | 2026-03-03 | 2026-03-07 | C_MB_SuS_L_P29_1080 | 13d | 0d |  |

| ID | WBS | Activity | Duration | Start | Finish | Predecessors | Total float | Free float | Resources |
| --- | --- | --- | --- | --- | --- | --- | --- | --- | --- |
|  | 2 | **Pier Table** |  | 2026-03-09 | 2026-10-12 |  |  |  |  |
| C_MB_SuS_L_P29_1030 |  | Scaffold & Bottom Soffit for Pier Table - P29 | 40d | 2026-03-09 | 2026-04-23 | C_MB_SuS_L_P29_1090 | 13d | 0d | Crane 12 [320 h] |
| C_MB_SuS_L_P29_1040 |  | Pier Table Reinforcement Tying - P29 | 30d | 2026-04-24 | 2026-05-28 | C_MB_SuS_L_P29_1030 | 13d | 0d |  |
| C_MB_SuS_L_P29_1050 |  | Pier Table Side Shuttering - P29 | 15d | 2026-05-29 | 2026-10-08 | C_MB_SuS_L_P29_1040 | 13d | 0d | Crane 12 [120 h] |
| C_MB_SuS_L_P29_1060 |  | Pier Table Concreting - P29 | 3d | 2026-10-09 | 2026-10-12 | C_MB_SuS_L_P29_1050 | 13d | 0d |  |
|  | 13 | **P30** |  | 2025-10-16 | 2026-03-31 |  |  |  |  |
|  | 1 | **Lower Pylon** |  | 2025-10-16 | 2025-12-18 |  |  |  |  |
| C_MB_SuS_L_P30_1070 |  | Lower Pylon Reinforcement Tying - P30 | 25d | 2025-10-16 | 2025-11-13 | C_MB_F_L_P30_1110, D_MB_SuS_1150 | 406d | 0d |  |
| C_MB_SuS_L_P30_1080 |  | Lower Pylon Shuttering - P30 | 25d | 2025-11-14 | 2025-12-12 | C_MB_SuS_L_P30_1070 | 406d | 0d | Crane 13 [200 h] |
| C_MB_SuS_L_P30_1090 |  | Lower Pylon Concreting - P30 | 5d | 2025-12-13 | 2025-12-18 | C_MB_SuS_L_P30_1080 | 406d | 0d |  |
|  | 2 | **Pier Table** |  | 2025-12-19 | 2026-03-31 |  |  |  |  |
| C_MB_SuS_L_P30_1100 |  | Scaffold & Bottom Soffit for Pier Table - P30 | 40d | 2025-12-19 | 2026-02-03 | C_MB_SuS_L_P30_1090 | 406d | 0d | Crane 13 [320 h] |
| C_MB_SuS_L_P30_1110 |  | Pier Table Reinforcement Tying - P30 | 30d | 2026-02-04 | 2026-03-10 | C_MB_SuS_L_P30_1100 | 406d | 0d |  |
| C_MB_SuS_L_P30_1120 |  | Pier Table Side Shuttering - P30 | 15d | 2026-03-11 | 2026-03-27 | C_MB_SuS_L_P30_1110 | 406d | 0d | Crane 13 [120 h] |
| C_MB_SuS_L_P30_1130 |  | Pier Table Concreting - P30 | 3d | 2026-03-28 | 2026-03-31 | C_MB_SuS_L_P30_1120 | 406d | 0d |  |
|  | 14 | **Marine** |  | 2026-05-20 | 2027-04-28 |  |  |  |  |
|  | 2 | **P10** |  | 2026-05-20 | 2027-02-13 |  |  |  |  |
|  | 1 | **Lower Pylon** |  | 2026-05-20 | 2026-11-03 |  |  |  |  |
| C_MB_SuS_M_P10_1000 |  | Lower Pylon Reinforcement Tying - P10 | 20d | 2026-05-20 | 2026-10-05 | C_MB_F_M_P10_1150, D_MB_SuS_1150 | 281d | 0d |  |
| C_MB_SuS_M_P10_1010 |  | Lower Pylon Shuttering - P10 | 20d | 2026-10-06 | 2026-10-28 | C_MB_SuS_M_P10_1000 | 281d | 0d | Crane 14 [160 h] |
| C_MB_SuS_M_P10_1020 |  | Lower Pylon Concreting - P10 | 5d | 2026-10-29 | 2026-11-03 | C_MB_SuS_M_P10_1010 | 281d | 0d |  |
|  | 2 | **Pier Table** |  | 2026-11-04 | 2027-02-13 |  |  |  |  |
| C_MB_SuS_M_P10_1030 |  | Scaffold & Bottom Soffit for Pier Table - P10 | 40d | 2026-11-04 | 2026-12-19 | C_MB_SuS_M_P10_1020 | 281d | 0d | Crane 14 [320 h] |
| C_MB_SuS_M_P10_1040 |  | Pier Table Reinforcement Tying - P10 | 30d | 2026-12-21 | 2027-01-23 | C_MB_SuS_M_P10_1030 | 281d | 0d |  |
| C_MB_SuS_M_P10_1050 |  | Pier Table Side Shuttering - P10 | 15d | 2027-01-25 | 2027-02-10 | C_MB_SuS_M_P10_1040 | 281d | 0d | Crane 14 [120 h] |
| C_MB_SuS_M_P10_1060 |  | Pier Table Concreting - P10 | 3d | 2027-02-11 | 2027-02-13 | C_MB_SuS_M_P10_1050 | 281d | 272d |  |

| ID | WBS | Activity | Duration | Start | Finish | Predecessors | Total float | Free float | Resources |
| --- | --- | --- | --- | --- | --- | --- | --- | --- | --- |
|  | 1 | **P11** |  | 2026-12-04 | 2027-04-20 |  |  |  |  |
|  | 1 | **Lower Pylon** |  | 2026-12-04 | 2027-01-07 |  |  |  |  |
| C_MB_SuS_M_P11_1000 |  | Lower Pylon 1 Reinforcement Tying - P11 | 15d | 2026-12-04 | 2026-12-21 | C_MB_F_M_P11_1150, D_MB_SuS_1110 | 6d | 0d |  |
| C_MB_SuS_M_P11_1070 |  | Lower Pylon 2 Reinforcement Tying - P11 | 15d | 2026-12-04 | 2026-12-21 | C_MB_SuS_M_P11_1000 SS | 6d | 0d |  |
| C_MB_SuS_M_P11_1010 |  | Lower Pylon 1 Shuttering - P11 | 10d | 2026-12-22 | 2027-01-01 | C_MB_SuS_M_P11_1000 | 6d | 0d | Crane 15 [80 h] |
| C_MB_SuS_M_P11_1080 |  | Lower Pylon 2 Shuttering - P11 | 10d | 2026-12-22 | 2027-01-01 | C_MB_SuS_M_P11_1070 | 6d | 0d | Crane 15 [80 h] |
| C_MB_SuS_M_P11_1020 |  | Lower Pylon 1 Concreting - P11 | 5d | 2027-01-02 | 2027-01-07 | C_MB_SuS_M_P11_1010 | 6d | 0d |  |
| C_MB_SuS_M_P11_1090 |  | Lower Pylon 2 Concreting - P11 | 5d | 2027-01-02 | 2027-01-07 | C_MB_SuS_M_P11_1080 | 6d | 0d |  |
|  | 2 | **Pier Table** |  | 2027-01-08 | 2027-04-20 |  |  |  |  |
| C_MB_SuS_M_P11_1030 |  | Scaffold & Bottom Soffit for Pier Table- P11 | 40d | 2027-01-08 | 2027-02-23 | C_MB_SuS_M_P11_1090, C_MB_SuS_M_P11_1020 | 6d | 0d | Crane 15 [320 h] |
| C_MB_SuS_M_P11_1040 |  | Pier Table Reinforcement Tying - P11 | 30d | 2027-02-24 | 2027-03-30 | C_MB_SuS_M_P11_1030 | 6d | 0d |  |
| C_MB_SuS_M_P11_1050 |  | Pier Table Side Shuttering - P11 | 15d | 2027-03-31 | 2027-04-16 | C_MB_SuS_M_P11_1040 | 6d | 0d | Crane 15 [120 h] |
| C_MB_SuS_M_P11_1060 |  | Pier Table Concreting - P11 | 3d | 2027-04-17 | 2027-04-20 | C_MB_SuS_M_P11_1050 | 6d | 0d |  |
|  | 8 | **P12** |  | 2026-05-20 | 2027-02-13 |  |  |  |  |
|  | 1 | **Lower Pylon** |  | 2026-05-20 | 2026-11-03 |  |  |  |  |
| C_MB_SuS_M_P12_1000 |  | Lower Pylon Reinforcement Tying - P12 | 20d | 2026-05-20 | 2026-10-05 | C_MB_F_M_P12_1150, D_MB_SuS_1150 | 122d | 0d |  |
| C_MB_SuS_M_P12_1010 |  | Lower Pylon Shuttering - P12 | 20d | 2026-10-06 | 2026-10-28 | C_MB_SuS_M_P12_1000 | 122d | 0d | Crane 14 [160 h] |
| C_MB_SuS_M_P12_1020 |  | Lower Pylon Concreting - P12 | 5d | 2026-10-29 | 2026-11-03 | C_MB_SuS_M_P12_1010 | 122d | 0d |  |
|  | 2 | **Pier Table** |  | 2026-11-04 | 2027-02-13 |  |  |  |  |
| C_MB_SuS_M_P12_1030 |  | Scaffold & Bottom Soffit for Pier Table - P12 | 40d | 2026-11-04 | 2026-12-19 | C_MB_SuS_M_P12_1020 | 122d | 0d | Crane 14 [320 h] |
| C_MB_SuS_M_P12_1040 |  | Pier Table Reinforcement Tying - P12 | 30d | 2026-12-21 | 2027-01-23 | C_MB_SuS_M_P12_1030 | 122d | 0d |  |
| C_MB_SuS_M_P12_1050 |  | Pier Table Side Shuttering - P12 | 15d | 2027-01-25 | 2027-02-10 | C_MB_SuS_M_P12_1040 | 122d | 0d | Crane 14 [120 h] |
| C_MB_SuS_M_P12_1060 |  | Pier Table Concreting - P12 | 3d | 2027-02-11 | 2027-02-13 | C_MB_SuS_M_P12_1050 | 122d | 0d |  |
|  | 4 | **P13** |  | 2026-11-26 | 2027-04-12 |  |  |  |  |
|  | 1 | **Lower Pylon** |  | 2026-11-26 | 2026-12-30 |  |  |  |  |
| C_MB_SuS_M_P13_1000 |  | Lower Pylon 1 Reinforcement Tying - P13 | 15d | 2026-11-26 | 2026-12-12 | C_MB_F_M_P13_1150, D_MB_SuS_1110 | 13d | 0d |  |
| C_MB_SuS_M_P13_1070 |  | Lower Pylon 2 Reinforcement Tying - P13 | 15d | 2026-11-26 | 2026-12-12 | C_MB_SuS_M_P13_1000 SS | 13d | 0d |  |
| C_MB_SuS_M_P13_1010 |  | Lower Pylon 1 Shuttering - P13 | 10d | 2026-12-14 | 2026-12-24 | C_MB_SuS_M_P13_1000 | 13d | 0d | Crane 16 [80 h] |
| C_MB_SuS_M_P13_1080 |  | Lower Pylon 2 Shuttering - P13 | 10d | 2026-12-14 | 2026-12-24 | C_MB_SuS_M_P13_1070 | 13d | 0d | Crane 16 [80 h] |
| C_MB_SuS_M_P13_1020 |  | Lower Pylon 1 Concreting - P13 | 5d | 2026-12-25 | 2026-12-30 | C_MB_SuS_M_P13_1010 | 13d | 0d |  |
| C_MB_SuS_M_P13_1090 |  | Lower Pylon 2 Concreting - P13 | 5d | 2026-12-25 | 2026-12-30 | C_MB_SuS_M_P13_1080 | 13d | 0d |  |

| ID | WBS | Activity | Duration | Start | Finish | Predecessors | Total float | Free float | Resources |
| --- | --- | --- | --- | --- | --- | --- | --- | --- | --- |
|  | 2 | **Pier Table** |  | 2026-12-31 | 2027-04-12 |  |  |  |  |
| C_MB_SuS_M_P13_1030 |  | Scaffold & Bottom Soffit for Pier Table - P13 | 40d | 2026-12-31 | 2027-02-15 | C_MB_SuS_M_P13_1090, C_MB_SuS_M_P13_1020 | 13d | 0d | Crane 16 [320 h] |
| C_MB_SuS_M_P13_1040 |  | Pier Table Reinforcement Tying - P13 | 30d | 2027-02-16 | 2027-03-22 | C_MB_SuS_M_P13_1030 | 13d | 0d |  |
| C_MB_SuS_M_P13_1050 |  | Pier Table Side Shuttering - P13 | 15d | 2027-03-23 | 2027-04-08 | C_MB_SuS_M_P13_1040 | 13d | 0d | Crane 16 [120 h] |
| C_MB_SuS_M_P13_1060 |  | Pier Table Concreting - P13 | 3d | 2027-04-09 | 2027-04-12 | C_MB_SuS_M_P13_1050 | 13d | 0d |  |
|  | 9 | **P14** |  | 2026-10-01 | 2027-03-04 |  |  |  |  |
|  | 1 | **Lower Pylon** |  | 2026-10-01 | 2026-11-21 |  |  |  |  |
| C_MB_SuS_M_P14_1000 |  | Lower Pylon Reinforcement Tying - P14 | 20d | 2026-10-01 | 2026-10-23 | C_MB_F_M_P14_1150, D_MB_SuS_1150 | 265d | 0d |  |
| C_MB_SuS_M_P14_1010 |  | Lower Pylon Shuttering - P14 | 20d | 2026-10-24 | 2026-11-16 | C_MB_SuS_M_P14_1000 | 265d | 0d | Crane 17 [160 h] |
| C_MB_SuS_M_P14_1020 |  | Lower Pylon Concreting - P14 | 5d | 2026-11-17 | 2026-11-21 | C_MB_SuS_M_P14_1010 | 265d | 0d |  |
|  | 2 | **Pier Table** |  | 2026-11-23 | 2027-03-04 |  |  |  |  |
| C_MB_SuS_M_P14_1030 |  | Scaffold & Bottom Soffit for Pier Table - P14 | 40d | 2026-11-23 | 2027-01-07 | C_MB_SuS_M_P14_1020 | 265d | 0d | Crane 17 [320 h] |
| C_MB_SuS_M_P14_1040 |  | Pier Table Reinforcement Tying - P14 | 30d | 2027-01-08 | 2027-02-11 | C_MB_SuS_M_P14_1030 | 265d | 0d |  |
| C_MB_SuS_M_P14_1050 |  | Pier Table Side Shuttering - P14 | 15d | 2027-02-12 | 2027-03-01 | C_MB_SuS_M_P14_1040 | 265d | 0d | Crane 17 [120 h] |
| C_MB_SuS_M_P14_1060 |  | Pier Table Concreting - P14 | 3d | 2027-03-02 | 2027-03-04 | C_MB_SuS_M_P14_1050 | 265d | 256d |  |
|  | 5 | **P15** |  | 2026-12-10 | 2027-04-26 |  |  |  |  |
|  | 1 | **Lower Pylon** |  | 2026-12-10 | 2027-01-13 |  |  |  |  |
| C_MB_SuS_M_P15_1000 |  | Lower Pylon 1 Reinforcement Tying - P15 | 15d | 2026-12-10 | 2026-12-26 | C_MB_F_M_P15_1150, D_MB_SuS_1110 | 1d | 0d |  |
| C_MB_SuS_M_P15_1070 |  | Lower Pylon 2 Reinforcement Tying - P15 | 15d | 2026-12-10 | 2026-12-26 | C_MB_SuS_M_P15_1000 SS | 1d | 0d |  |
| C_MB_SuS_M_P15_1010 |  | Lower Pylon 1 Shuttering - P15 | 10d | 2026-12-28 | 2027-01-07 | C_MB_SuS_M_P15_1000 | 1d | 0d | Crane 18 [80 h] |
| C_MB_SuS_M_P15_1080 |  | Lower Pylon 2 Shuttering - P15 | 10d | 2026-12-28 | 2027-01-07 | C_MB_SuS_M_P15_1070 | 1d | 0d | Crane 18 [80 h] |
| C_MB_SuS_M_P15_1020 |  | Lower Pylon 1 Concreting - P15 | 5d | 2027-01-08 | 2027-01-13 | C_MB_SuS_M_P15_1010 | 1d | 0d |  |
| C_MB_SuS_M_P15_1090 |  | Lower Pylon 2 Concreting - P15 | 5d | 2027-01-08 | 2027-01-13 | C_MB_SuS_M_P15_1080 | 1d | 0d |  |
|  | 2 | **Pier Table** |  | 2027-01-14 | 2027-04-26 |  |  |  |  |
| C_MB_SuS_M_P15_1030 |  | Scaffold & Bottom Soffit for Pier Table - P15 | 40d | 2027-01-14 | 2027-03-01 | C_MB_SuS_M_P15_1090, C_MB_SuS_M_P15_1020 | 1d | 0d | Crane 18 [320 h] |
| C_MB_SuS_M_P15_1040 |  | Pier Table Reinforcement Tying - P15 | 30d | 2027-03-02 | 2027-04-05 | C_MB_SuS_M_P15_1030 | 1d | 0d |  |
| C_MB_SuS_M_P15_1050 |  | Pier Table Side Shuttering - P15 | 15d | 2027-04-06 | 2027-04-22 | C_MB_SuS_M_P15_1040 | 1d | 0d | Crane 18 [120 h] |
| C_MB_SuS_M_P15_1060 |  | Pier Table Concreting - P15 | 3d | 2027-04-23 | 2027-04-26 | C_MB_SuS_M_P15_1050 | 1d | 0d |  |

| ID | WBS | Activity | Duration | Start | Finish | Predecessors | Total float | Free float | Calendar | Resources |
| --- | --- | --- | --- | --- | --- | --- | --- | --- | --- | --- |
|  | 10 | **P16** |  | 2026-10-01 | 2027-03-04 |  |  |  |  |  |
|  | 1 | **Lower Pylon** |  | 2026-10-01 | 2026-11-21 |  |  |  |  |  |
| C_MB_SuS_M_P16_1000 |  | Lower Pylon Reinforcement Tying - P16 | 20d | 2026-10-01 | 2026-10-23 | C_MB_F_M_P16_1150, D_MB_SuS_1150 | 106d | 0d |  |  |
| C_MB_SuS_M_P16_1010 |  | Lower Pylon Shuttering - P16 | 20d | 2026-10-24 | 2026-11-16 | C_MB_SuS_M_P16_1000 | 106d | 0d |  | Crane 17 [160 h] |
| C_MB_SuS_M_P16_1020 |  | Lower Pylon Concreting - P16 | 5d | 2026-11-17 | 2026-11-21 | C_MB_SuS_M_P16_1010 | 106d | 0d |  |  |
|  | 2 | **Pier Table** |  | 2026-11-23 | 2027-03-04 |  |  |  |  |  |
| C_MB_SuS_M_P16_1030 |  | Scaffold & Bottom Soffit for Pier Table- P16 | 40d | 2026-11-23 | 2027-01-07 | C_MB_SuS_M_P16_1020 | 106d | 0d |  | Crane 17 [320 h] |
| C_MB_SuS_M_P16_1040 |  | Pier Table Reinforcement Tying - P16 | 30d | 2027-01-08 | 2027-02-11 | C_MB_SuS_M_P16_1030 | 106d | 0d |  |  |
| C_MB_SuS_M_P16_1050 |  | Pier Table Side Shuttering - P16 | 15d | 2027-02-12 | 2027-03-01 | C_MB_SuS_M_P16_1040 | 106d | 0d |  | Crane 17 [120 h] |
| C_MB_SuS_M_P16_1060 |  | Pier Table Concreting - P16 | 3d | 2027-03-02 | 2027-03-04 | C_MB_SuS_M_P16_1050 | 106d | 0d |  |  |
|  | 6 | **P17** |  | 2026-12-12 | 2027-04-28 |  |  |  |  |  |
|  | 1 | **Lower Pylon** |  | 2026-12-12 | 2027-01-15 |  |  |  |  |  |
| C_MB_SuS_M_P17_1000 |  | Lower Pylon 1 Reinforcement Tying - P17 | 15d | 2026-12-12 | 2026-12-29 | C_MB_F_M_P17_1150, D_MB_SuS_1110 | 0d |  |  |  |
| C_MB_SuS_M_P17_1070 |  | Lower Pylon 2 Reinforcement Tying - P17 | 15d | 2026-12-12 | 2026-12-29 | C_MB_SuS_M_P17_1000 SS | 0d |  |  |  |
| C_MB_SuS_M_P17_1010 |  | Lower Pylon 1 Shuttering - P17 | 10d | 2026-12-30 | 2027-01-09 | C_MB_SuS_M_P17_1000 | 0d |  |  | Crane 19 [80 h] |
| C_MB_SuS_M_P17_1080 |  | Lower Pylon 2 Shuttering - P17 | 10d | 2026-12-30 | 2027-01-09 | C_MB_SuS_M_P17_1070 | 0d |  |  | Crane 19 [80 h] |
| C_MB_SuS_M_P17_1020 |  | Lower Pylon 1 Concreting - P17 | 5d | 2027-01-11 | 2027-01-15 | C_MB_SuS_M_P17_1010 | 0d |  |  |  |
| C_MB_SuS_M_P17_1090 |  | Lower Pylon 2 Concreting - P17 | 5d | 2027-01-11 | 2027-01-15 | C_MB_SuS_M_P17_1080 | 0d |  |  |  |
|  | 2 | **Pier Table** |  | 2027-01-16 | 2027-04-28 |  |  |  |  |  |
| C_MB_SuS_M_P17_1030 |  | Scaffold & Bottom Soffit for Pier Table - P17 | 40d | 2027-01-16 | 2027-03-03 | C_MB_SuS_M_P17_1090, C_MB_SuS_M_P17_1020 | 0d |  |  | Crane 19 [320 h] |
| C_MB_SuS_M_P17_1040 |  | Pier Table Reinforcement Tying - P17 | 30d | 2027-03-04 | 2027-04-07 | C_MB_SuS_M_P17_1030 | 0d |  |  |  |
| C_MB_SuS_M_P17_1050 |  | Pier Table Side Shuttering - P17 | 15d | 2027-04-08 | 2027-04-24 | C_MB_SuS_M_P17_1040 | 0d |  |  | Crane 19 [120 h] |
| C_MB_SuS_M_P17_1060 |  | Pier Table Concreting - P17 | 3d | 2027-04-26 | 2027-04-28 | C_MB_SuS_M_P17_1050 | 0d |  |  |  |
|  | 2 | **Super Structure** |  | 2025-01-28 | 2028-05-09 |  |  |  |  |  |
|  | 1 | **Precasting** |  | 2025-01-28 | 2027-09-18 |  |  |  |  |  |
| C_MB_SS_PC_1220 |  | Casting for P29 | 90d | 2025-01-28 | 2025-05-12 | C_SE_1040 | 47d | 0d | Monsoon Calendar |  |
| C_MB_SS_PC_1000 |  | Casting for P7 | 90d | 2025-02-03 | 2025-05-17 | C_SE_1030 FS+5d | 132d | 0d | Monsoon Calendar |  |
| C_MB_SS_PC_1210 |  | Casting for P28 | 45d | 2025-05-13 | 2025-08-05 | C_SE_1040 FS+7d, C_MB_SS_PC_1220 | 47d | 0d | Monsoon Calendar |  |
| C_MB_SS_PC_1010 |  | Casting for P8 | 45d | 2025-05-19 | 2025-08-16 | C_SE_1030 FS+15d, C_MB_SS_PC_1000 | 132d | 0d | Monsoon Calendar |  |
| C_MB_SS_PC_1200 |  | Casting for P27 | 90d | 2025-08-06 | 2025-12-16 | C_SE_1040 FS+14d, C_MB_SS_PC_1210 | 47d | 0d | Monsoon Calendar |  |
| C_MB_SS_PC_1020 |  | Casting for P9 | 90d | 2025-08-18 | 2025-12-22 | C_SE_1030 FS+25d, C_MB_SS_PC_1010 | 132d | 0d | Monsoon Calendar |  |
| C_MB_SS_PC_1180 |  | Casting for P25 | 90d | 2025-12-17 | 2026-03-31 | C_MB_SS_PC_1200 | 47d | 0d | Monsoon Calendar |  |
| C_MB_SS_PC_1040 |  | Casting for P11 | 90d | 2025-12-23 | 2026-04-06 | C_MB_SS_PC_1020 | 132d | 0d | Monsoon Calendar |  |
| C_MB_SS_PC_1170 |  | Casting for P24 | 45d | 2026-04-01 | 2026-05-22 | C_MB_SS_PC_1180 | 47d | 0d | Monsoon Calendar |  |
| C_MB_SS_PC_1050 |  | Casting for P12 | 45d | 2026-04-07 | 2026-05-28 | C_MB_SS_PC_1040 | 132d | 0d | Monsoon Calendar |  |
| C_MB_SS_PC_1160 |  | Casting for P23 | 90d | 2026-05-23 | 2026-11-05 | C_MB_SS_PC_1170 | 47d | 0d | Monsoon Calendar |  |
| C_MB_SS_PC_1060 |  | Casting for P13 | 90d | 2026-05-29 | 2026-11-11 | C_MB_SS_PC_1050 | 132d | 0d | Monsoon Calendar |  |
| C_MB_SS_PC_1140 |  | Casting for P21 | 90d | 2026-11-05 | 2027-02-18 | C_MB_SS_PC_1160 | 47d | 0d | Monsoon Calendar |  |
| C_MB_SS_PC_1080 |  | Casting for P15 | 90d | 2026-11-11 | 2027-02-24 | C_MB_SS_PC_1060 | 132d | 0d | Monsoon Calendar |  |
| C_MB_SS_PC_1100 |  | Casting for P17 | 90d | 2027-01-02 | 2027-04-17 | C_MB_SS_PC_1090 FF | 132d |  | Monsoon Calendar |  |
| C_MB_SS_PC_1130 |  | Casting for P20 | 45d | 2027-02-18 | 2027-04-12 | C_MB_SS_PC_1140 | 47d | 0d | Monsoon Calendar |  |
| C_MB_SS_PC_1090 |  | Casting for P16 | 45d | 2027-02-24 | 2027-04-17 | C_MB_SS_PC_1080 | 132d | 0d | Monsoon Calendar |  |
| C_MB_SS_PC_1120 |  | Casting for P19 | 90d | 2027-04-12 | 2027-09-18 | C_MB_SS_PC_1130 | 47d | 0d | Monsoon Calendar |  |

| ID | WBS | Activity | Duration | Start | Finish | Predecessors | Total float | Free float |
| --- | --- | --- | --- | --- | --- | --- | --- | --- |
|  | 2 | **Land** |  | 2026-03-20 | 2027-02-11 |  |  |  |
|  | 2 | **P7** |  | 2026-10-05 | 2027-02-03 |  |  |  |
|  | 1 | **Upper Pylon - 30m** |  | 2026-10-05 | 2027-02-03 |  |  |  |
| C_MB_SS_L_P7_1000 |  | Upper Pylon Reinforcement Tying - P7 | 50d | 2026-10-05 | 2026-12-01 | C_MB_SuS_L_P7_1060, D_MB_SS_1110 | 166d | 0d |
| C_MB_SS_L_P7_1010 |  | Upper Pylon Shuttering - P7 | 50d | 2026-12-02 | 2027-01-28 | C_MB_SS_L_P7_1000 | 166d | 0d |
| C_MB_SS_L_P7_1020 |  | Upper Pylon Concreting - P7 | 5d | 2027-01-29 | 2027-02-03 | C_MB_SS_L_P7_1010 | 166d | 0d |
|  | 13 | **P8** |  | 2026-04-04 | 2026-10-12 |  |  |  |
|  | 1 | **Upper Pylon - 17m** |  | 2026-04-04 | 2026-10-12 |  |  |  |
| C_MB_F_L_P8_1120 |  | Upper Pylon Reinforcement Tying - P8 | 30d | 2026-04-04 | 2026-05-08 | C_MB_SuS_L_P8_1060, D_MB_SS_1150 | 294d | 0d |
| C_MB_F_L_P8_1130 |  | Upper Pylon Shuttering - P8 | 30d | 2026-05-09 | 2026-10-06 | C_MB_F_L_P8_1120 | 294d | 0d |
| C_MB_F_L_P8_1140 |  | Upper Pylon Concreting - P8 | 5d | 2026-10-07 | 2026-10-12 | C_MB_F_L_P8_1130 | 294d | 19d |
|  | 1 | **P9** |  | 2026-10-08 | 2027-02-08 |  |  |  |
|  | 1 | **Upper Pylon - 30m** |  | 2026-10-08 | 2027-02-08 |  |  |  |
| C_MB_SS_L_P9_1000 |  | Upper Pylon Reinforcement Tying - P9 | 50d | 2026-10-08 | 2026-12-04 | C_MB_SuS_L_P9_1060, D_MB_SS_1110 | 162.5d | 0d |
| C_MB_SS_L_P9_1010 |  | Upper Pylon Shuttering - P9 | 50d | 2026-12-05 | 2027-02-01 | C_MB_SS_L_P9_1000 | 162.5d | 0d |
| C_MB_SS_L_P9_1020 |  | Upper Pylon Concreting - P9 | 5.5d | 2027-02-02 | 2027-02-08 | C_MB_SS_L_P9_1010 | 162.5d | 0d |
|  | 3 | **P19** |  | 2026-10-10 | 2027-02-09 |  |  |  |
|  | 1 | **Upper Pylon - 30m** |  | 2026-10-10 | 2027-02-09 |  |  |  |
| C_MB_SS_L_P19_1000 |  | Upper Pylon Reinforcement Tying - P19 | 50d | 2026-10-10 | 2026-12-07 | C_MB_SuS_L_P19_1060, D_MB_SS_1110 | 161d | 0d |
| C_MB_SS_L_P19_1010 |  | Upper Pylon Shuttering - P19 | 50d | 2026-12-08 | 2027-02-03 | C_MB_SS_L_P19_1000 | 161d | 0d |
| C_MB_SS_L_P19_1020 |  | Upper Pylon Concreting - P19 | 5d | 2027-02-04 | 2027-02-09 | C_MB_SS_L_P19_1010 | 161d | 114d |
|  | 8 | **P20** |  | 2026-03-31 | 2026-10-07 |  |  |  |
|  | 1 | **Upper Pylon - 17m** |  | 2026-03-31 | 2026-10-07 |  |  |  |
| C_MB_SS_L_P20_1000 |  | Upper Pylon Reinforcement Tying - P20 | 30d | 2026-03-31 | 2026-05-04 | C_MB_SuS_L_P20_1060, D_MB_SS_1150 | 298d | 0d |
| C_MB_SS_L_P20_1010 |  | Upper Pylon Shuttering - P20 | 30d | 2026-05-05 | 2026-10-01 | C_MB_SS_L_P20_1000 | 298d | 0d |
| C_MB_SS_L_P20_1020 |  | Upper Pylon Concreting - P20 | 5d | 2026-10-02 | 2026-10-07 | C_MB_SS_L_P20_1010 | 298d | 177.5d |

| ID | WBS | Activity | Duration | Start | Finish | Predecessors | Total float | Free float |
| --- | --- | --- | --- | --- | --- | --- | --- | --- |
|  | 4 | **P21** |  | 2026-10-13 | 2027-02-11 |  |  |  |
|  | 1 | **Upper Pylon - 30m** |  | 2026-10-13 | 2027-02-11 |  |  |  |
| C_MB_F_L_P21_1120 |  | Upper Pylon Reinforcement Tying - P21 | 50d | 2026-10-13 | 2026-12-09 | C_MB_SuS_L_P21_1060, D_MB_SS_1110 | 159.5d | 0d |
| C_MB_F_L_P21_1130 |  | Upper Pylon Shuttering - P21 | 50d | 2026-12-10 | 2027-02-05 | C_MB_F_L_P21_1120 | 159.5d | 0d |
| C_MB_F_L_P21_1140 |  | Upper Pylon Concreting - P21 | 4.5d | 2027-02-06 | 2027-02-11 | C_MB_F_L_P21_1130 | 159.5d | 24d |
|  | 5 | **P23** |  | 2026-10-13 | 2027-02-11 |  |  |  |
|  | 1 | **Upper Pylon - 30m** |  | 2026-10-13 | 2027-02-11 |  |  |  |
| C_MB_F_L_P23_1120 |  | Upper Pylon Reinforcement Tying - P23 | 50d | 2026-10-13 | 2026-12-09 | C_MB_SuS_L_P23_1060, D_MB_SS_1110 | 169d | 0d |
| C_MB_F_L_P23_1130 |  | Upper Pylon Shuttering - P23 | 50d | 2026-12-10 | 2027-02-05 | C_MB_F_L_P23_1120 | 169d | 0d |
| C_MB_F_L_P23_1140 |  | Upper Pylon Concreting - P23 | 5d | 2027-02-06 | 2027-02-11 | C_MB_F_L_P23_1130 | 169d | 0d |
|  | 6 | **P24** |  | 2026-03-20 | 2026-06-03 |  |  |  |
|  | 1 | **Upper Pylon - 17m** |  | 2026-03-20 | 2026-06-03 |  |  |  |
| C_MB_F_L_P24_1120 |  | Upper Pylon Reinforcement Tying - P24 | 30d | 2026-03-20 | 2026-04-23 | C_MB_SuS_L_P24_1060, D_MB_SS_1150 | 307d | 0d |
| C_MB_F_L_P24_1130 |  | Upper Pylon Shuttering - P24 | 30d | 2026-04-24 | 2026-05-28 | C_MB_F_L_P24_1120 | 307d | 0d |
| C_MB_F_L_P24_1140 |  | Upper Pylon Concreting - P24 | 5d | 2026-05-29 | 2026-06-03 | C_MB_F_L_P24_1130 | 307d | 9.5d |
|  | 7 | **P25** |  | 2026-10-13 | 2027-02-11 |  |  |  |
|  | 1 | **Upper Pylon - 30m** |  | 2026-10-13 | 2027-02-11 |  |  |  |
| C_MB_F_L_P25_1120 |  | Upper Pylon Reinforcement Tying - P25 | 50d | 2026-10-13 | 2026-12-09 | C_MB_SuS_L_P25_1060, D_MB_SS_1110 | 159d | 0d |
| C_MB_F_L_P25_1130 |  | Upper Pylon Shuttering - P25 | 50d | 2026-12-10 | 2027-02-05 | C_MB_F_L_P25_1120 | 159d | 0d |
| C_MB_F_L_P25_1140 |  | Upper Pylon Concreting - P25 | 5d | 2027-02-06 | 2027-02-11 | C_MB_F_L_P25_1130 | 159d | 0d |
|  | 9 | **P27** |  | 2026-10-13 | 2027-02-11 |  |  |  |
|  | 1 | **Upper Pylon - 30m** |  | 2026-10-13 | 2027-02-11 |  |  |  |
| C_MB_F_L_P27_1120 |  | Upper Pylon Reinforcement Tying - P27 | 50d | 2026-10-13 | 2026-12-09 | C_MB_SuS_L_P27_1060, D_MB_SS_1110 | 159d | 0d |
| C_MB_F_L_P27_1130 |  | Upper Pylon Shuttering - P27 | 50d | 2026-12-10 | 2027-02-05 | C_MB_F_L_P27_1120 | 159d | 0d |
| C_MB_F_L_P27_1140 |  | Upper Pylon Concreting - P27 | 5d | 2027-02-06 | 2027-02-11 | C_MB_F_L_P27_1130 | 159d | 0d |

| ID | WBS | Activity | Duration | Start | Finish | Predecessors | Total float | Free float |
| --- | --- | --- | --- | --- | --- | --- | --- | --- |
|  | 10 | **P28** |  | 2026-04-01 | 2026-10-08 |  |  |  |
|  | 1 | **Upper Pylon - 17m** |  | 2026-04-01 | 2026-10-08 |  |  |  |
| C_MB_F_L_P28_1120 |  | Upper Pylon Reinforcement Tying - P28 | 30d | 2026-04-01 | 2026-05-05 | C_MB_SuS_L_P28_1060, D_MB_SS_1150 | 297d | 0d |
| C_MB_F_L_P28_1130 |  | Upper Pylon Shuttering - P28 | 30d | 2026-05-06 | 2026-10-02 | C_MB_F_L_P28_1120 | 297d | 0d |
| C_MB_F_L_P28_1140 |  | Upper Pylon Concreting - P28 | 5d | 2026-10-03 | 2026-10-08 | C_MB_F_L_P28_1130 | 297d | 0d |
|  | 11 | **P29** |  | 2026-10-13 | 2027-02-11 |  |  |  |
|  | 1 | **Upper Pylon - 30m** |  | 2026-10-13 | 2027-02-11 |  |  |  |
| C_MB_F_L_P29_1120 |  | Upper Pylon Reinforcement Tying - P29 | 50d | 2026-10-13 | 2026-12-09 | C_MB_SuS_L_P29_1060, D_MB_SS_1110 | 13d | 0d |
| C_MB_F_L_P29_1130 |  | Upper Pylon Shuttering - P29 | 50d | 2026-12-10 | 2027-02-05 | C_MB_F_L_P29_1120 | 13d | 0d |
| C_MB_F_L_P29_1140 |  | Upper Pylon Concreting - P29 | 5d | 2027-02-06 | 2027-02-11 | C_MB_F_L_P29_1130 | 13d | 0d |
|  | 14 | **Marine** |  | 2027-02-15 | 2027-12-09 |  |  |  |
|  | 4 | **P11** |  | 2027-04-21 | 2027-12-02 |  |  |  |
|  | 1 | **Upper Pylon - 30m** |  | 2027-04-21 | 2027-12-02 |  |  |  |
| C_MB_SS_M_P9__1090 |  | Upper Pylon Reinforcement Tying - P11 | 45d | 2027-04-21 | 2027-10-05 | C_MB_SuS_M_P11_1060, D_MB_SS_1110 | 6d | 0d |
| C_MB_SS_M_P9__1100 |  | Upper Pylon Shuttering - P11 | 45d | 2027-10-06 | 2027-11-26 | C_MB_SS_M_P9__1090 | 6d | 0d |
| C_MB_SS_M_P9__1110 |  | Upper Pylon Concreting - P11 | 5d | 2027-11-27 | 2027-12-02 | C_MB_SS_M_P9__1100 | 6d | 0d |
|  | 3 | **P12** |  | 2027-02-15 | 2027-04-30 |  |  |  |
|  | 1 | **Upper Pylon - 17m** |  | 2027-02-15 | 2027-04-30 |  |  |  |
| C_MB_SS_M_P9__1060 |  | Upper Pylon Reinforcement Tying - P12 | 30d | 2027-02-15 | 2027-03-20 | C_MB_SuS_M_P12_1060, D_MB_SS_1150 | 122d | 0d |
| C_MB_SS_M_P9__1070 |  | Upper Pylon Shuttering - P12 | 30d | 2027-03-22 | 2027-04-24 | C_MB_SS_M_P9__1060 | 122d | 0d |
| C_MB_SS_M_P9__1080 |  | Upper Pylon Concreting - P12 | 5d | 2027-04-26 | 2027-04-30 | C_MB_SS_M_P9__1070 | 122d | 0d |
|  | 5 | **P13** |  | 2027-04-13 | 2027-11-24 |  |  |  |
|  | 1 | **Upper Pylon - 30m** |  | 2027-04-13 | 2027-11-24 |  |  |  |
| C_MB_SS_M_P9__1120 |  | Upper Pylon Reinforcement Tying - P13 | 45d | 2027-04-13 | 2027-06-03 | C_MB_SuS_M_P13_1060, D_MB_SS_1110 | 13d | 0d |
| C_MB_SS_M_P9__1130 |  | Upper Pylon Shuttering - P13 | 45d | 2027-06-04 | 2027-11-18 | C_MB_SS_M_P9__1120 | 13d | 0d |
| C_MB_SS_M_P9__1140 |  | Upper Pylon Concreting - P13 | 5d | 2027-11-19 | 2027-11-24 | C_MB_SS_M_P9__1130 | 13d | 0d |

| ID | WBS | Activity | Duration | Start | Finish | Predecessors | Total float | Free float | Resources |
| --- | --- | --- | --- | --- | --- | --- | --- | --- | --- |
|  | 7 | **P15** |  | 2027-04-27 | 2027-12-08 |  |  |  |  |
|  | 1 | **Upper Pylon - 30m** |  | 2027-04-27 | 2027-12-08 |  |  |  |  |
| C_MB_SS_M_P9__1180 |  | Upper Pylon Reinforcement Tying - P15 | 45d | 2027-04-27 | 2027-10-11 | C_MB_SuS_M_P15_1060, D_MB_SS_1110 | 1d | 0d |  |
| C_MB_SS_M_P9__1190 |  | Upper Pylon Shuttering - P15 | 45d | 2027-10-12 | 2027-12-02 | C_MB_SS_M_P9__1180 | 1d | 0d |  |
| C_MB_SS_M_P9__1200 |  | Upper Pylon Concreting - P15 | 5d | 2027-12-03 | 2027-12-08 | C_MB_SS_M_P9__1190 | 1d | 0d |  |
|  | 8 | **P16** |  | 2027-03-05 | 2027-05-19 |  |  |  |  |
|  | 1 | **Upper Pylon - 17m** |  | 2027-03-05 | 2027-05-19 |  |  |  |  |
| C_MB_SS_M_P9__1210 |  | Upper Pylon Reinforcement Tying - P16 | 30d | 2027-03-05 | 2027-04-08 | C_MB_SuS_M_P16_1060, D_MB_SS_1150 | 106d | 0d |  |
| C_MB_SS_M_P9__1220 |  | Upper Pylon Shuttering - P16 | 30d | 2027-04-09 | 2027-05-13 | C_MB_SS_M_P9__1210 | 106d | 0d |  |
| C_MB_SS_M_P9__1230 |  | Upper Pylon Concreting - P16 | 5d | 2027-05-14 | 2027-05-19 | C_MB_SS_M_P9__1220 | 106d | 0d |  |
|  | 9 | **P17** |  | 2027-04-29 | 2027-12-09 |  |  |  |  |
|  | 1 | **Upper Pylon - 30m** |  | 2027-04-29 | 2027-12-09 |  |  |  |  |
| C_MB_SS_M_P9__1240 |  | Upper Pylon Reinforcement Tying - P17 | 44d | 2027-04-29 | 2027-10-12 | C_MB_SuS_M_P17_1060, D_MB_SS_1110 | 0d |  |  |
| C_MB_SS_M_P9__1250 |  | Upper Pylon Shuttering - P17 | 45d | 2027-10-13 | 2027-12-03 | C_MB_SS_M_P9__1240 | 0d |  |  |
| C_MB_SS_M_P9__1260 |  | Upper Pylon Concreting - P17 | 5d | 2027-12-04 | 2027-12-09 | C_MB_SS_M_P9__1250 | 0d |  |  |
|  | 3 | **Launching & Stay Cable Erection** |  | 2026-10-20 | 2028-05-09 |  |  |  |  |
| C_MB_SS_LC__1170 |  | Launching Activities on P24 | 90d | 2026-10-20 | 2027-02-02 | C_MB_SS_PC_1170 FS+28d, C_MB_F_L_P24_1140 FS+10d, C_RW_SK_1040 | 297.5d |  | Bridge Builder-7 [720 h] |
| C_MB_SS_LC__1210 |  | Launching Activities on P28 | 90d | 2026-10-21 | 2027-02-02 | C_MB_SS_PC_1210 FS+28d, C_MB_F_L_P28_1140 FS+10d, C_RW_SK_1040 | 297d |  | Bridge Builder-9 [720 h] |
| C_MB_SS_LC__1010 |  | Launching Activities on P8 | 90d | 2026-11-16 | 2027-02-27 | C_MB_F_L_P8_1140 FS+10d, C_MB_SS_PC_1010 FS+28d, C_RW_PB_1040 | 275d |  | Bridge Builder-1 [720 h] |
| C_MB_SS_LC__1160 |  | Launching Activities on P23 | 120d | 2027-02-12 | 2027-10-25 | C_MB_F_L_P23_1140, C_MB_SS_PC_1160 FS+28d, C_MB_SuS_L_P22_1060, C_RW_SK_1040 | 169d |  | Bridge Builder-7 [960 h] |
| C_MB_SS_LC__1000 |  | Launching Activities on P7 | 120d | 2027-02-16 | 2027-10-28 | C_MB_SS_PC_1000 FS+28d, C_MB_SS_L_P7_1020 FS+10d, C_MB_SuS_L_P6_1060, C_RW_PB_1040 | 166d |  | Bridge Builder-1 [960 h] |
| C_MB_SS_LC__1020 |  | Launching Activities on P9 | 120d | 2027-02-19 | 2027-11-02 | C_MB_SS_PC_1020 FS+28d, C_MB_SS_L_P9_1020 FS+10d, C_RW_PB_1040 | 162.5d |  | Bridge Builder-2 [960 h] |
| C_MB_SS_LC__1180 |  | Launching Activities on P25 | 120d | 2027-02-24 | 2027-11-05 | C_MB_F_L_P25_1140 FS+10d, C_MB_SS_PC_1180 FS+28d, C_RW_SK_1040 | 159d |  | Bridge Builder-8 [960 h] |
| C_MB_SS_LC__1200 |  | Launching Activities on P27 | 120d | 2027-02-24 | 2027-11-05 | C_MB_F_L_P27_1140 FS+10d, C_MB_SS_PC_1200 FS+28d, C_RW_SK_1040 | 159d |  | Bridge Builder-8 [960 h] |
| C_MB_SS_LC__1220 |  | Launching Activities on P29 | 120d | 2027-02-24 | 2027-11-05 | C_MB_F_L_P29_1140 FS+10d, C_MB_SS_PC_1220 FS+28d, C_RW_SK_1040 | 159d |  | Bridge Builder-9 [960 h]; Barge-7 [960 h] |
| C_MB_SS_LC__1140 |  | Launching Activities on P21 | 120d | 2027-03-23 | 2027-12-03 | C_MB_SS_PC_1140 FS+28d, C_MB_F_L_P21_1140 FS+10d, C_RW_SK_1040 | 135.5d |  | Bridge Builder-5 [960 h] |
| C_MB_SS_LC__1050 |  | Launching Activities on P12 | 90d | 2027-05-13 | 2027-12-18 | C_MB_SS_M_P9__1080 FS+10d, C_MB_SS_PC_1050 FS+28d, C_RW_PB_1040 | 122d |  | Bridge Builder-3 [720 h]; Barge-7 [720 h] |
| C_MB_SS_LC__1130 |  | Launching Activities on P20 | 90d | 2027-05-14 | 2027-12-21 | C_MB_SS_PC_1130 FS+28d, C_MB_SS_L_P20_1020 FS+10d, C_RW_SK_1040 | 120.5d |  | Bridge Builder-6 [720 h] |
| C_MB_SS_LC__1090 |  | Launching Activities on P16 | 90d | 2027-06-01 | 2028-01-06 | C_MB_SS_PC_1090 FS+28d, C_MB_SS_M_P9__1230 FS+10d, C_RW_PB_1040 | 106d |  | Bridge Builder-4 [720 h]; Barge-7 [720 h] |
| C_MB_SS_LC__1120 |  | Launching Activities on P19 | 120d | 2027-10-28 | 2028-03-15 | C_MB_SS_PC_1120 FS+28d, C_MB_SS_L_P19_1020 FS+10d, C_RW_SK_1040 | 47d |  | Bridge Builder-6 [960 h] |
| C_MB_SS_LC__1060 |  | Launching Activities on P13 | 120d | 2027-12-07 | 2028-04-24 | C_MB_SS_PC_1060 FS+28d, C_MB_SS_M_P9__1140 FS+10d, C_RW_PB_1040 | 13d |  | Bridge Builder-3 [960 h]; Barge-7 [960 h] |
| C_MB_SS_LC__1040 |  | Launching Activities on P11 | 120d | 2027-12-15 | 2028-05-02 | C_MB_SS_PC_1040 FS+28d, C_MB_SS_M_P9__1110 FS+10d, C_RW_PB_1040 | 6d |  | Bridge Builder-2 [960 h]; Barge-7 [960 h] |
| C_MB_SS_LC__1080 |  | Launching Activities on P15 | 120d | 2027-12-21 | 2028-05-08 | C_MB_SS_PC_1080 FS+28d, C_MB_SS_M_P9__1200 FS+10d, C_RW_PB_1040 | 1d |  | Bridge Builder-4 [960 h]; Barge-7 [960 h] |
| C_MB_SS_LC__1100 |  | Launching Activities on P17 | 120d | 2027-12-22 | 2028-05-09 | C_MB_SS_PC_1100 FS+28d, C_MB_SS_M_P9__1260 FS+10d, C_RW_SK_1040 | 0d |  | Bridge Builder-5 [960 h]; Barge-7 [960 h] |

| ID | WBS | Activity | Duration | Start | Finish | Predecessors | Total float | Free float | Resources |
| --- | --- | --- | --- | --- | --- | --- | --- | --- | --- |
|  | 4 | **Main Bridge Sualkuchi Approach Viaduct** |  | 2025-05-22 | 2026-11-25 |  |  |  |  |
|  | 1 | **LHS** |  | 2025-05-22 | 2026-10-08 |  |  |  |  |
|  | 2 | **P31** |  | 2025-10-06 | 2026-02-27 |  |  |  |  |
| C_SAV_LHS_P31_1000 |  | Well-LHS P31 | 60d | 2025-10-06 | 2025-12-13 | C_SAV_LHS_P33_1000 FS+10d | 440d | 0d |  |
| C_SAV_LHS_P31_1010 |  | Well Cap-LHS P31 | 30d | 2025-12-15 | 2026-01-17 | C_SAV_LHS_P31_1000 | 440d | 0d |  |
| C_SAV_LHS_P31_1020 |  | Pier-LHS P31 | 15d | 2026-01-19 | 2026-02-04 | C_SAV_LHS_P31_1010, D_MB_SuS_1070 | 440d | 0d |  |
| C_SAV_LHS_P31_1030 |  | Pier Cap-LHS P31 | 20d | 2026-02-05 | 2026-02-27 | C_SAV_LHS_P31_1020 | 440d | 34d |  |
|  | 1 | **P32** |  | 2025-10-06 | 2026-02-27 |  |  |  |  |
| C_SAV_LHS_P32_1000 |  | Well-LHS P32 | 60d | 2025-10-06 | 2025-12-13 | C_SAV_LHS_P31_1000 SS | 445d | 0d |  |
| C_SAV_LHS_P32_1010 |  | Well Cap-LHS P32 | 30d | 2025-12-15 | 2026-01-17 | C_SAV_LHS_P32_1000 | 445d | 0d |  |
| C_SAV_LHS_P32_1020 |  | Pier-LHS P32 | 15d | 2026-01-19 | 2026-02-04 | C_SAV_LHS_P32_1010, D_MB_SuS_1070 | 445d | 0d |  |
| C_SAV_LHS_P32_1030 |  | Pier Cap-LHS P32 | 20d | 2026-02-05 | 2026-02-27 | C_SAV_LHS_P32_1020 | 445d | 39d |  |
|  | 3 | **P33** |  | 2025-05-22 | 2025-11-20 |  |  |  |  |
| C_SAV_LHS_P33_1000 |  | Pile-LHS P33 | 10d | 2025-05-22 | 2025-06-01 | SI_1030, D_MB_F_1070, A1220, C_OS_1005 FS+5d | 370d | 0d | Piling Rig 1 [160 h] |
| C_SAV_LHS_P33_1010 |  | Pile Cap-LHS P33 | 15d | 2025-06-02 | 2025-10-10 | C_SAV_LHS_P33_1000 | 535d | 0d |  |
| C_SAV_LHS_P33_1020 |  | Pier-LHS P33 | 15d | 2025-10-11 | 2025-10-28 | C_SAV_LHS_P33_1010, D_MB_SuS_1070 | 535d | 0d |  |
| C_SAV_LHS_P33_1030 |  | Pier Cap-LHS P33 | 20d | 2025-10-29 | 2025-11-20 | C_SAV_LHS_P33_1020 | 535d | 104d |  |
|  | 4 | **P34** |  | 2025-06-02 | 2025-12-02 |  |  |  |  |
| C_SAV_LHS_P34_1000 |  | Pile-LHS P34 | 10d | 2025-06-02 | 2025-10-04 | C_SAV_LHS_P33_1000 | 370d | 0d | Piling Rig 1 [160 h] |
| C_SAV_LHS_P34_1010 |  | Pile Cap-LHS P34 | 15d | 2025-10-06 | 2025-10-22 | C_SAV_LHS_P34_1000 | 525d | 0d |  |
| C_SAV_LHS_P34_1020 |  | Pier-LHS P34 | 15d | 2025-10-23 | 2025-11-08 | C_SAV_LHS_P34_1010, D_MB_SuS_1070 | 525d | 0d |  |
| C_SAV_LHS_P34_1030 |  | Pier Cap-LHS P34 | 20d | 2025-11-10 | 2025-12-02 | C_SAV_LHS_P34_1020 | 525d | 94d |  |
|  | 6 | **P35** |  | 2025-10-06 | 2025-12-13 |  |  |  |  |
| C_SAV_LHS_P35_1000 |  | Pile-LHS P35 | 10d | 2025-10-06 | 2025-10-16 | C_SAV_LHS_P34_1000 | 370d | 0d | Piling Rig 1 [160 h] |
| C_SAV_LHS_P35_1010 |  | Pile Cap-LHS P35 | 15d | 2025-10-17 | 2025-11-03 | C_SAV_LHS_P35_1000, C_SAV_LHS_P35_1000 FF | 515d | 0d |  |
| C_SAV_LHS_P35_1020 |  | Pier-LHS P35 | 15d | 2025-11-04 | 2025-11-20 | C_SAV_LHS_P35_1010, C_SAV_LHS_P35_1010 FF, D_MB_SuS_1070 | 515d | 0d |  |
| C_SAV_LHS_P35_1030 |  | Pier Cap-LHS P35 | 20d | 2025-11-21 | 2025-12-13 | C_SAV_LHS_P35_1020, C_SAV_LHS_P35_1020 FF | 515d | 84d |  |

| ID | WBS | Activity | Duration | Start | Finish | Predecessors | Total float | Free float | Calendar | Resources |
| --- | --- | --- | --- | --- | --- | --- | --- | --- | --- | --- |
|  | 5 | **A2** |  | 2025-10-17 | 2025-12-25 |  |  |  |  |  |
| C_SAV_LHS_A2_1000 |  | Pile-LHS A2 | 10d | 2025-10-17 | 2025-10-28 | C_SAV_LHS_P35_1000 | 370d | 0d |  | Piling Rig 1 [200 h] |
| C_SAV_LHS_A2_1010 |  | Pile Cap-LHS A2 | 15d | 2025-10-29 | 2025-11-14 | C_SAV_LHS_A2_1000 | 525d | 0d |  |  |
| C_SAV_LHS_A2_1020 |  | Abutment-LHS A2 | 15d | 2025-11-15 | 2025-12-02 | C_SAV_LHS_A2_1010 | 525d | 0d |  |  |
| C_SAV_LHS_A2_1030 |  | Dirt Wall-LHS A2 | 20d | 2025-12-03 | 2025-12-25 | C_SAV_LHS_A2_1020 | 568d |  |  |  |
|  | 9 | **I-Girder Casting** |  | 2026-01-27 | 2026-04-06 |  |  |  |  |  |
| C_SAV_LHS_IC_1050 |  | Casting - LHS P30-P31 | 20d | 2026-01-27 | 2026-02-18 | C_WV_LHS_IC_1200, D_MB_SS_1070 | 344d | 0d | Monsoon Calendar |  |
| C_SAV_LHS_IC_1060 |  | Casting - LHS P31-P32 | 20d | 2026-01-27 | 2026-02-18 | C_SAV_LHS_IC_1050 SS, D_MB_SS_1070 | 344d | 0d | Monsoon Calendar |  |
| C_SAV_LHS_IC_1070 |  | Casting - LHS P32-P33 | 20d | 2026-02-19 | 2026-03-13 | C_SAV_LHS_IC_1060, D_MB_SS_1070 | 344d | 0d | Monsoon Calendar |  |
| C_SAV_LHS_IC_1080 |  | Casting - LHS P33-P34 | 20d | 2026-02-19 | 2026-03-13 | C_SAV_LHS_IC_1070 SS, D_MB_SS_1070 | 344d | 0d | Monsoon Calendar |  |
| C_SAV_LHS_IC_1090 |  | Casting - LHS P34-P35 | 20d | 2026-03-14 | 2026-04-06 | C_SAV_LHS_IC_1080, D_MB_SS_1070 | 344d | 0d | Monsoon Calendar |  |
| C_SAV_LHS_IC_1100 |  | Casting - LHS P35-A2 | 20d | 2026-03-14 | 2026-04-06 | C_SAV_LHS_IC_1090 SS, D_MB_SS_1070 | 344d | 0d | Monsoon Calendar |  |
|  | 7 | **I-Girder Erection** |  | 2026-04-16 | 2026-05-20 |  |  |  |  |  |
| C_SAV_LHS_IG_1090 |  | Erection - LHS P33-P34 | 5d | 2026-04-16 | 2026-04-21 | C_SAV_LHS_IC_1080 FS+28d, C_SAV_LHS_P33_1030 FS+21d, C_SAV_LHS_P34_1030 FS+21d | 431d | 0d |  |  |
| C_SAV_LHS_IG_1100 |  | Erection - LHS P34-P35 | 5d | 2026-04-16 | 2026-04-21 | C_SAV_LHS_IC_1080 FS+28d, C_SAV_LHS_P34_1030 FS+21d, C_SAV_LHS_P35_1030 FS+21d | 431d | 0d |  |  |
| C_SAV_LHS_IG_1060 |  | Erection - LHS P30-P31 | 5d | 2026-05-04 | 2026-05-08 | C_SAV_LHS_IC_1050 FS+21d, C_SAV_LHS_P31_1030 FS+21d, C_MB_SuS_L_P30_1130 FS+28d | 406d | 0d |  |  |
| C_SAV_LHS_IG_1070 |  | Erection - LHS P31-P32 | 5d | 2026-05-09 | 2026-05-14 | C_SAV_LHS_IC_1060 FS+28d, C_SAV_LHS_P31_1030 FS+21d, C_SAV_LHS_P32_1030 FS+21d, C_SAV_LHS_IG_1060 | 406d | 0d |  |  |
| C_SAV_LHS_IG_1110 |  | Erection - LHS P35-A2 | 5d | 2026-05-09 | 2026-05-14 | C_SAV_LHS_IC_1090 FS+28d, C_SAV_LHS_P35_1030 FS+21d, C_SAV_LHS_A2_1020 FS+21d | 411d | 0d |  |  |
| C_SAV_LHS_IG_1080 |  | Erection - LHS P32-P33 | 5d | 2026-05-15 | 2026-05-20 | C_SAV_LHS_IC_1070 FS+28d, C_SAV_LHS_P32_1030 FS+21d, C_SAV_LHS_P33_1030 FS+21d, C_SAV_LHS_IG_1070 | 406d | 0d |  |  |
|  | 8 | **Deck Slab** |  | 2026-04-30 | 2026-10-08 |  |  |  |  |  |
| C_SAV_LHS_DS_1030 |  | Deck Slab - LHS P33-P34 | 15d | 2026-04-30 | 2026-05-16 | C_SAV_LHS_IG_1090 FS+7d | 431d | 422d |  |  |
| C_SAV_LHS_DS_1040 |  | Deck Slab - LHS P34-P35 | 15d | 2026-04-30 | 2026-05-16 | C_SAV_LHS_IG_1100 FS+7d | 431d | 422d |  |  |
| C_SAV_LHS_DS_1000 |  | Deck Slab - LHS P30-P31 | 15d | 2026-05-18 | 2026-06-03 | C_SAV_LHS_IG_1060 FS+7d | 416d | 407d |  |  |
| C_SAV_LHS_DS_1010 |  | Deck Slab - LHS P31-P32 | 15d | 2026-05-23 | 2026-10-02 | C_SAV_LHS_IG_1070 FS+7d | 411d | 402d |  |  |
| C_SAV_LHS_DS_1050 |  | Deck Slab - LHS P35-A2 | 15d | 2026-05-23 | 2026-10-02 | C_SAV_LHS_IG_1110 FS+7d | 411d | 402d |  |  |
| C_SAV_LHS_DS_1020 |  | Deck Slab - LHS P32-P33 | 15d | 2026-05-29 | 2026-10-08 | C_SAV_LHS_IG_1080 FS+7d | 406d | 397d |  |  |

| ID | WBS | Activity | Duration | Start | Finish | Predecessors | Total float | Free float | Resources |
| --- | --- | --- | --- | --- | --- | --- | --- | --- | --- |
|  | 6 | **RHS** |  | 2025-10-29 | 2026-11-25 |  |  |  |  |
|  | 2 | **P31** |  | 2025-11-10 | 2026-04-03 |  |  |  |  |
| C_SAV_RHS_P31_1000 |  | Well-RHS P31 | 60d | 2025-11-10 | 2026-01-17 | C_SAV_RHS_P32_1040 SS | 395d | 0d |  |
| C_SAV_RHS_P31_1010 |  | Well Cap-RHS P31 | 30d | 2026-01-19 | 2026-02-21 | C_SAV_RHS_P31_1000 | 395d | 0d |  |
| C_SAV_RHS_P31_1020 |  | Pier-RHS P31 | 15d | 2026-02-23 | 2026-03-11 | C_SAV_RHS_P31_1010, D_MB_SuS_1070 | 395d | 0d |  |
| C_SAV_RHS_P31_1030 |  | Pier Cap-RHS P31 | 20d | 2026-03-12 | 2026-04-03 | C_SAV_RHS_P31_1020 | 395d | 29.75d |  |
|  | 1 | **P32** |  | 2025-11-10 | 2026-04-03 |  |  |  |  |
| C_SAV_RHS_P32_1040 |  | Well-RHS P32 | 60d | 2025-11-10 | 2026-01-17 | C_SAV_RHS_A2_1160 | 395d | 0d |  |
| C_SAV_RHS_P32_1050 |  | Well Cap-RHS P32 | 30d | 2026-01-19 | 2026-02-21 | C_SAV_RHS_P32_1040 | 400d | 0d |  |
| C_SAV_RHS_P32_1060 |  | Pier-RHS P32 | 15d | 2026-02-23 | 2026-03-11 | C_SAV_RHS_P32_1050, D_MB_SuS_1070 | 400d | 0d |  |
| C_SAV_RHS_P32_1070 |  | Pier Cap-RHS P32 | 20d | 2026-03-12 | 2026-04-03 | C_SAV_RHS_P32_1060 | 400d | 34.75d |  |
|  | 3 | **P33** |  | 2025-12-03 | 2026-02-10 |  |  |  |  |
| C_SAV_RHS_P33_1080 |  | Pile-RHS P33 | 10d | 2025-12-03 | 2025-12-13 | C_SAV_RHS_P34_1120 | 370d | 0d | Piling Rig 1 [160 h] |
| C_SAV_RHS_P33_1090 |  | Pile Cap-RHS P33 | 15d | 2025-12-15 | 2025-12-31 | C_SAV_RHS_P33_1080 | 450d | 0d |  |
| C_SAV_RHS_P33_1100 |  | Pier-RHS P33 | 15d | 2026-01-01 | 2026-01-17 | C_SAV_RHS_P33_1090, D_MB_SuS_1070 | 450d | 0d |  |
| C_SAV_RHS_P33_1110 |  | Pier Cap-RHS P33 | 20d | 2026-01-19 | 2026-02-10 | C_SAV_RHS_P33_1100 | 450d | 84.75d |  |
|  | 4 | **P34** |  | 2025-11-21 | 2026-01-29 |  |  |  |  |
| C_SAV_RHS_P34_1120 |  | Pile-RHS P34 | 10d | 2025-11-21 | 2025-12-02 | C_SAV_RHS_P35_1000 | 370d | 0d | Piling Rig 1 [160 h] |
| C_SAV_RHS_P34_1130 |  | Pile Cap-RHS P34 | 15d | 2025-12-03 | 2025-12-19 | C_SAV_RHS_P34_1120 | 465d | 0d |  |
| C_SAV_RHS_P34_1140 |  | Pier-RHS P34 | 15d | 2025-12-20 | 2026-01-06 | C_SAV_RHS_P34_1130, D_MB_SuS_1070 | 465d | 0d |  |
| C_SAV_RHS_P34_1150 |  | Pier Cap-RHS P34 | 20d | 2026-01-07 | 2026-01-29 | C_SAV_RHS_P34_1140 | 465d | 99.75d |  |
|  | 6 | **P35** |  | 2025-11-10 | 2026-01-17 |  |  |  |  |
| C_SAV_RHS_P35_1000 |  | Pile-RHS P35 | 10d | 2025-11-10 | 2025-11-20 | C_SAV_RHS_A2_1160 | 370d | 0d | Piling Rig 1 [160 h] |
| C_SAV_RHS_P35_1010 |  | Pile Cap-RHS P35 | 15d | 2025-11-21 | 2025-12-08 | C_SAV_RHS_P35_1000 | 480d | 0d |  |
| C_SAV_RHS_P35_1020 |  | Pier-RHS P35 | 15d | 2025-12-09 | 2025-12-25 | C_SAV_RHS_P35_1010, D_MB_SuS_1070 | 480d | 0d |  |
| C_SAV_RHS_P35_1030 |  | Pier Cap-RHS P35 | 20d | 2025-12-26 | 2026-01-17 | C_SAV_RHS_P35_1020 | 480d | 114.75d |  |

| ID | WBS | Activity | Duration | Start | Finish | Predecessors | Total float | Free float | Calendar | Resources |
| --- | --- | --- | --- | --- | --- | --- | --- | --- | --- | --- |
|  | 5 | **A2** |  | 2025-10-29 | 2026-01-06 |  |  |  |  |  |
| C_SAV_RHS_A2_1160 |  | Pile-RHS A2 | 10d | 2025-10-29 | 2025-11-08 | SI_1030, D_MB_F_1070, C_SAV_LHS_A2_1000 | 370d | 0d |  | Piling Rig 1 [160 h] |
| C_SAV_RHS_A2_1170 |  | Pile Cap-RHS A2 | 15d | 2025-11-10 | 2025-11-26 | C_SAV_RHS_A2_1160 | 530d | 0d |  |  |
| C_SAV_RHS_A2_1180 |  | Abutment-RHS A2 | 15d | 2025-11-27 | 2025-12-13 | C_SAV_RHS_A2_1170 | 558d | 0d |  |  |
| C_SAV_RHS_A2_1190 |  | Dirt Wall-RHS A2 | 20d | 2025-12-15 | 2026-01-06 | C_SAV_RHS_A2_1180 | 558d |  |  |  |
|  | 9 | **I-Girder Casting** |  | 2026-04-07 | 2026-06-30 |  |  |  |  |  |
| C_SAV_RHS_IC_1000 |  | Casting - RHS P30-P31 | 20d | 2026-04-07 | 2026-04-29 | C_SAV_LHS_IC_1100, D_MB_SS_1070 | 344d | 0d | Monsoon Calendar |  |
| C_SAV_RHS_IC_1010 |  | Casting - RHS P31-P32 | 20d | 2026-04-07 | 2026-04-29 | C_SAV_RHS_IC_1000 SS, D_MB_SS_1070 | 344d | 0d | Monsoon Calendar |  |
| C_SAV_RHS_IC_1020 |  | Casting - RHS P32-P33 | 20d | 2026-04-30 | 2026-05-22 | C_SAV_RHS_IC_1010, D_MB_SS_1070 | 344d | 0d | Monsoon Calendar |  |
| C_SAV_RHS_IC_1030 |  | Casting - RHS P33-P34 | 20d | 2026-04-30 | 2026-05-22 | C_SAV_RHS_IC_1020 SS, D_MB_SS_1070 | 344d | 0d | Monsoon Calendar |  |
| C_SAV_RHS_IC_1040 |  | Casting - RHS P34-P35 | 20d | 2026-05-23 | 2026-06-30 | C_SAV_RHS_IC_1030, D_MB_SS_1070 | 344d | 0d | Monsoon Calendar |  |
| C_SAV_RHS_IC_1050 |  | Casting - RHS P35-A2 | 20d | 2026-05-23 | 2026-06-30 | C_SAV_RHS_IC_1040 SS, D_MB_SS_1070 | 344d | 0d | Monsoon Calendar |  |
|  | 7 | **I-Girder Erection** |  | 2026-06-02 | 2026-10-30 |  |  |  |  |  |
| C_SAV_RHS_IG_1000 |  | Erection - RHS P30-P31 | 5d | 2026-06-02 | 2026-10-01 | C_SAV_RHS_IC_1000 FS+28d, C_SAV_RHS_P31_1030 FS+21d, C_MB_SuS_L_P30_1130 | 365.25d | 0d |  |  |
| C_SAV_RHS_IG_1010 |  | Erection - RHS P31-P32 | 5d | 2026-10-01 | 2026-10-07 | C_SAV_RHS_IC_1010 FS+28d, C_SAV_RHS_P31_1030 FS+21d, C_SAV_RHS_P32_1070 FS+21d, C_SAV_RHS_IG_1000 | 365.25d | 0d |  |  |
| C_SAV_RHS_IG_1020 |  | Erection - RHS P32-P33 | 5d | 2026-10-07 | 2026-10-13 | C_SAV_RHS_IC_1020 FS+28d, C_SAV_RHS_P32_1070 FS+21d, C_SAV_RHS_P33_1110 FS+21d, C_SAV_RHS_IG_1010 | 365.25d | 0d |  |  |
| C_SAV_RHS_IG_1030 |  | Erection - RHS P33-P34 | 5d | 2026-10-13 | 2026-10-19 | C_SAV_RHS_P33_1110 FS+21d, C_SAV_RHS_P34_1150 FS+21d, C_SAV_RHS_IG_1020, C_SAV_RHS_IC_1030 FS+28d | 365.25d | 0d |  |  |
| C_SAV_RHS_IG_1040 |  | Erection - RHS P34-P35 | 5d | 2026-10-19 | 2026-10-24 | C_SAV_RHS_IC_1040 FS+28d, C_SAV_RHS_P34_1150 FS+21d, C_SAV_RHS_P35_1030 FS+21d, C_SAV_RHS_IG_1030 | 365.25d | 0d |  |  |
| C_SAV_RHS_IG_1050 |  | Erection - RHS P35-A2 | 5d | 2026-10-24 | 2026-10-30 | C_SAV_RHS_IC_1050 FS+28d, C_SAV_RHS_P35_1030 FS+21d, C_SAV_RHS_A2_1170 FS+21d, C_SAV_RHS_IG_1040 | 365.25d | 0d |  |  |
|  | 8 | **Deck Slab** |  | 2026-10-09 | 2026-11-25 |  |  |  |  |  |
| C_SAV_RHS_DS_1000 |  | Deck Slab - RHS P30-P31 | 15d | 2026-10-09 | 2026-10-27 | C_SAV_RHS_IG_1000 FS+7d | 390.25d | 381.25d |  |  |
| C_SAV_RHS_DS_1010 |  | Deck Slab - RHS P31-P32 | 15d | 2026-10-15 | 2026-11-02 | C_SAV_RHS_IG_1010 FS+7d | 385.25d | 376.25d |  |  |
| C_SAV_RHS_DS_1020 |  | Deck Slab - RHS P32-P33 | 15d | 2026-10-21 | 2026-11-07 | C_SAV_RHS_IG_1020 FS+7d | 380.25d | 371.25d |  |  |
| C_SAV_RHS_DS_1030 |  | Deck Slab - RHS P33-P34 | 15d | 2026-10-27 | 2026-11-13 | C_SAV_RHS_IG_1030 FS+7d | 375.25d | 366.25d |  |  |
| C_SAV_RHS_DS_1040 |  | Deck Slab - RHS P34-P35 | 15d | 2026-11-02 | 2026-11-19 | C_SAV_RHS_IG_1040 FS+7d | 370.25d | 361.25d |  |  |
| C_SAV_RHS_DS_1050 |  | Deck Slab - RHS P35-A2 | 15d | 2026-11-07 | 2026-11-25 | C_SAV_RHS_IG_1050 FS+7d | 365.25d | 356.25d |  |  |

| ID | WBS | Activity | Duration | Start | Finish | Predecessors | Total float | Free float | Resources |
| --- | --- | --- | --- | --- | --- | --- | --- | --- | --- |
|  | 5 | **Wetland Viaduct - 1** |  | 2025-02-22 | 2027-10-15 |  |  |  |  |
|  | 1 | **LHS** |  | 2025-02-22 | 2026-10-08 |  |  |  |  |
|  | 1 | **A1** |  | 2025-02-22 | 2025-04-15 |  |  |  |  |
| C_WV_LHS_A1_1000 |  | Viaduct Pile - LHS A1 | 10d | 2025-02-22 | 2025-03-05 | D_WV_F_1030, A1220, A1210, SI_1030 | 171d | 0d | Piling Rig 2 [200 h] |
| C_WV_LHS_A1_1010 |  | Viaduct Abutment Cap - LHS A1 | 25d | 2025-03-06 | 2025-04-03 | C_WV_LHS_A1_1000 | 599d | 0d |  |
| C_WV_LHS_A1_1020 |  | Viaduct Abutment Dirt Wall - LHS A1 | 10d | 2025-04-04 | 2025-04-15 | C_WV_LHS_A1_1010 | 599d | 19d |  |
|  | 2 | **P1** |  | 2025-03-06 | 2025-05-14 |  |  |  |  |
| C_WV_LHS_P1_1000 |  | Viaduct Pile - LHS P1 | 10d | 2025-03-06 | 2025-03-17 | C_WV_LHS_A1_1000 | 171d | 0d | Piling Rig 2 [160 h] |
| C_WV_LHS_P1_1010 |  | Viaduct Pile Cap - LHS P1 | 15d | 2025-03-18 | 2025-04-03 | C_WV_LHS_P1_1000 | 580d | 0d |  |
| C_WV_LHS_P1_1020 |  | Viaduct Pier - LHS P1 | 15d | 2025-04-04 | 2025-04-21 | C_WV_LHS_P1_1010, D_WV_SuS_1030 | 580d | 0d |  |
| C_WV_LHS_P1_1030 |  | Viaduct Pier Cap - LHS P1 | 20d | 2025-04-22 | 2025-05-14 | C_WV_LHS_P1_1020 | 580d | 0d |  |
|  | 3 | **P2** |  | 2025-03-18 | 2025-05-26 |  |  |  |  |
| C_WV_LHS_P2_1000 |  | Viaduct Pile - LHS P2 | 10d | 2025-03-18 | 2025-03-28 | C_WV_LHS_P1_1000 | 171d | 0d | Piling Rig 2 [160 h] |
| C_WV_LHS_P2_1010 |  | Viaduct Pile Cap - LHS P2 | 15d | 2025-03-29 | 2025-04-15 | C_WV_LHS_P2_1000 | 571d | 0d |  |
| C_WV_LHS_P2_1020 |  | Viaduct Pier - LHS P2 | 15d | 2025-04-16 | 2025-05-02 | C_WV_LHS_P2_1010, D_WV_SuS_1030 | 571d | 0d |  |
| C_WV_LHS_P2_1030 |  | Viaduct Pier Cap - LHS P2 | 20d | 2025-05-03 | 2025-05-26 | C_WV_LHS_P2_1020 | 571d | 0d |  |
|  | 4 | **P3** |  | 2025-03-29 | 2025-06-05 |  |  |  |  |
| C_WV_LHS_P3_1000 |  | Viaduct Pile - LHS P3 | 10d | 2025-03-29 | 2025-04-09 | C_WV_LHS_P2_1000 | 171d | 0d | Piling Rig 2 [160 h] |
| C_WV_LHS_P3_1010 |  | Viaduct Pile Cap - LHS P3 | 15d | 2025-04-10 | 2025-04-26 | C_WV_LHS_P3_1000 | 561d | 0d |  |
| C_WV_LHS_P3_1020 |  | Viaduct Pier - LHS P3 | 15d | 2025-04-28 | 2025-05-14 | C_WV_LHS_P3_1010, D_WV_SuS_1030 | 561d | 0d |  |
| C_WV_LHS_P3_1030 |  | Viaduct Pier Cap - LHS P3 | 20d | 2025-05-15 | 2025-06-05 | C_WV_LHS_P3_1020 | 561d | 0d |  |
|  | 5 | **P4** |  | 2025-04-10 | 2025-10-09 |  |  |  |  |
| C_WV_LHS_P4_1000 |  | Viaduct Pile - LHS P4 | 10d | 2025-04-10 | 2025-04-21 | C_WV_LHS_P3_1000 | 171d | 0d | Piling Rig 2 [160 h] |
| C_WV_LHS_P4_1010 |  | Viaduct Pile Cap - LHS P4 | 15d | 2025-04-22 | 2025-05-08 | C_WV_LHS_P4_1000 | 551d | 0d |  |
| C_WV_LHS_P4_1020 |  | Viaduct Pier - LHS P4 | 15d | 2025-05-09 | 2025-05-26 | C_WV_LHS_P4_1010, D_WV_SuS_1030 | 551d | 0d |  |
| C_WV_LHS_P4_1030 |  | Viaduct Pier Cap - LHS P4 | 20d | 2025-05-27 | 2025-10-09 | C_WV_LHS_P4_1020 | 551d | 0d |  |

| ID | WBS | Activity | Duration | Start | Finish | Predecessors | Total float | Free float | Resources |
| --- | --- | --- | --- | --- | --- | --- | --- | --- | --- |
|  | 6 | **P5** |  | 2025-04-22 | 2025-10-21 |  |  |  |  |
| C_WV_LHS_P5_1000 |  | Viaduct Pile - LHS P5 | 10d | 2025-04-22 | 2025-05-02 | C_WV_LHS_P4_1000 | 171d | 0d | Piling Rig 2 [160 h] |
| C_WV_LHS_P5_1010 |  | Viaduct Pile Cap - LHS P5 | 15d | 2025-05-03 | 2025-05-20 | C_WV_LHS_P5_1000 | 541d | 0d |  |
| C_WV_LHS_P5_1020 |  | Viaduct Pier - LHS P5 | 15d | 2025-05-21 | 2025-06-05 | C_WV_LHS_P5_1010, D_WV_SuS_1030 | 541d | 0d |  |
| C_WV_LHS_P5_1030 |  | Viaduct Pier Cap - LHS P5 | 20d | 2025-06-06 | 2025-10-21 | C_WV_LHS_P5_1020 | 541d | 0d |  |
|  | 7 | **P6** |  | 2025-05-03 | 2025-11-01 |  |  |  |  |
| C_WV_LHS_P6_1000 |  | Viaduct Pile - LHS P6 | 10d | 2025-05-03 | 2025-05-14 | C_WV_LHS_P5_1000 | 171d | 0d | Piling Rig 2 [160 h] |
| C_WV_LHS_P6_1010 |  | Viaduct Pile Cap - LHS P6 | 15d | 2025-05-15 | 2025-05-31 | C_WV_LHS_P6_1000 | 531d | 0d |  |
| C_WV_LHS_P6_1020 |  | Viaduct Pier - LHS P6 | 15d | 2025-06-01 | 2025-10-09 | C_WV_LHS_P6_1010, D_WV_SuS_1030 | 531d | 0d |  |
| C_WV_LHS_P6_1030 |  | Viaduct Pier Cap - LHS P6 | 20d | 2025-10-10 | 2025-11-01 | C_WV_LHS_P6_1020 | 531d | 0d |  |
|  | 8 | **P7** |  | 2025-05-15 | 2025-11-13 |  |  |  |  |
| C_WV_LHS_P7_1000 |  | Viaduct Pile - LHS P7 | 10d | 2025-05-15 | 2025-05-26 | C_WV_LHS_P6_1000 | 171d | 0d | Piling Rig 2 [160 h] |
| C_WV_LHS_P7_1010 |  | Viaduct Pile Cap - LHS P7 | 15d | 2025-05-27 | 2025-10-03 | C_WV_LHS_P7_1000 | 521d | 0d |  |
| C_WV_LHS_P7_1020 |  | Viaduct Pier - LHS P7 | 15d | 2025-10-04 | 2025-10-21 | C_WV_LHS_P7_1010, D_WV_SuS_1030 | 521d | 0d |  |
| C_WV_LHS_P7_1030 |  | Viaduct Pier Cap - LHS P7 | 20d | 2025-10-22 | 2025-11-13 | C_WV_LHS_P7_1020 | 521d | 0d |  |
|  | 9 | **P8** |  | 2025-05-27 | 2025-11-25 |  |  |  |  |
| C_WV_LHS_P8_1000 |  | Viaduct Pile - LHS P8 | 10d | 2025-05-27 | 2025-06-05 | C_WV_LHS_P7_1000 | 171d | 0d | Piling Rig 2 [160 h] |
| C_WV_LHS_P8_1010 |  | Viaduct Pile Cap - LHS P8 | 15d | 2025-06-06 | 2025-10-15 | C_WV_LHS_P8_1000 | 511d | 0d |  |
| C_WV_LHS_P8_1020 |  | Viaduct Pier - LHS P8 | 15d | 2025-10-16 | 2025-11-01 | C_WV_LHS_P8_1010, D_WV_SuS_1030 | 511d | 0d |  |
| C_WV_LHS_P8_1030 |  | Viaduct Pier Cap - LHS P8 | 20d | 2025-11-03 | 2025-11-25 | C_WV_LHS_P8_1020 | 511d | 0d |  |
|  | 10 | **P9** |  | 2025-06-06 | 2025-12-06 |  |  |  |  |
| C_WV_LHS_P9_1000 |  | Viaduct Pile - LHS P9 | 10d | 2025-06-06 | 2025-10-09 | C_WV_LHS_P8_1000 | 171d | 0d | Piling Rig 2 [160 h] |
| C_WV_LHS_P9_1010 |  | Viaduct Pile Cap - LHS P9 | 15d | 2025-10-10 | 2025-10-27 | C_WV_LHS_P9_1000 | 501d | 0d |  |
| C_WV_LHS_P9_1020 |  | Viaduct Pier - LHS P9 | 15d | 2025-10-28 | 2025-11-13 | C_WV_LHS_P9_1010, D_WV_SuS_1030 | 501d | 0d |  |
| C_WV_LHS_P9_1030 |  | Viaduct Pier Cap - LHS P9 | 20d | 2025-11-14 | 2025-12-06 | C_WV_LHS_P9_1020 | 501d | 0d |  |

| ID | WBS | Activity | Duration | Start | Finish | Predecessors | Total float | Free float | Resources |
| --- | --- | --- | --- | --- | --- | --- | --- | --- | --- |
|  | 11 | **P10** |  | 2025-10-10 | 2025-12-18 |  |  |  |  |
| C_WV_LHS_P10_1000 |  | Viaduct Pile - LHS P10 | 10d | 2025-10-10 | 2025-10-21 | C_WV_LHS_P9_1000 | 171d | 0d | Piling Rig 2 [160 h] |
| C_WV_LHS_P10_1010 |  | Viaduct Pile Cap - LHS P10 | 15d | 2025-10-22 | 2025-11-07 | C_WV_LHS_P10_1000 | 491d | 0d |  |
| C_WV_LHS_P10_1020 |  | Viaduct Pier - LHS P10 | 15d | 2025-11-08 | 2025-11-25 | C_WV_LHS_P10_1010, D_WV_SuS_1030 | 491d | 0d |  |
| C_WV_LHS_P10_1030 |  | Viaduct Pier Cap - LHS P10 | 20d | 2025-11-26 | 2025-12-18 | C_WV_LHS_P10_1020 | 491d | 0d |  |
|  | 12 | **P11** |  | 2025-10-22 | 2025-12-30 |  |  |  |  |
| C_WV_LHS_P11_1000 |  | Viaduct Pile - LHS P11 | 10d | 2025-10-22 | 2025-11-01 | C_WV_LHS_P10_1000 | 171d | 0d | Piling Rig 2 [160 h] |
| C_WV_LHS_P11_1010 |  | Viaduct Pile Cap - LHS P11 | 15d | 2025-11-03 | 2025-11-19 | C_WV_LHS_P11_1000 | 481d | 0d |  |
| C_WV_LHS_P11_1020 |  | Viaduct Pier - LHS P11 | 15d | 2025-11-20 | 2025-12-06 | C_WV_LHS_P11_1010, D_WV_SuS_1030 | 481d | 0d |  |
| C_WV_LHS_P11_1030 |  | Viaduct Pier Cap - LHS P11 | 20d | 2025-12-08 | 2025-12-30 | C_WV_LHS_P11_1020 | 481d | 0d |  |
|  | 13 | **P12** |  | 2025-11-03 | 2026-01-10 |  |  |  |  |
| C_WV_LHS_P12_1000 |  | Viaduct Pile - LHS P12 | 10d | 2025-11-03 | 2025-11-13 | C_WV_LHS_P11_1000 | 171d | 0d | Piling Rig 2 [160 h] |
| C_WV_LHS_P12_1010 |  | Viaduct Pile Cap - LHS P12 | 15d | 2025-11-14 | 2025-12-01 | C_WV_LHS_P12_1000 | 471d | 0d |  |
| C_WV_LHS_P12_1020 |  | Viaduct Pier - LHS P12 | 15d | 2025-12-02 | 2025-12-18 | C_WV_LHS_P12_1010, D_WV_SuS_1030 | 471d | 0d |  |
| C_WV_LHS_P12_1030 |  | Viaduct Pier Cap - LHS P12 | 20d | 2025-12-19 | 2026-01-10 | C_WV_LHS_P12_1020 | 471d | 0d |  |
|  | 14 | **P13** |  | 2025-11-14 | 2026-01-22 |  |  |  |  |
| C_WV_LHS_P13_1000 |  | Viaduct Pile - LHS P13 | 10d | 2025-11-14 | 2025-11-25 | C_WV_LHS_P12_1000 | 171d | 0d | Piling Rig 2 [160 h] |
| C_WV_LHS_P13_1010 |  | Viaduct Pile Cap - LHS P13 | 15d | 2025-11-26 | 2025-12-12 | C_WV_LHS_P13_1000 | 461d | 0d |  |
| C_WV_LHS_P13_1020 |  | Viaduct Pier - LHS P13 | 15d | 2025-12-13 | 2025-12-30 | C_WV_LHS_P13_1010, D_WV_SuS_1030 | 461d | 0d |  |
| C_WV_LHS_P13_1030 |  | Viaduct Pier Cap - LHS P13 | 20d | 2025-12-31 | 2026-01-22 | C_WV_LHS_P13_1020 | 461d | 0d |  |
|  | 15 | **P14** |  | 2025-11-26 | 2026-02-03 |  |  |  |  |
| C_WV_LHS_P14_1000 |  | Viaduct Pile - LHS P14 | 10d | 2025-11-26 | 2025-12-06 | C_WV_LHS_P13_1000 | 171d | 0d | Piling Rig 2 [160 h] |
| C_WV_LHS_P14_1010 |  | Viaduct Pile Cap - LHS P14 | 15d | 2025-12-08 | 2025-12-24 | C_WV_LHS_P14_1000 | 451d | 0d |  |
| C_WV_LHS_P14_1020 |  | Viaduct Pier - LHS P14 | 15d | 2025-12-25 | 2026-01-10 | C_WV_LHS_P14_1010, D_WV_SuS_1030 | 451d | 0d |  |
| C_WV_LHS_P14_1030 |  | Viaduct Pier Cap - LHS P14 | 20d | 2026-01-12 | 2026-02-03 | C_WV_LHS_P14_1020 | 451d | 0d |  |

| ID | WBS | Activity | Duration | Start | Finish | Predecessors | Total float | Free float | Resources |
| --- | --- | --- | --- | --- | --- | --- | --- | --- | --- |
|  | 16 | **P15** |  | 2025-12-08 | 2026-02-14 |  |  |  |  |
| C_WV_LHS_P15_1000 |  | Viaduct Pile - LHS P15 | 10d | 2025-12-08 | 2025-12-18 | C_WV_LHS_P14_1000 | 171d | 0d | Piling Rig 2 [160 h] |
| C_WV_LHS_P15_1010 |  | Viaduct Pile Cap - LHS P15 | 15d | 2025-12-19 | 2026-01-05 | C_WV_LHS_P15_1000 | 441d | 0d |  |
| C_WV_LHS_P15_1020 |  | Viaduct Pier - LHS P15 | 15d | 2026-01-06 | 2026-01-22 | C_WV_LHS_P15_1010, D_WV_SuS_1030 | 441d | 0d |  |
| C_WV_LHS_P15_1030 |  | Viaduct Pier Cap - LHS P15 | 20d | 2026-01-23 | 2026-02-14 | C_WV_LHS_P15_1020 | 441d | 0d |  |
|  | 17 | **P16** |  | 2025-12-19 | 2026-02-26 |  |  |  |  |
| C_WV_LHS_P16_1000 |  | Viaduct Pile - LHS P16 | 10d | 2025-12-19 | 2025-12-30 | C_WV_LHS_P15_1000 | 171d | 0d | Piling Rig 2 [160 h] |
| C_WV_LHS_P16_1010 |  | Viaduct Pile Cap - LHS P16 | 15d | 2025-12-31 | 2026-01-16 | C_WV_LHS_P16_1000 | 431d | 0d |  |
| C_WV_LHS_P16_1020 |  | Viaduct Pier - LHS P16 | 15d | 2026-01-17 | 2026-02-03 | C_WV_LHS_P16_1010, D_WV_SuS_1030 | 431d | 0d |  |
| C_WV_LHS_P16_1030 |  | Viaduct Pier Cap - LHS P16 | 20d | 2026-02-04 | 2026-02-26 | C_WV_LHS_P16_1020 | 431d | 0d |  |
|  | 18 | **P17** |  | 2025-12-31 | 2026-03-10 |  |  |  |  |
| C_WV_LHS_P17_1000 |  | Viaduct Pile - LHS P17 | 10d | 2025-12-31 | 2026-01-10 | C_WV_LHS_P16_1000 | 171d | 0d | Piling Rig 2 [160 h] |
| C_WV_LHS_P17_1010 |  | Viaduct Pile Cap - LHS P17 | 15d | 2026-01-12 | 2026-01-28 | C_WV_LHS_P17_1000 | 421d | 0d |  |
| C_WV_LHS_P17_1020 |  | Viaduct Pier - LHS P17 | 15d | 2026-01-29 | 2026-02-14 | C_WV_LHS_P17_1010, D_WV_SuS_1030 | 421d | 0d |  |
| C_WV_LHS_P17_1030 |  | Viaduct Pier Cap - LHS P17 | 20d | 2026-02-16 | 2026-03-10 | C_WV_LHS_P17_1020 | 421d | 0d |  |
|  | 19 | **P18** |  | 2026-01-12 | 2026-03-21 |  |  |  |  |
| C_WV_LHS_P18_1000 |  | Viaduct Pile - LHS P18 | 10d | 2026-01-12 | 2026-01-22 | C_WV_LHS_P17_1000 | 171d | 0d | Piling Rig 2 [160 h] |
| C_WV_LHS_P18_1010 |  | Viaduct Pile Cap - LHS P18 | 15d | 2026-01-23 | 2026-02-09 | C_WV_LHS_P18_1000 | 411d | 0d |  |
| C_WV_LHS_P18_1020 |  | Viaduct Pier - LHS P18 | 15d | 2026-02-10 | 2026-02-26 | C_WV_LHS_P18_1010, D_WV_SuS_1030 | 411d | 0d |  |
| C_WV_LHS_P18_1030 |  | Viaduct Pier Cap - LHS P18 | 20d | 2026-02-27 | 2026-03-21 | C_WV_LHS_P18_1020 | 411d | 0d |  |
|  | 20 | **P19** |  | 2026-01-23 | 2026-04-02 |  |  |  |  |
| C_WV_LHS_P19_1000 |  | Viaduct Pile - LHS P19 | 10d | 2026-01-23 | 2026-02-03 | C_WV_LHS_P18_1000 | 171d | 0d | Piling Rig 2 [160 h] |
| C_WV_LHS_P19_1010 |  | Viaduct Pile Cap - LHS P19 | 15d | 2026-02-04 | 2026-02-20 | C_WV_LHS_P19_1000 | 401d | 0d |  |
| C_WV_LHS_P19_1020 |  | Viaduct Pier - LHS P19 | 15d | 2026-02-21 | 2026-03-10 | C_WV_LHS_P19_1010, D_WV_SuS_1030 | 401d | 0d |  |
| C_WV_LHS_P19_1030 |  | Viaduct Pier Cap - LHS P19 | 20d | 2026-03-11 | 2026-04-02 | C_WV_LHS_P19_1020 | 401d | 0d |  |

| ID | WBS | Activity | Duration | Start | Finish | Predecessors | Total float | Free float | Calendar | Resources |
| --- | --- | --- | --- | --- | --- | --- | --- | --- | --- | --- |
|  | 21 | **P20** |  | 2026-02-04 | 2026-04-14 |  |  |  |  |  |
| C_WV_LHS_P20_1000 |  | Viaduct Pile - LHS P20 | 10d | 2026-02-04 | 2026-02-14 | C_WV_LHS_P19_1000 | 171d | 0d |  | Piling Rig 2 [160 h] |
| C_WV_LHS_P20_1010 |  | Viaduct Pile Cap - LHS P20 | 15d | 2026-02-16 | 2026-03-04 | C_WV_LHS_P20_1000 | 391d | 0d |  |  |
| C_WV_LHS_P20_1020 |  | Viaduct Pier - LHS P20 | 15d | 2026-03-05 | 2026-03-21 | C_WV_LHS_P20_1010, D_WV_SuS_1030 | 391d | 0d |  |  |
| C_WV_LHS_P20_1030 |  | Viaduct Pier Cap - LHS P20 | 20d | 2026-03-23 | 2026-04-14 | C_WV_LHS_P20_1020 | 391d | 0d |  |  |
|  | 22 | **A2** |  | 2026-02-16 | 2026-04-14 |  |  |  |  |  |
| C_WV_LHS_A2_1000 |  | Viaduct Pile - LHS A2 | 10d | 2026-02-16 | 2026-02-26 | C_WV_LHS_P20_1000 | 171d | 0d |  | Piling Rig 2 [200 h] |
| C_WV_LHS_A2_1010 |  | Viaduct Abutment Cap - LHS A2 | 25d | 2026-02-27 | 2026-03-27 | C_WV_LHS_A2_1000 | 391d | 0d |  |  |
| C_WV_LHS_A2_1020 |  | Viaduct Abutment Dirt Wall - LHS A2 | 15d | 2026-03-28 | 2026-04-14 | C_WV_LHS_A2_1010 | 391d | 0d |  |  |
|  | 23 | **I-Girder Casting** |  | 2025-03-04 | 2026-01-26 |  |  |  |  |  |
| C_WV_LHS_IC_1000 |  | WV Casting - LHS A1-P1 | 30d | 2025-03-04 | 2025-04-07 | C_SE_1050, C_SE_1040 FS+30d, D_WV_SS_1030 | 344d | 0d | Monsoon Calendar |  |
| C_WV_LHS_IC_1010 |  | WV Casting - LHS P1-P2 | 30d | 2025-03-04 | 2025-04-07 | C_WV_LHS_IC_1000 SS | 344d | 0d | Monsoon Calendar |  |
| C_WV_LHS_IC_1020 |  | WV Casting - LHS P2-P3 | 20d | 2025-04-08 | 2025-04-30 | C_WV_LHS_IC_1010 | 344d | 0d | Monsoon Calendar |  |
| C_WV_LHS_IC_1030 |  | WV Casting - LHS P3-P4 | 20d | 2025-04-08 | 2025-04-30 | C_WV_LHS_IC_1020 SS | 344d | 0d | Monsoon Calendar |  |
| C_WV_LHS_IC_1040 |  | WV Casting - LHS P4-P5 | 20d | 2025-05-01 | 2025-05-23 | C_WV_LHS_IC_1030 | 344d | 0d | Monsoon Calendar |  |
| C_WV_LHS_IC_1050 |  | WV Casting - LHS P5-P6 | 20d | 2025-05-01 | 2025-05-23 | C_WV_LHS_IC_1040 SS | 344d | 0d | Monsoon Calendar |  |
| C_WV_LHS_IC_1060 |  | WV Casting - LHS P6-P7 | 20d | 2025-05-24 | 2025-07-01 | C_WV_LHS_IC_1050 | 344d | 0d | Monsoon Calendar |  |
| C_WV_LHS_IC_1070 |  | WV Casting - LHS P7-P8 | 20d | 2025-05-24 | 2025-07-01 | C_WV_LHS_IC_1060 SS | 344d | 0d | Monsoon Calendar |  |
| C_WV_LHS_IC_1080 |  | WV Casting - LHS P8-P9 | 20d | 2025-07-02 | 2025-08-16 | C_WV_LHS_IC_1070 | 344d | 0d | Monsoon Calendar |  |
| C_WV_LHS_IC_1090 |  | WV Casting - LHS P9-P10 | 20d | 2025-07-02 | 2025-08-16 | C_WV_LHS_IC_1080 SS | 344d | 0d | Monsoon Calendar |  |
| C_WV_LHS_IC_1100 |  | WV Casting - LHS P10-P11 | 20d | 2025-08-18 | 2025-10-01 | C_WV_LHS_IC_1090 | 344d | 0d | Monsoon Calendar |  |
| C_WV_LHS_IC_1110 |  | WV Casting - LHS P11-P12 | 20d | 2025-08-18 | 2025-10-01 | C_WV_LHS_IC_1100 SS | 344d | 0d | Monsoon Calendar |  |
| C_WV_LHS_IC_1120 |  | WV Casting - LHS P12-P13 | 20d | 2025-10-02 | 2025-10-24 | C_WV_LHS_IC_1110 | 344d | 0d | Monsoon Calendar |  |
| C_WV_LHS_IC_1130 |  | WV Casting - LHS P13-P14 | 20d | 2025-10-02 | 2025-10-24 | C_WV_LHS_IC_1120 SS | 344d | 0d | Monsoon Calendar |  |
| C_WV_LHS_IC_1140 |  | WV Casting - LHS P14-P15 | 20d | 2025-10-25 | 2025-11-17 | C_WV_LHS_IC_1130 | 344d | 0d | Monsoon Calendar |  |
| C_WV_LHS_IC_1150 |  | WV Casting - LHS P15-P16 | 20d | 2025-10-25 | 2025-11-17 | C_WV_LHS_IC_1140 SS | 344d | 0d | Monsoon Calendar |  |
| C_WV_LHS_IC_1160 |  | WV Casting - LHS P16-P17 | 20d | 2025-11-18 | 2025-12-10 | C_WV_LHS_IC_1150 | 344d | 0d | Monsoon Calendar |  |
| C_WV_LHS_IC_1170 |  | WV Casting - LHS P17-P18 | 20d | 2025-11-18 | 2025-12-10 | C_WV_LHS_IC_1160 SS | 344d | 0d | Monsoon Calendar |  |
| C_WV_LHS_IC_1180 |  | WV Casting - LHS P18-P19 | 20d | 2025-12-11 | 2026-01-02 | C_WV_LHS_IC_1170 | 344d | 0d | Monsoon Calendar |  |
| C_WV_LHS_IC_1190 |  | WV Casting - LHS P19-P20 | 20d | 2025-12-11 | 2026-01-02 | C_WV_LHS_IC_1180 SS | 344d | 0d | Monsoon Calendar |  |
| C_WV_LHS_IC_1200 |  | WV Casting - LHS P20-A2 | 20d | 2026-01-03 | 2026-01-26 | C_WV_LHS_IC_1190 | 344d | 0d | Monsoon Calendar |  |

| ID | WBS | Activity | Duration | Start | Finish | Predecessors | Total float | Free float |
| --- | --- | --- | --- | --- | --- | --- | --- | --- |
|  | 24 | **I-Girder Erection** |  | 2025-10-01 | 2026-05-14 |  |  |  |
| C_WV_LHS_IG_1000 |  | WV Erection - LHS A1-P1 | 5d | 2025-10-01 | 2025-10-06 | C_WV_LHS_IC_1000 FS+21d, C_WV_LHS_A1_1020 FS+28d, C_WV_LHS_P1_1030 FS+22d | 580d | 0d |
| C_WV_LHS_IG_1010 |  | WV Erection - LHS P1-P2 | 5d | 2025-10-11 | 2025-10-16 | C_WV_LHS_IC_1010 FS+28d, C_WV_LHS_P1_1030 FS+21d, C_WV_LHS_P2_1030 FS+21d | 571d | 0d |
| C_WV_LHS_IG_1020 |  | WV Erection - LHS P2-P3 | 5d | 2025-10-23 | 2025-10-28 | C_WV_LHS_IC_1020 FS+28d, C_WV_LHS_P2_1030 FS+21d, C_WV_LHS_P3_1030 FS+21d | 561d | 0d |
| C_WV_LHS_IG_1030 |  | WV Erection - LHS P3-P4 | 5d | 2025-11-04 | 2025-11-08 | C_WV_LHS_IC_1030 FS+28d, C_WV_LHS_P3_1030 FS+21d, C_WV_LHS_P4_1030 FS+21d | 551d | 0d |
| C_WV_LHS_IG_1040 |  | WV Erection - LHS P4-P5 | 5d | 2025-11-15 | 2025-11-20 | C_WV_LHS_IC_1040 FS+28d, C_WV_LHS_P4_1030 FS+21d, C_WV_LHS_P5_1030 FS+21d | 541d | 0d |
| C_WV_LHS_IG_1050 |  | WV Erection - LHS P5-P6 | 5d | 2025-11-27 | 2025-12-02 | C_WV_LHS_IC_1050 FS+28d, C_WV_LHS_P5_1030 FS+21d, C_WV_LHS_P6_1030 FS+21d | 531d | 0d |
| C_WV_LHS_IG_1060 |  | WV Erection - LHS P6-P7 | 5d | 2025-12-09 | 2025-12-13 | C_WV_LHS_IC_1060 FS+28d, C_WV_LHS_P6_1030 FS+21d, C_WV_LHS_P7_1030 FS+21d | 521d | 0d |
| C_WV_LHS_IG_1070 |  | WV Erection - LHS P7-P8 | 5d | 2025-12-20 | 2025-12-25 | C_WV_LHS_IC_1070 FS+28d, C_WV_LHS_P7_1030 FS+21d, C_WV_LHS_P8_1030 FS+21d | 511d | 0d |
| C_WV_LHS_IG_1080 |  | WV Erection - LHS P8-P9 | 5d | 2026-01-01 | 2026-01-06 | C_WV_LHS_IC_1080 FS+28d, C_WV_LHS_P8_1030 FS+21d, C_WV_LHS_P9_1030 FS+21d | 501d | 0d |
| C_WV_LHS_IG_1090 |  | WV Erection - LHS P9-P10 | 5d | 2026-01-13 | 2026-01-17 | C_WV_LHS_IC_1090 FS+28d, C_WV_LHS_P9_1030 FS+21d, C_WV_LHS_P10_1030 FS+21d | 491d | 0d |
| C_WV_LHS_IG_1100 |  | WV Erection - LHS P10-P11 | 5d | 2026-01-24 | 2026-01-29 | C_WV_LHS_IC_1100 FS+28d, C_WV_LHS_P10_1030 FS+21d, C_WV_LHS_P11_1030 FS+21d | 481d | 0d |
| C_WV_LHS_IG_1110 |  | WV Erection - LHS P11-P12 | 5d | 2026-02-05 | 2026-02-10 | C_WV_LHS_IC_1110 FS+28d, C_WV_LHS_P11_1030 FS+21d, C_WV_LHS_P12_1030 FS+21d | 471d | 0d |
| C_WV_LHS_IG_1120 |  | WV Erection - LHS P12-P13 | 5d | 2026-02-17 | 2026-02-21 | C_WV_LHS_IC_1120 FS+28d, C_WV_LHS_P12_1030 FS+21d, C_WV_LHS_P13_1030 FS+21d | 461d | 0d |
| C_WV_LHS_IG_1130 |  | WV Erection - LHS P13-P14 | 5d | 2026-02-28 | 2026-03-05 | C_WV_LHS_IC_1130 FS+28d, C_WV_LHS_P13_1030 FS+21d, C_WV_LHS_P14_1030 FS+21d | 451d | 0d |
| C_WV_LHS_IG_1140 |  | WV Erection - LHS P14-P15 | 5d | 2026-03-12 | 2026-03-17 | C_WV_LHS_IC_1140 FS+28d, C_WV_LHS_P14_1030 FS+21d, C_WV_LHS_P15_1030 FS+21d | 441d | 0d |
| C_WV_LHS_IG_1150 |  | WV Erection - LHS P15-P16 | 5d | 2026-03-24 | 2026-03-28 | C_WV_LHS_IC_1150 FS+28d, C_WV_LHS_P15_1030 FS+21d, C_WV_LHS_P16_1030 FS+21d | 431d | 0d |
| C_WV_LHS_IG_1160 |  | WV Erection - LHS P16-P17 | 5d | 2026-04-04 | 2026-04-09 | C_WV_LHS_IC_1160 FS+28d, C_WV_LHS_P16_1030 FS+21d, C_WV_LHS_P17_1030 FS+21d | 421d | 0d |
| C_WV_LHS_IG_1170 |  | WV Erection - LHS P17-P18 | 5d | 2026-04-16 | 2026-04-21 | C_WV_LHS_IC_1170 FS+28d, C_WV_LHS_P17_1030 FS+21d, C_WV_LHS_P18_1030 FS+21d | 411d | 0d |
| C_WV_LHS_IG_1180 |  | WV Erection - LHS P18-P19 | 5d | 2026-04-28 | 2026-05-02 | C_WV_LHS_IC_1180 FS+28d, C_WV_LHS_P18_1030 FS+21d, C_WV_LHS_P19_1030 FS+21d | 401d | 0d |
| C_WV_LHS_IG_1190 |  | WV Erection - LHS P19-P20 | 5d | 2026-05-09 | 2026-05-14 | C_WV_LHS_IC_1190 FS+28d, C_WV_LHS_P19_1030 FS+21d, C_WV_LHS_P20_1030 FS+21d | 391d | 0d |
| C_WV_LHS_IG_1200 |  | WV Erection - LHS P20-A2 | 5d | 2026-05-09 | 2026-05-14 | C_WV_LHS_IC_1200 FS+28d, C_WV_LHS_P20_1030 FS+21d, C_WV_LHS_A2_1020 FS+21d | 391d | 0d |
|  | 25 | **Deck Slab** |  | 2025-10-15 | 2026-10-08 |  |  |  |
| C_WV_LHS_DS_1000 |  | WV Deck Slab - LHS A1-P1 | 20d | 2025-10-15 | 2025-11-06 | C_WV_LHS_IG_1000 FS+7d | 580d | 571d |
| C_WV_LHS_DS_1010 |  | WV Deck Slab - LHS P1-P2 | 20d | 2025-10-25 | 2025-11-17 | C_WV_LHS_IG_1010 FS+7d | 571d | 562d |
| C_WV_LHS_DS_1020 |  | WV Deck Slab - LHS P2-P3 | 20d | 2025-11-06 | 2025-11-28 | C_WV_LHS_IG_1020 FS+7d | 561d | 552d |
| C_WV_LHS_DS_1030 |  | WV Deck Slab - LHS P3-P4 | 20d | 2025-11-18 | 2025-12-10 | C_WV_LHS_IG_1030 FS+7d | 551d | 542d |
| C_WV_LHS_DS_1040 |  | WV Deck Slab - LHS P4-P5 | 20d | 2025-11-29 | 2025-12-22 | C_WV_LHS_IG_1040 FS+7d | 541d | 532d |
| C_WV_LHS_DS_1050 |  | WV Deck Slab - LHS P5-P6 | 20d | 2025-12-11 | 2026-01-02 | C_WV_LHS_IG_1050 FS+7d | 531d | 522d |
| C_WV_LHS_DS_1060 |  | WV Deck Slab - LHS P6-P7 | 20d | 2025-12-23 | 2026-01-14 | C_WV_LHS_IG_1060 FS+7d | 521d | 512d |
| C_WV_LHS_DS_1070 |  | WV Deck Slab - LHS P7-P8 | 20d | 2026-01-03 | 2026-01-26 | C_WV_LHS_IG_1070 FS+7d | 511d | 502d |
| C_WV_LHS_DS_1080 |  | WV Deck Slab - LHS P8-P9 | 20d | 2026-01-15 | 2026-02-06 | C_WV_LHS_IG_1080 FS+7d | 501d | 492d |
| C_WV_LHS_DS_1090 |  | WV Deck Slab - LHS P9-P10 | 20d | 2026-01-27 | 2026-02-18 | C_WV_LHS_IG_1090 FS+7d | 491d | 482d |
| C_WV_LHS_DS_1100 |  | WV Deck Slab - LHS P10-P11 | 20d | 2026-02-07 | 2026-03-02 | C_WV_LHS_IG_1100 FS+7d | 481d | 472d |
| C_WV_LHS_DS_1110 |  | WV Deck Slab - LHS P11-P12 | 20d | 2026-02-19 | 2026-03-13 | C_WV_LHS_IG_1110 FS+7d | 471d | 462d |
| C_WV_LHS_DS_1120 |  | WV Deck Slab - LHS P12-P13 | 20d | 2026-03-03 | 2026-03-25 | C_WV_LHS_IG_1120 FS+7d | 461d | 452d |
| C_WV_LHS_DS_1130 |  | WV Deck Slab - LHS P13-P14 | 20d | 2026-03-14 | 2026-04-06 | C_WV_LHS_IG_1130 FS+7d | 451d | 442d |
| C_WV_LHS_DS_1140 |  | WV Deck Slab - LHS P14-P15 | 20d | 2026-03-26 | 2026-04-17 | C_WV_LHS_IG_1140 FS+7d | 441d | 432d |
| C_WV_LHS_DS_1150 |  | WV Deck Slab - LHS P15-P16 | 20d | 2026-04-07 | 2026-04-29 | C_WV_LHS_IG_1150 FS+7d | 431d | 422d |
| C_WV_LHS_DS_1160 |  | WV Deck Slab - LHS P16-P17 | 20d | 2026-04-18 | 2026-05-11 | C_WV_LHS_IG_1160 FS+7d | 421d | 412d |
| C_WV_LHS_DS_1170 |  | WV Deck Slab - LHS P17-P18 | 20d | 2026-04-30 | 2026-05-22 | C_WV_LHS_IG_1170 FS+7d | 411d | 402d |
| C_WV_LHS_DS_1180 |  | WV Deck Slab - LHS P18-P19 | 20d | 2026-05-12 | 2026-06-03 | C_WV_LHS_IG_1180 FS+7d | 401d | 392d |
| C_WV_LHS_DS_1190 |  | WV Deck Slab - LHS P19-P20 | 20d | 2026-05-23 | 2026-10-08 | C_WV_LHS_IG_1190 FS+7d | 391d | 382d |
| C_WV_LHS_DS_1200 |  | WV Deck Slab - LHS P20-A2 | 20d | 2026-05-23 | 2026-10-08 | C_WV_LHS_IG_1200 FS+7d | 391d | 382d |

| ID | WBS | Activity | Duration | Start | Finish | Predecessors | Total float | Free float | Resources |
| --- | --- | --- | --- | --- | --- | --- | --- | --- | --- |
|  | 23 | **RHS** |  | 2025-03-04 | 2027-10-15 |  |  |  |  |
|  | 1 | **A1** |  | 2027-02-23 | 2027-04-21 |  |  |  |  |
| C_WV_RHS_A1_1000 |  | Viaduct Pile - RHS A1 | 10d | 2027-02-23 | 2027-03-05 | C_WV_RHS_P1_1030 | 179d | 0d | Piling Rig 2 [80 h] |
| C_WV_RHS_A1_1010 |  | Viaduct Abutment Cap - RHS A1 | 25d | 2027-03-06 | 2027-04-03 | C_WV_RHS_A1_1000 | 179d | 0d |  |
| C_WV_RHS_A1_1020 |  | Viaduct Abutment Dirt Wall - RHS A1 | 15d | 2027-04-05 | 2027-04-21 | C_WV_RHS_A1_1010 | 224d | 215d |  |
|  | 2 | **P1** |  | 2027-02-11 | 2027-04-21 |  |  |  |  |
| C_WV_RHS_P1_1030 |  | Viaduct Pile - RHS P1 | 10d | 2027-02-11 | 2027-02-22 | C_WV_RHS_P2_1070 | 171d | 0d | Piling Rig 2 [80 h] |
| C_WV_RHS_P1_1040 |  | Viaduct Pile Cap - RHS P1 | 15d | 2027-02-23 | 2027-03-11 | C_WV_RHS_P1_1030 | 171d | 0d |  |
| C_WV_RHS_P1_1050 |  | Viaduct Pier - RHS P1 | 15d | 2027-03-12 | 2027-03-29 | C_WV_RHS_P1_1040 | 171d | 0d |  |
| C_WV_RHS_P1_1060 |  | Viaduct Pier Cap - RHS P1 | 20d | 2027-03-30 | 2027-04-21 | C_WV_RHS_P1_1050 | 171d | 0d |  |
|  | 3 | **P2** |  | 2027-01-30 | 2027-04-09 |  |  |  |  |
| C_WV_RHS_P2_1070 |  | Viaduct Pile - RHS P2 | 10d | 2027-01-30 | 2027-02-10 | C_WV_RHS_P3_1110 | 171d | 0d | Piling Rig 2 [80 h] |
| C_WV_RHS_P2_1080 |  | Viaduct Pile Cap - RHS P2 | 15d | 2027-02-11 | 2027-02-27 | C_WV_RHS_P2_1070 | 181d | 0d |  |
| C_WV_RHS_P2_1090 |  | Viaduct Pier - RHS P2 | 15d | 2027-03-01 | 2027-03-17 | C_WV_RHS_P2_1080 | 181d | 0d |  |
| C_WV_RHS_P2_1100 |  | Viaduct Pier Cap - RHS P2 | 20d | 2027-03-18 | 2027-04-09 | C_WV_RHS_P2_1090 | 181d | 0d |  |
|  | 4 | **P3** |  | 2027-01-19 | 2027-03-29 |  |  |  |  |
| C_WV_RHS_P3_1110 |  | Viaduct Pile - RHS P3 | 10d | 2027-01-19 | 2027-01-29 | C_WV_RHS_P4_1150 | 171d | 0d | Piling Rig 2 [80 h] |
| C_WV_RHS_P3_1120 |  | Viaduct Pile Cap - RHS P3 | 15d | 2027-01-30 | 2027-02-16 | C_WV_RHS_P3_1110 | 191d | 0d |  |
| C_WV_RHS_P3_1130 |  | Viaduct Pier - RHS P3 | 15d | 2027-02-17 | 2027-03-05 | C_WV_RHS_P3_1120 | 191d | 0d |  |
| C_WV_RHS_P3_1140 |  | Viaduct Pier Cap - RHS P3 | 20d | 2027-03-06 | 2027-03-29 | C_WV_RHS_P3_1130 | 191d | 0d |  |
|  | 5 | **P4** |  | 2027-01-07 | 2027-03-17 |  |  |  |  |
| C_WV_RHS_P4_1150 |  | Viaduct Pile - RHS P4 | 10d | 2027-01-07 | 2027-01-18 | C_WV_RHS_P5_1190 | 171d | 0d | Piling Rig 2 [80 h] |
| C_WV_RHS_P4_1160 |  | Viaduct Pile Cap - RHS P4 | 15d | 2027-01-19 | 2027-02-04 | C_WV_RHS_P4_1150 | 201d | 0d |  |
| C_WV_RHS_P4_1170 |  | Viaduct Pier - RHS P4 | 15d | 2027-02-05 | 2027-02-22 | C_WV_RHS_P4_1160 | 201d | 0d |  |
| C_WV_RHS_P4_1180 |  | Viaduct Pier Cap - RHS P4 | 20d | 2027-02-23 | 2027-03-17 | C_WV_RHS_P4_1170 | 201d | 0d |  |

| ID | WBS | Activity | Duration | Start | Finish | Predecessors | Total float | Free float | Resources |
| --- | --- | --- | --- | --- | --- | --- | --- | --- | --- |
|  | 6 | **P5** |  | 2026-12-26 | 2027-03-05 |  |  |  |  |
| C_WV_RHS_P5_1190 |  | Viaduct Pile - RHS P5 | 10d | 2026-12-26 | 2027-01-06 | C_WV_RHS_P6_1230 | 171d | 0d | Piling Rig 2 [80 h] |
| C_WV_RHS_P5_1200 |  | Viaduct Pile Cap - RHS P5 | 15d | 2027-01-07 | 2027-01-23 | C_WV_RHS_P5_1190 | 211d | 0d |  |
| C_WV_RHS_P5_1210 |  | Viaduct Pier - RHS P5 | 15d | 2027-01-25 | 2027-02-10 | C_WV_RHS_P5_1200 | 211d | 0d |  |
| C_WV_RHS_P5_1220 |  | Viaduct Pier Cap - RHS P5 | 20d | 2027-02-11 | 2027-03-05 | C_WV_RHS_P5_1210 | 211d | 0d |  |
|  | 7 | **P6** |  | 2026-12-15 | 2027-02-22 |  |  |  |  |
| C_WV_RHS_P6_1230 |  | Viaduct Pile - RHS P6 | 10d | 2026-12-15 | 2026-12-25 | C_WV_RHS_P7_1270 | 171d | 0d | Piling Rig 2 [80 h] |
| C_WV_RHS_P6_1240 |  | Viaduct Pile Cap - RHS P6 | 15d | 2026-12-26 | 2027-01-12 | C_WV_RHS_P6_1230 | 221d | 0d |  |
| C_WV_RHS_P6_1250 |  | Viaduct Pier - RHS P6 | 15d | 2027-01-13 | 2027-01-29 | C_WV_RHS_P6_1240 | 221d | 0d |  |
| C_WV_RHS_P6_1260 |  | Viaduct Pier Cap - RHS P6 | 20d | 2027-01-30 | 2027-02-22 | C_WV_RHS_P6_1250 | 221d | 0d |  |
|  | 8 | **P7** |  | 2026-12-03 | 2027-02-10 |  |  |  |  |
| C_WV_RHS_P7_1270 |  | Viaduct Pile - RHS P7 | 10d | 2026-12-03 | 2026-12-14 | C_WV_RHS_P8_1310 | 171d | 0d | Piling Rig 2 [80 h] |
| C_WV_RHS_P7_1280 |  | Viaduct Pile Cap - RHS P7 | 15d | 2026-12-15 | 2026-12-31 | C_WV_RHS_P7_1270 | 231d | 0d |  |
| C_WV_RHS_P7_1290 |  | Viaduct Pier - RHS P7 | 15d | 2027-01-01 | 2027-01-18 | C_WV_RHS_P7_1280 | 231d | 0d |  |
| C_WV_RHS_P7_1300 |  | Viaduct Pier Cap - RHS P7 | 20d | 2027-01-19 | 2027-02-10 | C_WV_RHS_P7_1290 | 231d | 0d |  |
|  | 9 | **P8** |  | 2026-11-21 | 2027-01-29 |  |  |  |  |
| C_WV_RHS_P8_1310 |  | Viaduct Pile - RHS P8 | 10d | 2026-11-21 | 2026-12-02 | C_WV_RHS_P9_1350 | 171d | 0d | Piling Rig 2 [80 h] |
| C_WV_RHS_P8_1320 |  | Viaduct Pile Cap - RHS P8 | 15d | 2026-12-03 | 2026-12-19 | C_WV_RHS_P8_1310 | 241d | 0d |  |
| C_WV_RHS_P8_1330 |  | Viaduct Pier - RHS P8 | 15d | 2026-12-21 | 2027-01-06 | C_WV_RHS_P8_1320 | 241d | 0d |  |
| C_WV_RHS_P8_1340 |  | Viaduct Pier Cap - RHS P8 | 20d | 2027-01-07 | 2027-01-29 | C_WV_RHS_P8_1330 | 241d | 0d |  |
|  | 10 | **P9** |  | 2026-11-10 | 2027-01-18 |  |  |  |  |
| C_WV_RHS_P9_1350 |  | Viaduct Pile - RHS P9 | 10d | 2026-11-10 | 2026-11-20 | C_WV_RHS_P10_1390 | 171d | 0d | Piling Rig 2 [80 h] |
| C_WV_RHS_P9_1360 |  | Viaduct Pile Cap - RHS P9 | 15d | 2026-11-21 | 2026-12-08 | C_WV_RHS_P9_1350 | 251d | 0d |  |
| C_WV_RHS_P9_1370 |  | Viaduct Pier - RHS P9 | 15d | 2026-12-09 | 2026-12-25 | C_WV_RHS_P9_1360 | 251d | 0d |  |
| C_WV_RHS_P9_1380 |  | Viaduct Pier Cap - RHS P9 | 20d | 2026-12-26 | 2027-01-18 | C_WV_RHS_P9_1370 | 251d | 0d |  |

| ID | WBS | Activity | Duration | Start | Finish | Predecessors | Total float | Free float | Resources |
| --- | --- | --- | --- | --- | --- | --- | --- | --- | --- |
|  | 11 | **P10** |  | 2026-10-29 | 2027-01-06 |  |  |  |  |
| C_WV_RHS_P10_1390 |  | Viaduct Pile - RHS P10 | 10d | 2026-10-29 | 2026-11-09 | C_WV_RHS_P11_1430 | 171d | 0d | Piling Rig 2 [80 h] |
| C_WV_RHS_P10_1400 |  | Viaduct Pile Cap - RHS P10 | 15d | 2026-11-10 | 2026-11-26 | C_WV_RHS_P10_1390 | 261d | 0d |  |
| C_WV_RHS_P10_1410 |  | Viaduct Pier - RHS P10 | 15d | 2026-11-27 | 2026-12-14 | C_WV_RHS_P10_1400 | 261d | 0d |  |
| C_WV_RHS_P10_1420 |  | Viaduct Pier Cap - RHS P10 | 20d | 2026-12-15 | 2027-01-06 | C_WV_RHS_P10_1410 | 261d | 0d |  |
|  | 12 | **P11** |  | 2026-10-17 | 2026-12-25 |  |  |  |  |
| C_WV_RHS_P11_1430 |  | Viaduct Pile - RHS P11 | 10d | 2026-10-17 | 2026-10-28 | C_WV_RHS_P12_1470 | 171d | 0d | Piling Rig 2 [80 h] |
| C_WV_RHS_P11_1440 |  | Viaduct Pile Cap - RHS P11 | 15d | 2026-10-29 | 2026-11-14 | C_WV_RHS_P11_1430 | 271d | 0d |  |
| C_WV_RHS_P11_1450 |  | Viaduct Pier - RHS P11 | 15d | 2026-11-16 | 2026-12-02 | C_WV_RHS_P11_1440 | 271d | 0d |  |
| C_WV_RHS_P11_1460 |  | Viaduct Pier Cap - RHS P11 | 20d | 2026-12-03 | 2026-12-25 | C_WV_RHS_P11_1450 | 271d | 0d |  |
|  | 13 | **P12** |  | 2026-10-06 | 2026-12-14 |  |  |  |  |
| C_WV_RHS_P12_1470 |  | Viaduct Pile - RHS P12 | 10d | 2026-10-06 | 2026-10-16 | C_WV_RHS_P13_1510 | 171d | 0d | Piling Rig 2 [80 h] |
| C_WV_RHS_P12_1480 |  | Viaduct Pile Cap - RHS P12 | 15d | 2026-10-17 | 2026-11-03 | C_WV_RHS_P12_1470 | 281d | 0d |  |
| C_WV_RHS_P12_1490 |  | Viaduct Pier - RHS P12 | 15d | 2026-11-04 | 2026-11-20 | C_WV_RHS_P12_1480 | 281d | 0d |  |
| C_WV_RHS_P12_1500 |  | Viaduct Pier Cap - RHS P12 | 20d | 2026-11-21 | 2026-12-14 | C_WV_RHS_P12_1490 | 281d | 0d |  |
|  | 14 | **P13** |  | 2026-06-01 | 2026-12-02 |  |  |  |  |
| C_WV_RHS_P13_1510 |  | Viaduct Pile - RHS P13 | 10d | 2026-06-01 | 2026-10-05 | C_WV_RHS_P14_1550 | 171d | 0d | Piling Rig 2 [80 h] |
| C_WV_RHS_P13_1520 |  | Viaduct Pile Cap - RHS P13 | 15d | 2026-10-06 | 2026-10-22 | C_WV_RHS_P13_1510 | 291d | 0d |  |
| C_WV_RHS_P13_1530 |  | Viaduct Pier - RHS P13 | 15d | 2026-10-23 | 2026-11-09 | C_WV_RHS_P13_1520 | 291d | 0d |  |
| C_WV_RHS_P13_1540 |  | Viaduct Pier Cap - RHS P13 | 20d | 2026-11-10 | 2026-12-02 | C_WV_RHS_P13_1530 | 291d | 0d |  |
|  | 15 | **P14** |  | 2026-05-20 | 2026-11-20 |  |  |  |  |
| C_WV_RHS_P14_1550 |  | Viaduct Pile - RHS P14 | 10d | 2026-05-20 | 2026-05-30 | C_WV_RHS_P15_1590 | 171d | 0d | Piling Rig 2 [80 h] |
| C_WV_RHS_P14_1560 |  | Viaduct Pile Cap - RHS P14 | 15d | 2026-06-01 | 2026-10-10 | C_WV_RHS_P14_1550 | 301d | 0d |  |
| C_WV_RHS_P14_1570 |  | Viaduct Pier - RHS P14 | 15d | 2026-10-12 | 2026-10-28 | C_WV_RHS_P14_1560 | 301d | 0d |  |
| C_WV_RHS_P14_1580 |  | Viaduct Pier Cap - RHS P14 | 20d | 2026-10-29 | 2026-11-20 | C_WV_RHS_P14_1570 | 301d | 0d |  |

| ID | WBS | Activity | Duration | Start | Finish | Predecessors | Total float | Free float | Resources |
| --- | --- | --- | --- | --- | --- | --- | --- | --- | --- |
|  | 16 | **P15** |  | 2026-05-08 | 2026-11-09 |  |  |  |  |
| C_WV_RHS_P15_1590 |  | Viaduct Pile - RHS P15 | 10d | 2026-05-08 | 2026-05-19 | C_WV_RHS_P16_1630 | 171d | 0d | Piling Rig 2 [80 h] |
| C_WV_RHS_P15_1600 |  | Viaduct Pile Cap - RHS P15 | 15d | 2026-05-20 | 2026-06-05 | C_WV_RHS_P15_1590 | 311d | 0d |  |
| C_WV_RHS_P15_1610 |  | Viaduct Pier - RHS P15 | 15d | 2026-06-06 | 2026-10-16 | C_WV_RHS_P15_1600 | 311d | 0d |  |
| C_WV_RHS_P15_1620 |  | Viaduct Pier Cap - RHS P15 | 20d | 2026-10-17 | 2026-11-09 | C_WV_RHS_P15_1610 | 311d | 0d |  |
|  | 17 | **P16** |  | 2026-04-27 | 2026-10-28 |  |  |  |  |
| C_WV_RHS_P16_1630 |  | Viaduct Pile - RHS P16 | 10d | 2026-04-27 | 2026-05-07 | C_WV_RHS_P17_1670 | 171d | 0d | Piling Rig 2 [80 h] |
| C_WV_RHS_P16_1640 |  | Viaduct Pile Cap - RHS P16 | 15d | 2026-05-08 | 2026-05-25 | C_WV_RHS_P16_1630 | 321d | 0d |  |
| C_WV_RHS_P16_1650 |  | Viaduct Pier - RHS P16 | 15d | 2026-05-26 | 2026-10-05 | C_WV_RHS_P16_1640 | 321d | 0d |  |
| C_WV_RHS_P16_1660 |  | Viaduct Pier Cap - RHS P16 | 20d | 2026-10-06 | 2026-10-28 | C_WV_RHS_P16_1650 | 321d | 0d |  |
|  | 18 | **P17** |  | 2026-04-15 | 2026-10-16 |  |  |  |  |
| C_WV_RHS_P17_1670 |  | Viaduct Pile - RHS P17 | 10d | 2026-04-15 | 2026-04-25 | C_WV_RHS_P18_1710 | 171d | 0d | Piling Rig 2 [80 h] |
| C_WV_RHS_P17_1680 |  | Viaduct Pile Cap - RHS P17 | 15d | 2026-04-27 | 2026-05-13 | C_WV_RHS_P17_1670 | 331d | 0d |  |
| C_WV_RHS_P17_1690 |  | Viaduct Pier - RHS P17 | 15d | 2026-05-14 | 2026-05-30 | C_WV_RHS_P17_1680 | 331d | 0d |  |
| C_WV_RHS_P17_1700 |  | Viaduct Pier Cap - RHS P17 | 20d | 2026-06-01 | 2026-10-16 | C_WV_RHS_P17_1690 | 331d | 0d |  |
|  | 19 | **P18** |  | 2026-04-03 | 2026-10-05 |  |  |  |  |
| C_WV_RHS_P18_1710 |  | Viaduct Pile - RHS P18 | 10d | 2026-04-03 | 2026-04-14 | C_WV_RHS_P19_1750 | 171d | 0d | Piling Rig 2 [80 h] |
| C_WV_RHS_P18_1720 |  | Viaduct Pile Cap - RHS P18 | 15d | 2026-04-15 | 2026-05-01 | C_WV_RHS_P18_1710 | 341d | 0d |  |
| C_WV_RHS_P18_1730 |  | Viaduct Pier - RHS P18 | 15d | 2026-05-02 | 2026-05-19 | C_WV_RHS_P18_1720 | 341d | 0d |  |
| C_WV_RHS_P18_1740 |  | Viaduct Pier Cap - RHS P18 | 20d | 2026-05-20 | 2026-10-05 | C_WV_RHS_P18_1730 | 341d | 0d |  |
|  | 20 | **P19** |  | 2026-03-23 | 2026-05-30 |  |  |  |  |
| C_WV_RHS_P19_1750 |  | Viaduct Pile - RHS P19 | 10d | 2026-03-23 | 2026-04-02 | C_WV_RHS_P20_1790 | 171d | 0d | Piling Rig 2 [80 h] |
| C_WV_RHS_P19_1760 |  | Viaduct Pile Cap - RHS P19 | 15d | 2026-04-03 | 2026-04-20 | C_WV_RHS_P19_1750 | 351d | 0d |  |
| C_WV_RHS_P19_1770 |  | Viaduct Pier - RHS P19 | 15d | 2026-04-21 | 2026-05-07 | C_WV_RHS_P19_1760 | 351d | 0d |  |
| C_WV_RHS_P19_1780 |  | Viaduct Pier Cap - RHS P19 | 20d | 2026-05-08 | 2026-05-30 | C_WV_RHS_P19_1770 | 351d | 0d |  |

| ID | WBS | Activity | Duration | Start | Finish | Predecessors | Total float | Free float | Calendar | Resources |
| --- | --- | --- | --- | --- | --- | --- | --- | --- | --- | --- |
|  | 21 | **P20** |  | 2026-03-11 | 2026-05-19 |  |  |  |  |  |
| C_WV_RHS_P20_1790 |  | Viaduct Pile - RHS P20 | 10d | 2026-03-11 | 2026-03-21 | C_WV_RHS_A2_1830 | 171d | 0d |  | Piling Rig 2 [80 h] |
| C_WV_RHS_P20_1800 |  | Viaduct Pile Cap - RHS P20 | 15d | 2026-03-23 | 2026-04-08 | C_WV_RHS_P20_1790 | 361d | 0d |  |  |
| C_WV_RHS_P20_1810 |  | Viaduct Pier - RHS P20 | 15d | 2026-04-09 | 2026-04-25 | C_WV_RHS_P20_1800 | 361d | 0d |  |  |
| C_WV_RHS_P20_1820 |  | Viaduct Pier Cap - RHS P20 | 20d | 2026-04-27 | 2026-05-19 | C_WV_RHS_P20_1810 | 361d | 0d |  |  |
|  | 22 | **A2** |  | 2026-02-27 | 2026-04-25 |  |  |  |  |  |
| C_WV_RHS_A2_1830 |  | Viaduct Pile - RHS A2 | 10d | 2026-02-27 | 2026-03-10 | D_WV_F_1030, C_WV_LHS_A2_1000 | 171d | 0d |  | Piling Rig 2 [80 h] |
| C_WV_RHS_A2_1840 |  | Viaduct Abutment Cap - RHS A2 | 25d | 2026-03-11 | 2026-04-08 | C_WV_RHS_A2_1830 | 396d | 0d |  |  |
| C_WV_RHS_A2_1850 |  | Viaduct Abutment Dirt Wall - RHS A2 | 15d | 2026-04-09 | 2026-04-25 | C_WV_RHS_A2_1840 | 434d | 425d |  |  |
|  | 23 | **I-Girder Casting** |  | 2025-03-04 | 2026-01-26 |  |  |  |  |  |
| C_WV_RHS_IC_1000 |  | WV Casting - RHS A1-P1 | 30d | 2025-03-04 | 2025-04-07 | D_WV_SS_1030, C_SE_1040 FS+30d, C_SE_1050 | 544d | 0d | Monsoon Calendar |  |
| C_WV_RHS_IC_1010 |  | WV Casting - RHS P1-P2 | 30d | 2025-03-04 | 2025-04-07 | C_WV_RHS_IC_1000 SS | 544d | 0d | Monsoon Calendar |  |
| C_WV_RHS_IC_1020 |  | WV Casting - RHS P2-P3 | 20d | 2025-04-08 | 2025-04-30 | C_WV_RHS_IC_1010 | 544d | 0d | Monsoon Calendar |  |
| C_WV_RHS_IC_1030 |  | WV Casting - RHS P3-P4 | 20d | 2025-04-08 | 2025-04-30 | C_WV_RHS_IC_1020 SS | 544d | 0d | Monsoon Calendar |  |
| C_WV_RHS_IC_1040 |  | WV Casting - RHS P4-P5 | 20d | 2025-05-01 | 2025-05-23 | C_WV_RHS_IC_1030 | 544d | 0d | Monsoon Calendar |  |
| C_WV_RHS_IC_1050 |  | WV Casting - RHS P5-P6 | 20d | 2025-05-01 | 2025-05-23 | C_WV_RHS_IC_1040 SS | 544d | 0d | Monsoon Calendar |  |
| C_WV_RHS_IC_1060 |  | WV Casting - RHS P6-P7 | 20d | 2025-05-24 | 2025-07-01 | C_WV_RHS_IC_1050 | 544d | 0d | Monsoon Calendar |  |
| C_WV_RHS_IC_1070 |  | WV Casting - RHS P7-P8 | 20d | 2025-05-24 | 2025-07-01 | C_WV_RHS_IC_1060 SS | 544d | 0d | Monsoon Calendar |  |
| C_WV_RHS_IC_1080 |  | WV Casting - RHS P8-P9 | 20d | 2025-07-02 | 2025-08-16 | C_WV_RHS_IC_1070 | 544d | 0d | Monsoon Calendar |  |
| C_WV_RHS_IC_1090 |  | WV Casting - RHS P9-P10 | 20d | 2025-07-02 | 2025-08-16 | C_WV_RHS_IC_1080 SS | 544d | 0d | Monsoon Calendar |  |
| C_WV_RHS_IC_1100 |  | WV Casting - RHS P10-P11 | 20d | 2025-08-18 | 2025-10-01 | C_WV_RHS_IC_1090 | 544d | 0d | Monsoon Calendar |  |
| C_WV_RHS_IC_1110 |  | WV Casting - RHS P11-P12 | 20d | 2025-08-18 | 2025-10-01 | C_WV_RHS_IC_1100 SS | 544d | 0d | Monsoon Calendar |  |
| C_WV_RHS_IC_1120 |  | WV Casting - RHS P12-P13 | 20d | 2025-10-02 | 2025-10-24 | C_WV_RHS_IC_1110 | 544d | 0d | Monsoon Calendar |  |
| C_WV_RHS_IC_1130 |  | WV Casting - RHS P13-P14 | 20d | 2025-10-02 | 2025-10-24 | C_WV_RHS_IC_1120 SS | 544d | 0d | Monsoon Calendar |  |
| C_WV_RHS_IC_1140 |  | WV Casting - RHS P14-P15 | 20d | 2025-10-25 | 2025-11-17 | C_WV_RHS_IC_1130 | 544d | 0d | Monsoon Calendar |  |
| C_WV_RHS_IC_1150 |  | WV Casting - RHS P15-P16 | 20d | 2025-10-25 | 2025-11-17 | C_WV_RHS_IC_1140 SS | 544d | 0d | Monsoon Calendar |  |
| C_WV_RHS_IC_1160 |  | WV Casting - RHS P16-P17 | 20d | 2025-11-18 | 2025-12-10 | C_WV_RHS_IC_1150 | 544d | 0d | Monsoon Calendar |  |
| C_WV_RHS_IC_1170 |  | WV Casting - RHS P17-P18 | 20d | 2025-11-18 | 2025-12-10 | C_WV_RHS_IC_1160 SS | 544d | 0d | Monsoon Calendar |  |
| C_WV_RHS_IC_1180 |  | WV Casting - RHS P18-P19 | 20d | 2025-12-11 | 2026-01-02 | C_WV_RHS_IC_1170 | 544d | 0d | Monsoon Calendar |  |
| C_WV_RHS_IC_1190 |  | WV Casting - RHS P19-P20 | 20d | 2025-12-11 | 2026-01-02 | C_WV_RHS_IC_1180 SS | 544d | 0d | Monsoon Calendar |  |
| C_WV_RHS_IC_1200 |  | WV Casting - RHS P20-A2 | 20d | 2026-01-03 | 2026-01-26 | C_WV_RHS_IC_1190 | 544d | 136.5d | Monsoon Calendar |  |

| ID | WBS | Activity | Duration | Start | Finish | Predecessors | Total float | Free float |
| --- | --- | --- | --- | --- | --- | --- | --- | --- |
|  | 24 | **I-Girder Erection** |  | 2026-10-07 | 2027-05-21 |  |  |  |
| C_WV_RHS_IG_1200 |  | WV Erection - RHS P20-A2 | 5d | 2026-10-07 | 2026-10-12 | C_WV_RHS_IC_1200 FS+28d, C_WV_RHS_P20_1820 FS+21d, C_WV_RHS_A2_1840 FS+21d | 361d | 0d |
| C_WV_RHS_IG_1190 |  | WV Erection - RHS P19-P20 | 5d | 2026-10-19 | 2026-10-23 | C_WV_RHS_IC_1190 FS+28d, C_WV_RHS_P19_1780 FS+21d, C_WV_RHS_P20_1820 FS+21d | 351d | 0d |
| C_WV_RHS_IG_1180 |  | WV Erection - RHS P18-P19 | 5d | 2026-10-30 | 2026-11-04 | C_WV_RHS_IC_1180 FS+28d, C_WV_RHS_P18_1740 FS+21d, C_WV_RHS_P19_1780 FS+21d | 341d | 0d |
| C_WV_RHS_IG_1170 |  | WV Erection - RHS P17-P18 | 5d | 2026-11-11 | 2026-11-16 | C_WV_RHS_IC_1170 FS+28d, C_WV_RHS_P17_1700 FS+21d, C_WV_RHS_P18_1740 FS+21d | 331d | 0d |
| C_WV_RHS_IG_1160 |  | WV Erection - RHS P16-P17 | 5d | 2026-11-23 | 2026-11-27 | C_WV_RHS_IC_1160 FS+28d, C_WV_RHS_P16_1660 FS+21d, C_WV_RHS_P17_1700 FS+21d | 321d | 0d |
| C_WV_RHS_IG_1150 |  | WV Erection - RHS P15-P16 | 5d | 2026-12-04 | 2026-12-09 | C_WV_RHS_IC_1150 FS+28d, C_WV_RHS_P15_1620 FS+21d, C_WV_RHS_P16_1660 FS+21d | 311d | 0d |
| C_WV_RHS_IG_1140 |  | WV Erection - RHS P14-P15 | 5d | 2026-12-16 | 2026-12-21 | C_WV_RHS_IC_1140 FS+28d, C_WV_RHS_P14_1580 FS+21d, C_WV_RHS_P15_1620 FS+21d | 301d | 0d |
| C_WV_RHS_IG_1130 |  | WV Erection - RHS P13-P14 | 5d | 2026-12-28 | 2027-01-01 | C_WV_RHS_IC_1130 FS+28d, C_WV_RHS_P13_1540 FS+21d, C_WV_RHS_P14_1580 FS+21d | 291d | 0d |
| C_WV_RHS_IG_1120 |  | WV Erection - RHS P12-P13 | 5d | 2027-01-08 | 2027-01-13 | C_WV_RHS_IC_1120 FS+28d, C_WV_RHS_P12_1500 FS+21d, C_WV_RHS_P13_1540 FS+21d | 281d | 0d |
| C_WV_RHS_IG_1110 |  | WV Erection - RHS P11-P12 | 5d | 2027-01-20 | 2027-01-25 | C_WV_RHS_IC_1110 FS+28d, C_WV_RHS_P11_1460 FS+21d, C_WV_RHS_P12_1500 FS+21d | 271d | 0d |
| C_WV_RHS_IG_1100 |  | WV Erection - RHS P10-P11 | 5d | 2027-02-01 | 2027-02-05 | C_WV_RHS_IC_1100 FS+28d, C_WV_RHS_P10_1420 FS+21d, C_WV_RHS_P11_1460 FS+21d | 261d | 0d |
| C_WV_RHS_IG_1090 |  | WV Erection - RHS P9-P10 | 5d | 2027-02-12 | 2027-02-17 | C_WV_RHS_IC_1090 FS+28d, C_WV_RHS_P9_1380 FS+21d, C_WV_RHS_P10_1420 FS+21d | 251d | 0d |
| C_WV_RHS_IG_1080 |  | WV Erection - RHS P8-P9 | 5d | 2027-02-24 | 2027-03-01 | C_WV_RHS_IC_1080 FS+28d, C_WV_RHS_P8_1340 FS+21d, C_WV_RHS_P9_1380 FS+21d | 241d | 0d |
| C_WV_RHS_IG_1070 |  | WV Erection - RHS P7-P8 | 5d | 2027-03-08 | 2027-03-12 | C_WV_RHS_IC_1070 FS+28d, C_WV_RHS_P7_1300 FS+21d, C_WV_RHS_P8_1340 FS+21d | 231d | 0d |
| C_WV_RHS_IG_1060 |  | WV Erection - RHS P6-P7 | 5d | 2027-03-19 | 2027-03-24 | C_WV_RHS_IC_1060 FS+28d, C_WV_RHS_P6_1260 FS+21d, C_WV_RHS_P7_1300 FS+21d | 221d | 0d |
| C_WV_RHS_IG_1050 |  | WV Erection - RHS P5-P6 | 5d | 2027-03-31 | 2027-04-05 | C_WV_RHS_IC_1050 FS+28d, C_WV_RHS_P5_1220 FS+21d, C_WV_RHS_P6_1260 FS+21d | 211d | 0d |
| C_WV_RHS_IG_1040 |  | WV Erection - RHS P4-P5 | 5d | 2027-04-12 | 2027-04-16 | C_WV_RHS_IC_1040 FS+28d, C_WV_RHS_P4_1180 FS+21d, C_WV_RHS_P5_1220 FS+21d | 201d | 0d |
| C_WV_RHS_IG_1030 |  | WV Erection - RHS P3-P4 | 5d | 2027-04-23 | 2027-04-28 | C_WV_RHS_IC_1030 FS+28d, C_WV_RHS_P3_1140 FS+21d, C_WV_RHS_P4_1180 FS+21d | 191d | 0d |
| C_WV_RHS_IG_1020 |  | WV Erection - RHS P2-P3 | 5d | 2027-05-05 | 2027-05-10 | C_WV_RHS_IC_1020 FS+28d, C_WV_RHS_P2_1100 FS+21d, C_WV_RHS_P3_1140 FS+21d | 181d | 0d |
| C_WV_RHS_IG_1000 |  | WV Erection - RHS A1-P1 | 5d | 2027-05-17 | 2027-05-21 | C_WV_RHS_IC_1000 FS+21d, C_WV_RHS_A1_1010 FS+28d, C_WV_RHS_P1_1060 FS+21d | 171d | 0d |
| C_WV_RHS_IG_1010 |  | WV Erection - RHS P1-P2 | 5d | 2027-05-17 | 2027-05-21 | C_WV_RHS_IC_1010 FS+28d, C_WV_RHS_P1_1060 FS+21d, C_WV_RHS_P2_1100 FS+21d | 171d | 0d |
|  | 25 | **Deck Slab** |  | 2026-10-21 | 2027-10-15 |  |  |  |
| C_WV_RHS_DS_1200 |  | WV Deck Slab - RHS P20-A2 | 20d | 2026-10-21 | 2026-11-12 | C_WV_RHS_IG_1200 FS+7d | 361d | 352d |
| C_WV_RHS_DS_1190 |  | WV Deck Slab - RHS P19-P20 | 20d | 2026-11-02 | 2026-11-24 | C_WV_RHS_IG_1190 FS+7d | 351d | 342d |
| C_WV_RHS_DS_1180 |  | WV Deck Slab - RHS P18-P19 | 20d | 2026-11-13 | 2026-12-05 | C_WV_RHS_IG_1180 FS+7d | 341d | 332d |
| C_WV_RHS_DS_1170 |  | WV Deck Slab - RHS P17-P18 | 20d | 2026-11-25 | 2026-12-17 | C_WV_RHS_IG_1170 FS+7d | 331d | 322d |
| C_WV_RHS_DS_1160 |  | WV Deck Slab - RHS P16-P17 | 20d | 2026-12-07 | 2026-12-29 | C_WV_RHS_IG_1160 FS+7d | 321d | 312d |
| C_WV_RHS_DS_1150 |  | WV Deck Slab - RHS P15-P16 | 20d | 2026-12-18 | 2027-01-09 | C_WV_RHS_IG_1150 FS+7d | 311d | 302d |
| C_WV_RHS_DS_1140 |  | WV Deck Slab - RHS P14-P15 | 20d | 2026-12-30 | 2027-01-21 | C_WV_RHS_IG_1140 FS+7d | 301d | 292d |
| C_WV_RHS_DS_1130 |  | WV Deck Slab - RHS P13-P14 | 20d | 2027-01-11 | 2027-02-02 | C_WV_RHS_IG_1130 FS+7d | 291d | 282d |
| C_WV_RHS_DS_1120 |  | WV Deck Slab - RHS P12-P13 | 20d | 2027-01-22 | 2027-02-13 | C_WV_RHS_IG_1120 FS+7d | 281d | 272d |
| C_WV_RHS_DS_1110 |  | WV Deck Slab - RHS P11-P12 | 20d | 2027-02-03 | 2027-02-25 | C_WV_RHS_IG_1110 FS+7d | 271d | 262d |
| C_WV_RHS_DS_1100 |  | WV Deck Slab - RHS P10-P11 | 20d | 2027-02-15 | 2027-03-09 | C_WV_RHS_IG_1100 FS+7d | 261d | 252d |
| C_WV_RHS_DS_1090 |  | WV Deck Slab - RHS P9-P10 | 20d | 2027-02-26 | 2027-03-20 | C_WV_RHS_IG_1090 FS+7d | 251d | 242d |
| C_WV_RHS_DS_1080 |  | WV Deck Slab - RHS P8-P9 | 20d | 2027-03-10 | 2027-04-01 | C_WV_RHS_IG_1080 FS+7d | 241d | 232d |
| C_WV_RHS_DS_1070 |  | WV Deck Slab - RHS P7-P8 | 20d | 2027-03-22 | 2027-04-13 | C_WV_RHS_IG_1070 FS+7d | 231d | 222d |
| C_WV_RHS_DS_1060 |  | WV Deck Slab - RHS P6-P7 | 20d | 2027-04-02 | 2027-04-24 | C_WV_RHS_IG_1060 FS+7d | 221d | 212d |
| C_WV_RHS_DS_1050 |  | WV Deck Slab - RHS P5-P6 | 20d | 2027-04-14 | 2027-05-06 | C_WV_RHS_IG_1050 FS+7d | 211d | 202d |
| C_WV_RHS_DS_1040 |  | WV Deck Slab - RHS P4-P5 | 20d | 2027-04-26 | 2027-05-18 | C_WV_RHS_IG_1040 FS+7d | 201d | 192d |
| C_WV_RHS_DS_1030 |  | WV Deck Slab - RHS P3-P4 | 20d | 2027-05-07 | 2027-05-29 | C_WV_RHS_IG_1030 FS+7d | 191d | 182d |
| C_WV_RHS_DS_1020 |  | WV Deck Slab - RHS P2-P3 | 20d | 2027-05-19 | 2027-10-04 | C_WV_RHS_IG_1020 FS+7d | 181d | 172d |
| C_WV_RHS_DS_1000 |  | WV Deck Slab - RHS A1-P1 | 20d | 2027-05-31 | 2027-10-15 | C_WV_RHS_IG_1000 FS+7d | 171d | 162d |
| C_WV_RHS_DS_1010 |  | WV Deck Slab - RHS P1-P2 | 20d | 2027-05-31 | 2027-10-15 | C_WV_RHS_IG_1010 FS+7d | 171d | 162d |

| ID | WBS | Activity | Duration | Start | Finish | Predecessors | Total float | Free float | Calendar | Resources |
| --- | --- | --- | --- | --- | --- | --- | --- | --- | --- | --- |
|  | 9 | **Wetland Viaduct - 2** |  | 2025-12-20 | 2027-01-26 |  |  |  |  |  |
|  | 1 | **LHS** |  | 2025-12-20 | 2026-12-10 |  |  |  |  |  |
|  | 1 | **A1** |  | 2025-12-20 | 2026-02-10 |  |  |  |  |  |
| C_WV2_F_1000 |  | WV2 Pile - LHS A1 | 10d | 2025-12-20 | 2025-12-31 | SI_1030, C_SAV_RHS_P33_1080 FS+5d | 370d | 0d |  | Piling Rig 1 [80 h] |
| C_WV2_F_1010 |  | WV2 Abutment Cap - LHS A1 | 25d | 2026-01-01 | 2026-01-29 | C_WV2_F_1000 | 438d | 0d |  |  |
| C_WV2_F_1020 |  | WV2 Abutment Dirt Wall - LHS A1 | 10d | 2026-01-30 | 2026-02-10 | C_WV2_F_1010 | 438d | 73.5d |  |  |
|  | 2 | **P1** |  | 2026-01-01 | 2026-03-11 |  |  |  |  |  |
| C_WV2_F_1030 |  | WV2 Pile - LHS P1 | 10d | 2026-01-01 | 2026-01-12 | C_WV2_F_1000 | 370d | 0d |  | Piling Rig 1 [80 h] |
| C_WV2_F_1040 |  | WV2 Pile Cap - LHS P1 | 15d | 2026-01-13 | 2026-01-29 | C_WV2_F_1030 | 420d | 0d |  |  |
| C_WV2_F_1050 |  | WV2 Pier - LHS P1 | 15d | 2026-01-30 | 2026-02-16 | C_WV2_F_1040 | 420d | 0d |  |  |
| C_WV2_F_1060 |  | WV2 Pier Cap - LHS P1 | 20d | 2026-02-17 | 2026-03-11 | C_WV2_F_1050 | 420d | 55.5d |  |  |
|  | 3 | **P2** |  | 2026-01-13 | 2026-03-23 |  |  |  |  |  |
| C_WV2_F_1070 |  | WV2 Pile - LHS P2 | 10d | 2026-01-13 | 2026-01-23 | C_WV2_F_1030 | 370d | 0d |  | Piling Rig 1 [80 h] |
| C_WV2_F_1080 |  | WV2 Pile Cap - LHS P2 | 15d | 2026-01-24 | 2026-02-10 | C_WV2_F_1070 | 410d | 0d |  |  |
| C_WV2_F_1090 |  | WV2 Pier - LHS P2 | 15d | 2026-02-11 | 2026-02-27 | C_WV2_F_1080 | 410d | 0d |  |  |
| C_WV2_F_1100 |  | WV2 Pier Cap - LHS P2 | 20d | 2026-02-28 | 2026-03-23 | C_WV2_F_1090 | 410d | 52.5d |  |  |
|  | 22 | **A2** |  | 2026-01-24 | 2026-03-23 |  |  |  |  |  |
| C_WV2_F_1830 |  | WV2 Pile - LHS A2 | 10d | 2026-01-24 | 2026-02-04 | C_WV2_F_1070 | 370d | 0d |  | Piling Rig 1 [80 h] |
| C_WV2_F_1840 |  | WV2 Abutment Cap - LHS A2 | 25d | 2026-02-05 | 2026-03-05 | C_WV2_F_1830 | 410d | 0d |  |  |
| C_WV2_F_1850 |  | WV2 Abutment Dirt Wall - LHS A2 | 15d | 2026-03-06 | 2026-03-23 | C_WV2_F_1840 | 410d | 72.5d |  |  |
|  | 23 | **I-Girder Casting** |  | 2026-07-01 | 2026-10-01 |  |  |  |  |  |
| C_WV2_F_2720 |  | WV2 Casting - LHS A1-P1 | 20d | 2026-07-01 | 2026-08-15 | C_SAV_RHS_IC_1050 | 344d | 0d | Monsoon Calendar |  |
| C_WV2_F_2730 |  | WV2 Casting - LHS P1-P2 | 20d | 2026-07-01 | 2026-08-15 | C_WV2_F_2720 SS | 344d | 0d | Monsoon Calendar |  |
| C_WV2_F_2920 |  | WV2 Casting - LHS P2-A2 | 20d | 2026-08-17 | 2026-10-01 | C_WV2_F_2730 | 344d | 0d | Monsoon Calendar |  |

| ID | WBS | Activity | Duration | Start | Finish | Predecessors | Total float | Free float | Resources |
| --- | --- | --- | --- | --- | --- | --- | --- | --- | --- |
|  | 24 | **I-Girder Erection** |  | 2026-10-02 | 2026-11-09 |  |  |  |  |
| C_WV2_F_2930 |  | WV2 Erection - LHS A1-P1 | 5d | 2026-10-02 | 2026-10-08 | C_WV2_F_2720 FS+21d, C_WV2_F_1020 FS+28d, C_WV2_F_1060 FS+21d | 364.5d | 0d |  |
| C_WV2_F_2940 |  | WV2 Erection - LHS P1-P2 | 5d | 2026-10-10 | 2026-10-16 | C_WV2_F_2730 FS+28d, C_WV2_F_1060 FS+21d, C_WV2_F_1100 FS+21d | 357.5d | 0d |  |
| C_WV2_F_3130 |  | WV2 Erection - LHS P2-A2 | 5d | 2026-11-03 | 2026-11-09 | C_WV2_F_2920 FS+28d, C_WV2_F_1850 FS+21d | 337.5d | 0d |  |
|  | 25 | **Deck Slab** |  | 2026-10-16 | 2026-12-10 |  |  |  |  |
| C_WV2_F_3140 |  | WV2 Deck Slab - LHS A1-P1 | 20d | 2026-10-16 | 2026-11-09 | C_WV2_F_2930 FS+7d | 364.5d | 355.5d |  |
| C_WV2_F_3150 |  | WV2 Deck Slab - LHS P1-P2 | 20d | 2026-10-24 | 2026-11-17 | C_WV2_F_2940 FS+7d | 357.5d | 348.5d |  |
| C_WV2_F_3340 |  | WV2 Deck Slab - LHS P2-A2 | 20d | 2026-11-17 | 2026-12-10 | C_WV2_F_3130 FS+7d | 337.5d | 328.5d |  |
|  | 23 | **RHS** |  | 2026-02-05 | 2027-01-26 |  |  |  |  |
|  | 1 | **A1** |  | 2026-03-12 | 2026-05-08 |  |  |  |  |
| C_WV2_F_1860 |  | WV2 Pile - RHS A1 | 10d | 2026-03-12 | 2026-03-23 | C_WV2_F_1890 | 378d | 0d | Piling Rig 1 [80 h] |
| C_WV2_F_1870 |  | WV2 Abutment Cap - RHS A1 | 25d | 2026-03-24 | 2026-04-21 | C_WV2_F_1860 | 378d | 0d |  |
| C_WV2_F_1880 |  | WV2 Abutment Dirt Wall - RHS A1 | 15d | 2026-04-22 | 2026-05-08 | C_WV2_F_1870 | 423d | 414d |  |
|  | 2 | **P1** |  | 2026-02-28 | 2026-05-08 |  |  |  |  |
| C_WV2_F_1890 |  | WV2 Pile - RHS P1 | 10d | 2026-02-28 | 2026-03-11 | C_WV2_F_1930 | 370d | 0d | Piling Rig 1 [80 h] |
| C_WV2_F_1900 |  | WV2 Pile Cap - RHS P1 | 15d | 2026-03-12 | 2026-03-28 | C_WV2_F_1890 | 370d | 0d |  |
| C_WV2_F_1910 |  | WV2 Pier - RHS P1 | 15d | 2026-03-30 | 2026-04-15 | C_WV2_F_1900 | 370d | 0d |  |
| C_WV2_F_1920 |  | WV2 Pier Cap - RHS P1 | 20d | 2026-04-16 | 2026-05-08 | C_WV2_F_1910 | 370d | 45.5d |  |
|  | 3 | **P2** |  | 2026-02-17 | 2026-04-27 |  |  |  |  |
| C_WV2_F_1930 |  | WV2 Pile - RHS P2 | 10d | 2026-02-17 | 2026-02-27 | C_WV2_F_2690 | 370d | 0d | Piling Rig 1 [80 h] |
| C_WV2_F_1940 |  | WV2 Pile Cap - RHS P2 | 15d | 2026-02-28 | 2026-03-17 | C_WV2_F_1930 | 380d | 0d |  |
| C_WV2_F_1950 |  | WV2 Pier - RHS P2 | 15d | 2026-03-18 | 2026-04-03 | C_WV2_F_1940 | 380d | 0d |  |
| C_WV2_F_1960 |  | WV2 Pier Cap - RHS P2 | 20d | 2026-04-04 | 2026-04-27 | C_WV2_F_1950 | 380d | 62.5d |  |
|  | 22 | **A2** |  | 2026-02-05 | 2026-04-03 |  |  |  |  |
| C_WV2_F_2690 |  | WV2 Pile - RHS A2 | 10d | 2026-02-05 | 2026-02-16 | C_WV2_F_1830 | 370d | 0d | Piling Rig 1 [80 h] |
| C_WV2_F_2700 |  | WV2 Abutment Cap - RHS A2 | 25d | 2026-02-17 | 2026-03-17 | C_WV2_F_2690 | 415d | 0d |  |
| C_WV2_F_2710 |  | WV2 Abutment Dirt Wall - RHS A2 | 15d | 2026-03-18 | 2026-04-03 | C_WV2_F_2700 | 453d | 444d |  |

| ID | WBS | Activity | Duration | Start | Finish | Predecessors | Total float | Free float | Calendar |
| --- | --- | --- | --- | --- | --- | --- | --- | --- | --- |
|  | 23 | **I-Girder Casting** |  | 2026-10-01 | 2026-11-17 |  |  |  |  |
| C_WV2_F_3350 |  | WV2 Casting - RHS A1-P1 | 20d | 2026-10-01 | 2026-10-24 | C_WV2_F_2920 | 344d | 0d | Monsoon Calendar |
| C_WV2_F_3360 |  | WV2 Casting - RHS P1-P2 | 20d | 2026-10-01 | 2026-10-24 | C_WV2_F_3350 SS | 344d | 0d | Monsoon Calendar |
| C_WV2_F_3550 |  | WV2 Casting - RHS P2-A2 | 20d | 2026-10-24 | 2026-11-17 | C_WV2_F_3360 | 344d | 0d | Monsoon Calendar |
|  | 24 | **I-Girder Erection** |  | 2026-11-18 | 2026-12-25 |  |  |  |  |
| C_WV2_F_3560 |  | WV2 Erection - RHS A1-P1 | 5d | 2026-11-18 | 2026-11-24 | C_WV2_F_3350 FS+21d, C_WV2_F_1870 FS+28d, C_WV2_F_1920 FS+21d | 324.5d | 0d |  |
| C_WV2_F_3570 |  | WV2 Erection - RHS P1-P2 | 5d | 2026-11-26 | 2026-12-02 | C_WV2_F_3360 FS+28d, C_WV2_F_1920 FS+21d, C_WV2_F_1960 FS+21d | 317.5d | 0d |  |
| C_WV2_F_3760 |  | WV2 Erection - RHS P2-A2 | 5d | 2026-12-19 | 2026-12-25 | C_WV2_F_3550 FS+28d, C_WV2_F_2700 FS+21d | 297.5d | 0d |  |
|  | 25 | **Deck Slab** |  | 2026-12-02 | 2027-01-26 |  |  |  |  |
| C_WV2_F_3770 |  | WV2 Deck Slab - RHS A1-P1 | 20d | 2026-12-02 | 2026-12-25 | C_WV2_F_3560 FS+7d | 324.5d | 315.5d |  |
| C_WV2_F_3780 |  | WV2 Deck Slab - RHS P1-P2 | 20d | 2026-12-10 | 2027-01-02 | C_WV2_F_3570 FS+7d | 317.5d | 308.5d |  |
| C_WV2_F_3970 |  | WV2 Deck Slab - RHS P2-A2 | 20d | 2027-01-02 | 2027-01-26 | C_WV2_F_3760 FS+7d | 297.5d | 288.5d |  |
|  | 6 | **At Grade Works** |  | 2024-10-05 | 2027-11-10 |  |  |  |  |
|  | 4 | **Preliminary Works** |  | 2024-10-05 | 2025-02-21 |  |  |  |  |
| A1210 |  | Clearing & Grubbing, identification of borrow area and other approvals | 120d | 2024-10-05 | 2025-02-21 | D_HP_1030, D_HP_1070, D_HP_1110, ROW_1020, ROW_1030 | 39d | 0d |  |
|  | 1 | **Main Road Palasbari Side** |  | 2025-02-22 | 2027-05-08 |  |  |  |  |
| C_RW_PB_1000 |  | 0+000 to 5+400 Excavation & Ground Preparation | 75d | 2025-02-22 | 2025-05-20 | D_HP_1030, D_HP_1070, D_HP_1110, PS_GS_1010 FS+180d, A1210, SI_1030 | 39d | 0d |  |
| C_RW_PB_1010 |  | 0+000 to 5+400 Embankment | 180d | 2025-05-21 | 2026-04-08 | C_RW_PB_1000 | 39d | 0d |  |
| C_RW_PB_1020 |  | 0+000 to 5+400 Subgrade Preparation | 120d | 2025-12-25 | 2026-05-13 | C_RW_PB_1010 SS+90d | 39d | 0d |  |
| C_RW_PB_1030 |  | 0+000 to 5+400 GSB | 120d | 2026-01-29 | 2026-10-10 | C_RW_PB_1020 SS+30d | 39d | 0d |  |
| C_RW_PB_1040 |  | 0+000 to 5+400 WMM | 90d | 2026-04-09 | 2026-11-14 | C_RW_PB_1030 SS+60d, C_OS_1000 FF+20d, C_OS_1010 FF+10d, C_OS_1020 FF | 39d | 0d |  |
| C_RW_PB_1050 |  | 0+000 to 5+400 DBM | 60d | 2027-01-25 | 2027-04-03 | C_RW_PB_1040 FS+60d | 39d | 0d |  |
| C_RW_PB_1060 |  | 0+000 to 5+400 WC | 30d | 2027-04-05 | 2027-05-08 | C_RW_PB_1050 | 39d | 7.5d |  |
|  | 2 | **Main Road Sualkuchi Side** |  | 2025-02-22 | 2027-05-18 |  |  |  |  |
| C_RW_SK_1000 |  | 9+400 to 12+200 Excavation & Ground Preparation | 75d | 2025-02-22 | 2025-05-20 | PS_GS_1010 FS+150d, D_HP_1030, D_HP_1070, D_HP_1110, A1210, SI_1030 | 69d | 0d |  |
| C_RW_SK_1010 |  | 9+400 to 12+200 Embankment | 150d | 2025-05-21 | 2026-03-04 | C_RW_SK_1000 | 69d | 0d |  |
| C_RW_SK_1020 |  | 9+400 to 12+200 Subgrade Preparation | 110d | 2025-11-20 | 2026-03-27 | C_RW_SK_1010 SS+60d | 69d | 0d |  |
| C_RW_SK_1030 |  | 9+400 to 12+200 GSB | 100d | 2025-12-25 | 2026-04-20 | C_RW_SK_1020 SS+30d | 69d | 37.5d |  |
| C_RW_SK_1040 |  | 9+400 to 12+200 WMM | 60d | 2026-04-17 | 2026-10-20 | C_RW_SK_1030 SS+60d, C_OS_1000 FF+20d, C_OS_1010 FF+10d, C_OS_1020 FF | 31.5d | 0d |  |
| C_RW_SK_1050 |  | 9+400 to 12+200 DBM | 60d | 2027-02-02 | 2027-04-13 | C_RW_SK_1040 FS+90d | 31.5d | 0d |  |
| C_RW_SK_1060 |  | 9+400 to 12+200 WC | 30d | 2027-04-13 | 2027-05-18 | C_RW_SK_1050 | 31.5d | 0d |  |

| ID | WBS | Activity | Duration | Start | Finish | Predecessors | Total float | Free float | Calendar | Resources |
| --- | --- | --- | --- | --- | --- | --- | --- | --- | --- | --- |
|  | 3 | **Drainage** |  | 2026-04-09 | 2027-11-10 |  |  |  |  |  |
| C_Dr_1000 |  | Box Drain Raft | 150d | 2026-04-09 | 2027-01-23 | C_RW_PB_1010, C_RW_SK_1010, D_DD_1030 FS+21.82d | 179d | 0d |  |  |
| C_Dr_1010 |  | Box Drain Wall | 200d | 2026-10-12 | 2027-06-01 | C_Dr_1000 SS+60d | 179d | 0d |  |  |
| C_Dr_1030 |  | Box Drain Slab | 180d | 2026-12-21 | 2027-11-10 | C_Dr_1010 SS+60d | 179d |  |  |  |
|  | 7 | **Other Structures** |  | 2025-02-22 | 2026-10-06 |  |  |  |  |  |
| C_OS_1020 |  | Nala Channelization Ch: 0+300-1+100 | 300d | 2025-02-22 | 2026-05-30 | D_DD_1030, A1210 | 54d | 22.5d |  |  |
| C_OS_1005 |  | Piling - VUPs - 3 Nos | 55d | 2025-03-13 | 2025-05-15 | C_PAV_RHS_A1_1040 FS+5d, A1210, D_Misc_F_1030, ROW_1030, ROW_1020 | 33d | 0d |  | Piling Rig 1 [880 h] |
| C_OS_1000 |  | Box Culverts | 360d | 2025-04-03 | 2026-09-22 | D_Misc_F_1030 FS+180d, D_Misc_SuS_1070, D_Misc_SS_1110, SI_1030, A1210 | 31.5d | 0d | Monsoon Calendar |  |
| C_OS_1010 |  | Other Works - VUPs 3 Nos | 240d | 2025-05-16 | 2026-10-06 | D_Misc_SuS_1070, D_Misc_SS_1110, C_OS_1005 | 33d | 1.5d |  |  |
|  | 8 | **Finishing Works** |  | 2027-02-12 | 2028-05-29 |  |  |  |  |  |
| C_FW_1050 |  | River Training Works | 300d | 2027-02-12 | 2028-05-22 | C_MB_F_L_P29_1140 | 13d |  |  |  |
| C_FW_1000 |  | Cladding of Upper Pylon | 160d | 2027-03-18 | 2028-01-13 | C_MB_SS_L_P7_1020 FF+30d, C_MB_F_L_P8_1140 FF+30d, C_MB_F_L_P21_1140 FF+30d, C_MB_F_L_P23_1140 FF+30d, C_MB_F_L_P24_1140 FF+30d, C_MB_F_L_P25_1140 FF+30d, C_MB_F_L_P27_1140 FF+30d, C_MB_F_L_P28_1140 FF+30d, C_MB_F_L_P29_1140 FF+30d, C_MB_SS_M_P9__1110 FF+30d, C_MB_SS_M_P9__1080 FF+30d, C_MB_SS_M_P9__1140 FF+30d, C_MB_SS_M_P9__1200 FF+30d, C_MB_SS_M_P9__1230 FF+30d, C_MB_SS_M_P9__1260 FF+30d, C_MB_SS_L_P9_1020 FF+30d, C_MB_SS_L_P19_1020 FF+30d, C_MB_SS_L_P20_1020 FF+30d | 124d |  |  |  |
| C_FW_1030 |  | Crash Barrier | 270d | 2027-03-24 | 2028-05-26 | C_MB_SS_LC__1000 FF+15d, C_MB_SS_LC__1010 FF+15d, C_MB_SS_LC__1020 FF+15d, C_MB_SS_LC__1040 FF+15d, C_MB_SS_LC__1050 FF+15d, C_MB_SS_LC__1060 FF+15d, C_MB_SS_LC__1080 FF+15d, C_MB_SS_LC__1090 FF+15d, C_MB_SS_LC__1100 FF+15d, C_MB_SS_LC__1120 FF+15d, C_MB_SS_LC__1130 FF+15d, C_MB_SS_LC__1140 FF+15d, C_MB_SS_LC__1160 FF+15d, C_MB_SS_LC__1170 FF+15d, C_MB_SS_LC__1180 FF+15d, C_MB_SS_LC__1200 FF+15d, C_MB_SS_LC__1210 FF+15d, C_MB_SS_LC__1220 FF+15d, C_OS_1000 FF+15d, C_OS_1010 FF+30d, C_WV_RHS_DS_1200 FF+30d, C_WV_LHS_DS_1200 FF+30d, C_SAV_RHS_DS_1050 FF+15d, C_SAV_LHS_DS_1050 FF+15d, C_PAV_RHS_DS_1050 FF+15d, C_PAV_LHS_DS_1050 FF+15d, C_PAV_LHS_DS_1000 FF+15d, C_PAV_LHS_DS_1010 FF+15d, C_PAV_LHS_DS_1020 FF+15d, C_PAV_LHS_DS_1030 FF+15d, C_PAV_LHS_DS_1040 FF+15d, C_PAV_RHS_DS_1000 FF+15d, C_PAV_RHS_DS_1010 FF+15d, C_PAV_RHS_DS_1020 FF+15d, C_PAV_RHS_DS_1030 FF+15d, C_PAV_RHS_DS_1040 FF+15d, C_SAV_LHS_DS_1000 FF+15d, C_SAV_LHS_DS_1010 FF+15d, C_SAV_LHS_DS_1020 FF+15d, C_SAV_LHS_DS_1030 FF+15d, C_SAV_LHS_DS_1040 FF+15d, C_SAV_RHS_DS_1000 FF+15d, C_SAV_RHS_DS_1010 FF+15d, C_SAV_RHS_DS_1020 FF+15d, C_SAV_RHS_DS_1030 FF+15d, C_SAV_RHS_DS_1040 FF+15d, C_MB_SuS_L_P18_1060 FF+30d, C_MB_SuS_L_P26_1060 FF+30d, C_MB_SuS_M_P10_1060 FF+30d, C_MB_SuS_M_P14_1060 FF+30d, C_WV2_F_1880 FF+30d, C_WV2_F_2710 FF+30d, C_WV2_F_3770 FF+30d, C_WV2_F_3780 FF+30d, C_WV2_F_3970 FF+30d, C_WV2_F_3140 FF+30d, C_WV2_F_3150 FF+30d, C_WV2_F_3340 FF+30d, C_WV_LHS_DS_1000 FF+30d, C_WV_LHS_DS_1010 FF+30d, C_WV_LHS_DS_1020 FF+30d, C_WV_LHS_DS_1030 FF+30d, C_WV_LHS_DS_1040 FF+30d, C_WV_LHS_DS_1050 FF+30d, C_WV_LHS_DS_1060 FF+30d, C_WV_LHS_DS_1070 FF+30d, C_WV_LHS_DS_1080 FF+30d, C_WV_LHS_DS_1090 FF+30d, C_WV_LHS_DS_1100 FF+30d, C_WV_LHS_DS_1110 FF+30d, C_WV_LHS_DS_1120 FF+30d, C_WV_LHS_DS_1130 FF+30d, C_WV_LHS_DS_1140 FF+30d, C_WV_LHS_DS_1150 FF+30d, C_WV_LHS_DS_1160 FF+30d, C_WV_LHS_DS_1170 FF+30d, C_WV_LHS_DS_1180 FF+30d, C_WV_LHS_DS_1190 FF+30d, C_WV_RHS_DS_1000 FF+30d, C_WV_RHS_DS_1010 FF+30d, C_WV_RHS_DS_1020 FF+30d, C_WV_RHS_DS_1030 FF+30d, C_WV_RHS_DS_1040 FF+30d, C_WV_RHS_DS_1050 FF+30d, C_WV_RHS_DS_1060 FF+30d, C_WV_RHS_DS_1070 FF+30d, C_WV_RHS_DS_1080 FF+30d, C_WV_RHS_DS_1090 FF+30d, C_WV_RHS_DS_1100 FF+30d, C_WV_RHS_DS_1110 FF+30d, C_WV_RHS_DS_1120 FF+30d, C_WV_RHS_DS_1130 FF+30d, C_WV_RHS_DS_1140 FF+30d, C_WV_RHS_DS_1150 FF+30d, C_WV_RHS_DS_1160 FF+30d, C_WV_RHS_DS_1170 FF+30d, C_WV_RHS_DS_1180 FF+30d, C_WV_RHS_DS_1190 FF+30d, C_WV_RHS_A1_1020 FF+30d, C_WV_RHS_A2_1850 FF+30d | 9d |  |  |  |
| C_FW_1020 |  | Road Furnitures | 200d | 2027-05-18 | 2028-05-01 | C_RW_SK_1060, C_RW_PB_1060 | 31.5d |  |  |  |
| C_FW_1010 |  | Lighting | 90d | 2028-02-12 | 2028-05-26 | C_MB_SS_LC__1000 FF+15d, C_MB_SS_LC__1010 FF+15d, C_MB_SS_LC__1020 FF+15d, C_MB_SS_LC__1040 FF+15d, C_MB_SS_LC__1050 FF+15d, C_MB_SS_LC__1060 FF+15d, C_MB_SS_LC__1080 FF+15d, C_MB_SS_LC__1090 FF+15d, C_MB_SS_LC__1100 FF+15d, C_MB_SS_LC__1120 FF+15d, C_MB_SS_LC__1130 FF+15d, C_MB_SS_LC__1140 FF+15d, C_MB_SS_LC__1160 FF+15d, C_MB_SS_LC__1170 FF+15d, C_MB_SS_LC__1180 FF+15d, C_MB_SS_LC__1200 FF+15d, C_MB_SS_LC__1210 FF+15d, C_MB_SS_LC__1220 FF+15d | 0d |  |  |  |
| C_FW_1040 |  | Bituminous Works on Bridge Deck | 15d | 2028-05-12 | 2028-05-29 | C_MB_SS_LC__1000, C_MB_SS_LC__1010, C_MB_SS_LC__1020, C_MB_SS_LC__1040, C_MB_SS_LC__1050, C_MB_SS_LC__1060, C_MB_SS_LC__1080, C_MB_SS_LC__1090, C_MB_SS_LC__1100 FS+2d, C_MB_SS_LC__1120, C_MB_SS_LC__1130, C_MB_SS_LC__1140, C_MB_SS_LC__1160, C_MB_SS_LC__1170, C_MB_SS_LC__1180, C_MB_SS_LC__1200, C_MB_SS_LC__1210, C_MB_SS_LC__1220 | 7d |  |  |  |
|  | 9 | **Tests on Completion** |  | 2028-05-13 | 2028-06-06 |  |  |  |  |  |
| C_Test_1000 |  | Tests on Completion | 20.3d | 2028-05-13 | 2028-06-06 | C_MB_SS_LC__1000 FS+2d, C_MB_SS_LC__1010 FS+2d, C_MB_SS_LC__1020 FS+2d, C_MB_SS_LC__1040 FS+2d, C_MB_SS_LC__1050 FS+2d, C_MB_SS_LC__1060 FS+2d, C_MB_SS_LC__1080 FS+2d, C_MB_SS_LC__1090 FS+2d, C_MB_SS_LC__1100 FS+2d, C_MB_SS_LC__1120 FS+2d, C_MB_SS_LC__1130 FS+2d, C_MB_SS_LC__1140 FS+2d, C_MB_SS_LC__1160 FS+2d, C_MB_SS_LC__1170 FS+2d, C_MB_SS_LC__1180 FS+2d, C_MB_SS_LC__1200 FS+2d, C_MB_SS_LC__1210 FS+2d, C_MB_SS_LC__1220 FS+2d, C_FW_1010 FF+9d | 0d |  |  |  |
