# L2 schedule Rev 4

Schedule from MS Project, 2025-03-28 to 2028-03-27, A marks actual dates.

## Calendars

- NMDC: Mon-Fri 08:00-12:00, 13:00-17:00; Sat-Sun off. Exceptions (off unless hours are given): 2025-03-29 08:00-12:00, 13:00-17:00, 2025-04-05 08:00-12:00, 13:00-17:00, 2025-04-12 08:00-12:00, 13:00-17:00, 2025-04-19 08:00-12:00, 13:00-17:00 (recurring), 2025-05-03 to 2031-01-25 08:00-12:00, 13:00-17:00 (recurring), 2025-12-28 08:00-12:00, 13:00-17:00, 2027-05-16 08:00-12:00, 13:00-17:00, 2027-11-28 08:00-12:00, 13:00-17:00, 2028-02-27 08:00-12:00, 13:00-17:00.

## Schedule

| ID | WBS | Task | Type | Duration | Start | Finish | Predecessors | Complete | Remaining | Baseline start | Baseline finish | Baseline duration | Total slack | Free slack | Text11 |
| --- | --- | --- | --- | --- | --- | --- | --- | --- | --- | --- | --- | --- | --- | --- | --- |
| 1 | 1 | **Crushing Plant & Downhill Conv for Deposit 14/11C** |  | 942d | 2025-03-28 A | 2028-03-27 |  | 24% | 711.93d | 2025-03-28 | 2028-03-27 | 942d | 0d |  |  |
| 2 | 1.1 | **Project General Milestone** |  | 394d | 2025-03-28 A | 2026-06-30 |  | 84% | 64.42d | 2025-03-28 | 2026-06-30 | 394d | 144d | 0d |  |
| 3 | 1.1.1 | Commencement of project | milestone | 1d | 2025-03-28 A | 2025-03-28 A |  | 100% |  | 2025-03-28 | 2025-03-28 | 1d |  |  | Completed |
| 4 | 1.1.2 | Site Mobilisation |  | 88d | 2025-05-07 A | 2025-08-16 A | 3 | 100% |  | 2025-05-07 | 2025-08-16 | 88d |  |  | Completed |
| 5 | 1.1.3 | Submission of Scheme for capacity augmentation of existing conveyor syestem for Deposit 14 and 11C |  | 313d | 2025-07-02 A | 2026-06-30 | 3FS+80d | 79% | 65.73d | 2025-07-02 | 2026-06-30 | 313d | 144d | 0d | In Progress |
| 6 | 1.2 | **Basic Engineering** |  | 156d | 2025-03-29 A | 2025-09-27 A |  | 100% |  | 2025-03-29 | 2025-09-27 | 156d |  |  |  |
| 7 | 1.2.1 | **General** |  | 156d | 2025-03-29 A | 2025-09-27 A |  | 100% |  | 2025-03-29 | 2025-09-27 | 156d |  |  |  |
| 8 | 1.2.1.1 | **Mechanical Drawings** |  | 129d | 2025-03-29 A | 2025-08-27 A |  | 100% |  | 2025-03-29 | 2025-08-27 | 129d |  |  |  |
| 9 | 1.2.1.1.1 | Plant Layout |  | 129d | 2025-03-29 A | 2025-08-27 A | 3SS | 100% |  | 2025-03-29 | 2025-08-27 | 129d |  |  | Completed |
| 10 | 1.2.1.2 | **Electrical Drawings** |  | 92d | 2025-06-13 A | 2025-09-27 A |  | 100% |  | 2025-06-13 | 2025-09-27 | 92d |  |  |  |
| 11 | 1.2.1.2.1 | Electrical SLD |  | 58d | 2025-06-19 A | 2025-08-25 A | 21SS+20d | 100% |  | 2025-06-19 | 2025-08-25 | 58d |  |  | Completed |
| 12 | 1.2.1.2.2 | Electrical Sizing Calculations |  | 76d | 2025-06-13 A | 2025-09-09 A | 21SS+15d | 100% |  | 2025-06-13 | 2025-09-09 | 76d |  |  | Completed |
| 13 | 1.2.1.2.3 | Equipment List & Motor Load List |  | 15d | 2025-08-08 A | 2025-08-25 A | 21FS-13d | 100% |  | 2025-08-08 | 2025-08-25 | 15d |  |  | Completed |
| 14 | 1.2.1.2.4 | Earthing Calculation |  | 35d | 2025-06-28 A | 2025-08-07 A | 9FS-52d | 100% |  | 2025-06-28 | 2025-08-07 | 35d |  |  | Completed |
| 15 | 1.2.1.2.5 | Lighting Protection Calculation |  | 35d | 2025-06-28 A | 2025-08-07 A | 9FS-52d | 100% |  | 2025-06-28 | 2025-08-07 | 35d |  |  | Completed |
| 16 | 1.2.1.2.6 | Control philosophy |  | 24d | 2025-09-01 A | 2025-09-27 A | 3FS+130d | 100% |  | 2025-09-01 | 2025-09-27 | 24d |  |  | Completed |
| 17 | 1.2.1.2.7 | System Architecture |  | 22d | 2025-09-01 A | 2025-09-25 A | 3FS+130d | 100% |  | 2025-09-01 | 2025-09-25 | 22d |  |  | Completed |
| 18 | 1.2.2 | **Deposit 14** |  | 149d | 2025-03-29 A | 2025-09-19 A |  | 100% |  | 2025-03-29 | 2025-09-19 | 149d |  |  |  |
| 19 | 1.2.2.1 | **Mechanical** |  | 124d | 2025-03-29 A | 2025-08-21 A |  | 100% |  | 2025-03-29 | 2025-08-21 | 124d |  |  |  |
| 20 | 1.2.2.1.1 | Flow Diagram |  | 115d | 2025-03-29 A | 2025-08-11 A | 3 | 100% |  | 2025-03-29 | 2025-08-11 | 115d |  |  | Completed |
| 21 | 1.2.2.1.2 | Conveyor Profile(GA and Sectional ) drawings |  | 80d | 2025-05-21 A | 2025-08-21 A | 9SS+44d | 100% |  | 2025-05-21 | 2025-08-21 | 80d |  |  | Completed |
| 22 | 1.2.2.1.3 | Conveyor Power Calculation |  | 28d | 2025-05-29 A | 2025-06-30 A | 9SS+52d | 100% |  | 2025-05-29 | 2025-06-30 | 28d |  |  | Completed |
| 23 | 1.2.2.2 | **Civil** |  | 121d | 2025-03-29 A | 2025-08-18 A |  | 100% |  | 2025-03-29 | 2025-08-18 | 121d |  |  |  |
| 24 | 1.2.2.2.1 | Design Criteria for Civil works |  | 121d | 2025-03-29 A | 2025-08-18 A | 3 | 100% |  | 2025-03-29 | 2025-08-18 | 121d |  |  | Completed |

| ID | WBS | Task | Duration | Start | Finish | Predecessors | Complete | Remaining | Baseline start | Baseline finish | Baseline duration | Total slack | Free slack | Constraint | Text11 |
| --- | --- | --- | --- | --- | --- | --- | --- | --- | --- | --- | --- | --- | --- | --- | --- |
| 25 | 1.2.2.3 | **Structural** | 149d | 2025-03-29 A | 2025-09-19 A |  | 100% |  | 2025-03-29 | 2025-09-19 | 149d |  |  |  |  |
| 26 | 1.2.2.3.1 | Design Criteria for Structural works | 149d | 2025-03-29 A | 2025-09-19 A | 3 | 100% |  | 2025-03-29 | 2025-09-19 | 149d |  |  |  | Completed |
| 27 | 1.2.3 | **Deposit 11C** | 149d | 2025-03-29 A | 2025-09-19 A |  | 100% |  | 2025-03-29 | 2025-09-19 | 149d |  |  |  |  |
| 28 | 1.2.3.1 | **Mechanical** | 121d | 2025-03-29 A | 2025-08-18 A |  | 100% |  | 2025-03-29 | 2025-08-18 | 121d |  |  |  |  |
| 29 | 1.2.3.1.1 | Flow Diagram | 92d | 2025-03-29 A | 2025-07-15 A | 3 | 100% |  | 2025-03-29 | 2025-07-15 | 92d |  |  |  | Completed |
| 30 | 1.2.3.1.2 | Conveyor Profile(GA and Sectional) drawing | 77d | 2025-05-21 A | 2025-08-18 A | 9SS+44d | 100% |  | 2025-05-21 | 2025-08-18 | 77d |  |  |  | Completed |
| 31 | 1.2.3.1.3 | Conveyor Power Calculation | 28d | 2025-05-29 A | 2025-06-30 A | 9SS+15d | 100% |  | 2025-05-29 | 2025-06-30 | 28d |  |  |  | Completed |
| 32 | 1.2.3.2 | **Structural** | 149d | 2025-03-29 A | 2025-09-19 A |  | 100% |  | 2025-03-29 | 2025-09-19 | 149d |  |  |  |  |
| 33 | 1.2.3.2.1 | Design Criteria for Structural works | 149d | 2025-03-29 A | 2025-09-19 A | 3 | 100% |  | 2025-03-29 | 2025-09-19 | 149d |  |  |  | Completed |
| 34 | 1.2.3.3 | **Civil** | 121d | 2025-03-29 A | 2025-08-18 A |  | 100% |  | 2025-03-29 | 2025-08-18 | 121d |  |  |  |  |
| 35 | 1.2.3.3.1 | Design Criteria for Civil works | 121d | 2025-03-29 A | 2025-08-18 A | 3 | 100% |  | 2025-03-29 | 2025-08-18 | 121d |  |  |  | Completed |
| 36 | 1.3 | **Detail Engineering** | 485d | 2025-05-15 A | 2026-11-30 |  | 71% | 138.98d | 2025-05-15 | 2026-11-30 | 485d | 417d |  |  |  |
| 37 | 1.3.1 | **General** | 154d | 2025-10-20 A | 2026-04-15 |  | 95% | 7.7d | 2025-10-20 | 2026-04-15 | 154d | 78.9d |  |  |  |
| 38 | 1.3.1.1 | Road Layout | 154d | 2025-10-20 A | 2026-04-15 | 3FS+150d | 95% | 7.7d | 2025-10-20 | 2026-04-15 | 154d | 78.9d | 0d |  | In Progress |
| 39 | 1.3.2 | **Detail Engineering for Common Facilities of Deposit 14 & 11C** | 485d | 2025-05-15 A | 2026-11-30 |  | 57% | 207.19d | 2025-05-15 | 2026-11-30 | 485d | 417d |  |  |  |
| 40 | 1.3.2.1 | **Mechanical Engineering** | 84d | 2026-08-25 | 2026-11-30 |  |  |  | 2026-08-25 | 2026-11-30 | 84d | 130d |  |  |  |
| 41 | 1.3.2.1.1 | **Deposit 14** | 84d | 2026-08-25 | 2026-11-30 |  |  |  | 2026-08-25 | 2026-11-30 | 84d | 130d |  |  |  |
| 42 | 1.3.2.1.1.1 | Utility arrangement drawings | 53d | 2026-09-30 | 2026-11-30 | 73SS, 83SS, 105SS, 43FF |  |  | 2026-09-30 | 2026-11-30 | 53d | 130d | 116d |  |  |
| 43 | 1.3.2.1.1.2 | Design Basis for Piping work | 49d | 2026-08-25 | 2026-10-20 | 3FS+440d |  |  | 2026-08-25 | 2026-10-20 | 49d | 165d | 35d |  | In Progress |
| 44 | 1.3.2.1.2 | **Deposit 11C** | 58d | 2026-09-24 | 2026-11-30 |  |  |  | 2026-09-24 | 2026-11-30 | 58d | 118d |  |  |  |
| 45 | 1.3.2.1.2.1 | Utility arrangement drawings | 53d | 2026-09-30 | 2026-11-30 | 198SS, 208SS, 238SS, 46FF |  |  | 2026-09-30 | 2026-11-30 | 53d | 118d | 108d |  |  |
| 46 | 1.3.2.1.2.2 | Design Basis for Piping work | 50d | 2026-09-24 | 2026-11-20 | 3FS+466d |  |  | 2026-09-24 | 2026-11-20 | 50d | 126d | 8d |  | In Progress |
| 47 | 1.3.2.2 | **Structural Engineering** | 147d | 2025-09-11 A | 2026-02-27 A |  | 100% |  | 2025-09-11 | 2026-02-27 | 147d |  |  |  |  |
| 48 | 1.3.2.2.1 | Typical gallery cross sections for Deposit 14 | 128d | 2025-09-11 A | 2026-02-05 A | 22SS+90d | 100% |  | 2025-09-11 | 2026-02-05 | 128d |  |  |  | In Progress |
| 49 | 1.3.2.2.2 | Typical gallery cross sections for Deposit 11C | 147d | 2025-09-11 A | 2026-02-27 A | 31SS+90d | 100% |  | 2025-09-11 | 2026-02-27 | 147d |  |  | finish no earlier than 2026-02-27 | In Progress |

| ID | WBS | Task | Duration | Start | Finish | Predecessors | Complete | Remaining | Baseline start | Baseline finish | Baseline duration | Total slack | Free slack | Constraint | Text1 | Text11 |
| --- | --- | --- | --- | --- | --- | --- | --- | --- | --- | --- | --- | --- | --- | --- | --- | --- |
| 50 | 1.3.2.3 | **Civil Engineering Common** | 90d | 2025-05-15 A | 2025-08-27 A |  | 100% |  | 2025-05-15 | 2025-08-27 | 90d |  |  |  |  |  |
| 51 | 1.3.2.3.1 | Excavation drawing | 90d | 2025-05-15 A | 2025-08-27 A | 9SS+40d | 100% |  | 2025-05-15 | 2025-08-27 | 90d |  |  |  | Completed | Completed |
| 52 | 1.3.2.3.2 | Excavation drawing | 90d | 2025-05-15 A | 2025-08-27 A | 9SS+40d | 100% |  | 2025-05-15 | 2025-08-27 | 90d |  |  |  | Completed | Completed |
| 53 | 1.3.2.4 | **Electrical and C&I Engineering** | 200d | 2025-10-08 A | 2026-05-27 |  | 47% | 105.9d | 2025-10-08 | 2026-05-27 | 200d | 577d |  |  |  |  |
| 54 | 1.3.2.4.1 | **Deposit 14** | 200d | 2025-10-08 A | 2026-05-27 |  | 47% | 106.86d | 2025-10-08 | 2026-05-27 | 200d | 168d |  |  |  |  |
| 55 | 1.3.2.4.1.1 | GA and Data sheet of Equipment | 200d | 2025-10-08 A | 2026-05-27 | 11FF, 12FF+224d | 82% | 36d | 2025-10-08 | 2026-05-27 | 200d | 139d | 0d |  |  | In Progress |
| 56 | 1.3.2.4.1.2 | Cable tray routing | 49d | 2026-04-01 | 2026-05-27 | 12FS+175d, 14FS+163d |  |  | 2026-04-01 | 2026-05-27 | 49d | 10d | 0d |  |  | In Progress |
| 57 | 1.3.2.4.1.3 | Cable Schedule | 37d | 2026-04-15 A | 2026-05-27 | 56SS+12d, 12 | 30% | 25.9d | 2026-04-15 | 2026-05-27 | 37d | 3d | 0d |  |  | In Progress |
| 58 | 1.3.2.4.1.4 | Earthing Layout | 46d | 2026-04-02 | 2026-05-25 | 14FF+250d |  |  | 2026-04-02 | 2026-05-25 | 46d | 170d | 164d |  |  |  |
| 59 | 1.3.2.4.1.5 | Instrumentation | 44d | 2026-04-07 | 2026-05-27 | 17FS+166d |  |  | 2026-04-07 | 2026-05-27 | 44d | 2d | 0d |  |  |  |
| 60 | 1.3.2.4.2 | **Deposit 11C** | 200d | 2025-10-08 A | 2026-05-27 |  | 48% | 104.95d | 2025-10-08 | 2026-05-27 | 200d | 577d |  |  |  |  |
| 61 | 1.3.2.4.2.1 | GA and Data sheet of Equipment | 200d | 2025-10-08 A | 2026-05-27 | 11FF, 12FF+224d | 82% | 36d | 2025-10-08 | 2026-05-27 | 200d | 137d | 0d |  |  | In Progress |
| 62 | 1.3.2.4.2.2 | Cable tray routing | 49d | 2026-04-01 A | 2026-05-27 | 12FS+175d, 14FS+150d | 30% | 34.3d | 2026-04-01 | 2026-05-27 | 49d | 577d | 0d |  |  | In Progress |
| 63 | 1.3.2.4.2.3 | Cable Schedule | 37d | 2026-04-15 | 2026-05-27 | 62SS+12d, 12 |  |  | 2026-04-15 | 2026-05-27 | 37d | 39d | 8d |  |  | In Progress |
| 64 | 1.3.2.4.2.4 | Earthing Layout | 46d | 2026-04-02 | 2026-05-25 | 14FF+250d |  |  | 2026-04-02 | 2026-05-25 | 46d | 167d |  |  |  |  |
| 65 | 1.3.2.4.2.5 | Instrumentation | 44d | 2026-04-07 | 2026-05-27 | 17FS+166d |  |  | 2026-04-07 | 2026-05-27 | 44d | 137d | 0d |  |  |  |
| 66 | 1.3.3 | **Detail Engineering for various Units of Deposit 14 & 11C** | 428d | 2025-07-21 A | 2026-11-30 |  | 73% | 117.3d | 2025-07-21 | 2026-11-30 | 428d | 417d |  |  |  |  |
| 67 | 1.3.3.1 | **Deposit 14** | 392d | 2025-09-01 A | 2026-11-30 |  | 72% | 111.46d | 2025-09-01 | 2026-11-30 | 392d | 417d |  |  |  |  |
| 68 | 1.3.3.1.1 | **Primary Crusher** | 311d | 2025-11-05 A | 2026-10-31 |  | 56% | 137.68d | 2025-11-05 | 2026-10-31 | 311d | 167d |  |  |  |  |
| 69 | 1.3.3.1.1.1 | Mechanical GA and Sectional drawing | 109d | 2025-11-05 A | 2026-03-10 A | 315SS+8d | 100% |  | 2025-11-05 | 2026-04-30 | 153d |  |  | finish no earlier than 2026-03-10 |  |  |
| 70 | 1.3.3.1.1.2 | Civil drawings | 61d | 2026-03-18 A | 2026-05-27 | 71FF | 75% | 15.25d | 2026-03-18 | 2026-05-27 | 61d | 0d |  |  |  |  |
| 71 | 1.3.3.1.1.3 | Structural GA drawings | 62d | 2026-03-17 A | 2026-05-27 | 69FS+5d | 65% | 21.7d | 2026-03-21 | 2026-05-27 | 58d | 0d |  |  |  |  |
| 72 | 1.3.3.1.1.4 | Electrical drawing including SLD, Equipment Layout, Earthing& Lighting Protection, Cable Tray and Illumination Layout | 53d | 2026-07-31 | 2026-09-30 | 55FS+55d, 59FS+55d |  |  | 2026-07-31 | 2026-09-30 | 53d | 140d |  |  |  |  |
| 73 | 1.3.3.1.1.5 | Utility drawings | 65d | 2026-08-18 | 2026-10-31 | 20FS+319d |  |  | 2026-08-18 | 2026-10-31 | 65d | 167d | 37d |  |  |  |

| ID | WBS | Task | Duration | Start | Finish | Predecessors | Complete | Remaining | Baseline start | Baseline finish | Baseline duration | Total slack | Free slack |
| --- | --- | --- | --- | --- | --- | --- | --- | --- | --- | --- | --- | --- | --- |
| 74 | 1.3.3.1.2 | **Conveyor 2005** | 214d | 2025-09-15 A | 2026-05-20 |  | 86% | 30.11d | 2025-09-15 | 2026-05-20 | 214d | 223d |  |
| 75 | 1.3.3.1.2.1 | Mechanical GA and Sectional drawing | 144d | 2025-09-15 A | 2026-02-27 A | 9SS+27d, 20SS+160d | 100% |  | 2025-09-15 | 2026-02-27 | 144d |  |  |
| 76 | 1.3.3.1.2.2 | Civil drawings | 70d | 2026-02-28 A | 2026-05-20 | 77SS+26d | 56% | 30.8d | 2026-02-28 | 2026-05-20 | 70d | 109d | 0d |
| 77 | 1.3.3.1.2.3 | Structural GA drawings | 65d | 2026-01-29 A | 2026-04-14 | 75FS-26d, 48FF+52d | 87% | 8.45d | 2026-01-29 | 2026-04-14 | 65d | 254d | 0d |
| 78 | 1.3.3.1.3 | **Secondary Crusher** | 336d | 2025-10-21 A | 2026-11-14 |  | 66% | 114.48d | 2025-10-21 | 2026-11-14 | 336d | 430d |  |
| 79 | 1.3.3.1.3.1 | Mechanical GA and Sectional drawing | 111d | 2025-10-21 A | 2026-02-25 A | 321SS | 100% |  | 2025-10-21 | 2026-04-30 | 166d |  |  |
| 80 | 1.3.3.1.3.2 | Civil drawings | 74d | 2026-03-02 A | 2026-05-27 | 81FS-52d | 70% | 22.2d | 2026-04-10 | 2026-05-26 | 40d | 577.5d | 0d |
| 81 | 1.3.3.1.3.3 | Structural GA drawings | 93d | 2026-01-06 A | 2026-04-23 A | 79FS-44d | 100% |  | 2026-03-11 | 2026-05-26 | 66d |  |  |
| 82 | 1.3.3.1.3.4 | Electrical drawing including SLD, Equipment Layout, Earthing& Lighting Protection, Cable Tray and Illumination Layout | 57d | 2026-08-11 | 2026-10-15 | 55FS+64d, 59FS+64d |  |  | 2026-08-11 | 2026-10-15 | 57d | 160d |  |
| 83 | 1.3.3.1.3.5 | Utility drawings | 53d | 2026-09-15 | 2026-11-14 | 9, 20FS+343d |  |  | 2026-09-15 | 2026-11-14 | 53d | 143d | 13d |
| 84 | 1.3.3.1.4 | **Conveyor 2009** | 114d | 2026-01-15 A | 2026-05-27 |  | 73% | 31.3d | 2026-01-15 | 2026-05-16 | 105d | 238d |  |
| 85 | 1.3.3.1.4.1 | Mechanical GA and Sectional drawing | 28d | 2026-01-15 A | 2026-02-16 A | 9SS+14d, 20SS+250d | 100% |  | 2026-01-15 | 2026-02-16 | 28d |  |  |
| 86 | 1.3.3.1.4.2 | Civil drawings | 99d | 2026-02-02 A | 2026-05-27 | 87SS+13d | 62% | 37.62d | 2026-02-02 | 2026-05-16 | 90d | 149d | 0d |
| 87 | 1.3.3.1.4.3 | Structural GA drawings | 112d | 2026-01-17 A | 2026-05-27 | 85FS-26d | 75% | 28d | 2026-01-17 | 2026-04-15 | 76d | 238d | 0d |
| 88 | 1.3.3.1.5 | **Transfer House TH1** | 216d | 2025-09-19 A | 2026-05-27 |  | 77% | 48.69d | 2025-09-19 | 2026-05-22 | 212d | 141d |  |
| 89 | 1.3.3.1.5.1 | Mechanical GA and Sectional drawing | 66d | 2025-09-19 A | 2025-12-04 A | 21SS+52d | 100% |  | 2025-09-19 | 2025-12-04 | 66d |  |  |
| 90 | 1.3.3.1.5.2 | Civil drawings | 45d | 2026-04-01 A | 2026-05-27 | 91FS-35d | 40% | 27d | 2026-04-01 | 2026-05-22 | 45d | 141d | 0d |
| 91 | 1.3.3.1.5.3 | Structural GA drawings | 128d | 2025-12-19 A | 2026-05-15 | 89FS+13d | 79% | 26.88d | 2025-12-19 | 2026-04-30 | 115d | 9d | 0d |
| 92 | 1.3.3.1.6 | **Conveyor 2010** | 232d | 2025-09-01 A | 2026-05-27 |  | 87% | 29.67d | 2025-09-01 | 2026-05-14 | 221d | 203d |  |
| 93 | 1.3.3.1.6.1 | Mechanical GA and Sectional drawing | 133d | 2025-09-01 A | 2026-01-31 A | 9SS+24d, 20SS+120d | 100% |  | 2025-09-01 | 2026-01-31 | 133d |  |  |
| 94 | 1.3.3.1.6.2 | Civil drawings | 96d | 2026-02-05 A | 2026-05-27 | 95SS+26d | 61% | 37.44d | 2026-02-05 | 2026-05-14 | 85d | 102d | 0d |
| 95 | 1.3.3.1.6.3 | Structural GA drawings | 120d | 2026-01-06 A | 2026-05-25 | 93FS-23d | 94% | 7.2d | 2026-01-06 | 2026-04-20 | 90d | 205d | 0d |
| 96 | 1.3.3.1.7 | **Transfer House TH2** | 223.5d | 2025-09-10 A | 2026-05-27 |  | 74% | 57.6d | 2025-09-10 | 2026-05-19 | 217d | 83.5d |  |
| 97 | 1.3.3.1.7.1 | Mechanical GA and Sectional drawing | 63d | 2025-09-10 A | 2025-11-21 A | 21SS+78d | 100% |  | 2025-09-10 | 2025-11-21 | 63d |  |  |
| 98 | 1.3.3.1.7.2 | Civil drawings | 61d | 2026-02-26 A | 2026-05-27 | 99FS-52d | 52% | 29.28d | 2026-03-20 | 2026-05-19 | 52d | 83.5d | 14.5d |
| 99 | 1.3.3.1.7.3 | Structural GA drawings | 120d | 2026-01-05 A | 2026-05-23 | 97FS+39d | 72% | 33.6d | 2026-01-05 | 2026-04-30 | 100d | 25.22d | 0d |

| ID | WBS | Task | Duration | Start | Finish | Predecessors | Complete | Remaining | Baseline start | Baseline finish | Baseline duration | Total slack | Free slack | Constraint |
| --- | --- | --- | --- | --- | --- | --- | --- | --- | --- | --- | --- | --- | --- | --- |
| 100 | 1.3.3.1.8 | **Primary Stock Pile and Tripper Conveyor 2011** | 348d | 2025-10-22 A | 2026-11-30 |  | 50% | 173.64d | 2025-10-22 | 2026-11-30 | 348d | 417d |  |  |
| 101 | 1.3.3.1.8.1 | Mechanical GA and Sectional drawing | 96d | 2025-10-22 A | 2026-02-09 A | 20, 21FS+52d | 100% |  | 2025-10-22 | 2026-02-09 | 96d |  |  |  |
| 102 | 1.3.3.1.8.2 | Civil drawing | 47d | 2026-04-03 A | 2026-05-27 | 103FF | 50% | 23.5d | 2026-04-03 | 2026-05-27 | 47d | 577d | 0d |  |
| 103 | 1.3.3.1.8.3 | Structural GA drawings Tripper Conveyor 2011 | 92d | 2026-02-10 A | 2026-05-27 | 101 | 58% | 38.64d | 2026-02-10 | 2026-05-27 | 92d | 577d | 0d |  |
| 104 | 1.3.3.1.8.4 | Electrical drawing including SLD, Equipment Layout, Earthing& Lighting Protection, Cable Tray and Illumination Layout | 57d | 2026-08-27 | 2026-10-31 | 55FS+78d, 59FS+78d |  |  | 2026-08-27 | 2026-10-31 | 57d | 139d |  |  |
| 105 | 1.3.3.1.8.5 | Utility drawings | 53d | 2026-09-30 | 2026-11-30 | 9, 20FS+356d |  |  | 2026-09-30 | 2026-11-30 | 53d | 130d | 0d |  |
| 106 | 1.3.3.1.9 | **Conveyor 2015** | 192d | 2025-10-15 A | 2026-05-25 |  | 81% | 37.25d | 2025-10-15 | 2026-05-25 | 192d | 140d |  |  |
| 107 | 1.3.3.1.9.1 | Mechanical GA and Sectional drawing | 58d | 2025-10-15 A | 2025-12-21 A | 9SS+14d, 20SS+170d | 100% |  | 2025-10-15 | 2025-12-21 | 58d |  |  |  |
| 108 | 1.3.3.1.9.2 | Civil drawings | 97d | 2026-02-02 A | 2026-05-25 | 107FS+37d | 69% | 30.07d | 2026-02-02 | 2026-05-25 | 97d | 140d | 0d |  |
| 109 | 1.3.3.1.10 | **Transfer House TH3** | 218d | 2025-09-10 A | 2026-05-20 |  | 86% | 31.22d | 2025-09-10 | 2026-05-20 | 218d | 141d |  |  |
| 110 | 1.3.3.1.10.1 | Mechanical GA and Sectional drawing | 54d | 2025-09-10 A | 2025-11-11 A | 21SS+78d | 100% |  | 2025-09-10 | 2025-11-11 | 54d |  |  |  |
| 111 | 1.3.3.1.10.2 | Civil drawings | 39d | 2026-04-06 A | 2026-05-20 | 112FS+15d | 35% | 25.35d | 2026-04-06 | 2026-05-20 | 39d | 141d | 23d |  |
| 112 | 1.3.3.1.10.3 | Structural GA drawings | 84d | 2025-12-12 A | 2026-03-18 A | 110FS+26d | 100% |  | 2025-12-12 | 2026-05-05 | 125d |  |  |  |
| 113 | 1.3.3.1.11 | **Transfer House TH4** | 199d | 2025-10-06 A | 2026-05-23 |  | 84% | 31.03d | 2025-10-06 | 2026-05-23 | 199d | 79d |  |  |
| 114 | 1.3.3.1.11.1 | Mechanical GA and Sectional drawing | 67d | 2025-10-06 A | 2025-12-22 A | 21SS+104d | 100% |  | 2025-10-06 | 2025-12-22 | 67d |  |  |  |
| 115 | 1.3.3.1.11.2 | Civil drawings | 46d | 2026-04-01 A | 2026-05-23 | 116FS+11d | 40% | 27.6d | 2026-04-01 | 2026-05-23 | 46d | 79d | 40d |  |
| 116 | 1.3.3.1.11.3 | Structural GA drawings | 64d | 2026-01-03 A | 2026-03-18 A | 114FS+13d | 100% |  | 2026-01-03 | 2026-04-30 | 101d |  |  | finish no earlier than 2026-05-05 |
| 117 | 1.3.3.1.12 | **Conveyor 2016A** | 179d | 2025-11-01 A | 2026-05-27 |  | 76% | 42.34d | 2025-11-01 | 2026-05-27 | 179d | 102d |  |  |
| 118 | 1.3.3.1.12.1 | Mechanical GA and Sectional drawing | 107d | 2025-11-01 A | 2026-03-04 A | 9SS+14d, 20SS+170d | 100% |  | 2025-11-01 | 2026-04-17 | 145d |  |  |  |
| 119 | 1.3.3.1.12.2 | Civil drawings | 48d | 2026-04-02 A | 2026-05-27 | 120SS+78d | 40% | 28.8d | 2026-04-02 | 2026-05-27 | 48d | 45d | 29d |  |
| 120 | 1.3.3.1.12.3 | Structural GA drawings | 124d | 2026-01-01 A | 2026-05-26 | 118FS-100d | 70% | 37.2d | 2026-01-01 | 2026-05-15 | 115d | 103.25d | 0d |  |
| 121 | 1.3.3.1.13 | **Transfer House TH4A** | 210d | 2025-09-25 A | 2026-05-26 |  | 81% | 40.94d | 2025-09-25 | 2026-05-26 | 210d | 146d |  |  |
| 122 | 1.3.3.1.13.1 | Mechanical GA and Sectional drawing | 138d | 2025-09-25 A | 2026-03-03 A | 21SS+160d | 100% |  | 2025-09-25 | 2026-03-03 | 138d |  |  |  |
| 123 | 1.3.3.1.13.2 | Civil drawings | 55d | 2026-03-24 A | 2026-05-26 | 124SS+52d | 40% | 33d | 2026-03-24 | 2026-05-26 | 55d | 146d | 0d |  |
| 124 | 1.3.3.1.13.3 | Structural GA drawings | 84d | 2026-01-22 A | 2026-05-15 | 122FS-72d | 75% | 21d | 2026-01-22 | 2026-05-15 | 84d | 152.25d | 0d |  |

| ID | WBS | Task | Duration | Start | Finish | Predecessors | Complete | Remaining | Baseline start | Baseline finish | Baseline duration | Total slack | Free slack |
| --- | --- | --- | --- | --- | --- | --- | --- | --- | --- | --- | --- | --- | --- |
| 125 | 1.3.3.1.14 | **Conveyor 2016B** | 179d | 2025-11-01 A | 2026-05-27 |  | 61% | 69.56d | 2025-11-01 | 2026-05-23 | 176d | 141d |  |
| 126 | 1.3.3.1.14.1 | Mechanical GA and Sectional drawing | 107d | 2025-11-01 A | 2026-03-04 A | 9SS+14d, 20SS+180d | 100% |  | 2025-11-01 | 2026-04-30 | 156d |  |  |
| 127 | 1.3.3.1.14.2 | Civil drawings | 49d | 2026-04-01 | 2026-05-27 | 128SS+23d |  |  | 2026-04-08 | 2026-05-23 | 40d | 92d | 60d |
| 128 | 1.3.3.1.14.3 | Structural GA drawings | 72d | 2026-03-05 A | 2026-05-27 | 126 | 45% | 39.6d | 2026-03-16 | 2026-05-14 | 52d | 141d | 0d |
| 129 | 1.3.3.1.15 | **Transfer House TH5** | 163d | 2025-11-20 A | 2026-05-27 |  | 70% | 48.67d | 2025-11-20 | 2026-05-14 | 152d | 236d |  |
| 130 | 1.3.3.1.15.1 | Mechanical GA and Sectional drawing | 90d | 2025-11-20 A | 2026-03-03 A | 21SS+104d | 100% |  | 2025-11-20 | 2026-03-03 | 90d |  |  |
| 131 | 1.3.3.1.15.2 | Civil drawings | 76d | 2026-02-28 A | 2026-05-27 | 132SS+23d | 48% | 39.52d | 2026-02-28 | 2026-05-14 | 65d | 150d | 10d |
| 132 | 1.3.3.1.15.3 | Structural GA drawings | 99d | 2026-02-02 A | 2026-05-27 | 130FS-26d | 60% | 39.6d | 2026-02-02 | 2026-04-17 | 65d | 236d | 0d |
| 133 | 1.3.3.1.16 | **Conveyor 2017** | 178d | 2025-11-01 A | 2026-05-26 |  | 73% | 47.77d | 2025-11-01 | 2026-05-26 | 178d | 101d |  |
| 134 | 1.3.3.1.16.1 | Mechanical GA and Sectional drawing | 111d | 2025-11-01 A | 2026-03-09 A | 9SS+14d, 20SS+190d | 100% |  | 2025-11-01 | 2026-04-15 | 143d |  |  |
| 135 | 1.3.3.1.16.2 | Civil drawings | 35d | 2026-04-16 A | 2026-05-26 | 136SS+20d | 25% | 26.25d | 2026-04-16 | 2026-05-26 | 35d | 38d | 0d |
| 136 | 1.3.3.1.16.3 | Structural GA drawings | 39d | 2026-03-24 A | 2026-05-07 | 134FS+12d | 40% | 23.4d | 2026-03-24 | 2026-05-07 | 39d | 117d | 0d |
| 137 | 1.3.3.1.17 | **Transfer House TH6A & 6B** | 228d | 2025-09-05 A | 2026-05-27 |  | 77% | 53d | 2025-09-05 | 2026-05-27 | 228d | 205d |  |
| 138 | 1.3.3.1.17.1 | Mechanical GA and Sectional drawing | 167d | 2025-09-05 A | 2026-03-17 A | 21SS+40d | 100% |  | 2025-09-05 | 2026-04-15 | 192d |  |  |
| 139 | 1.3.3.1.17.2 | Civil drawings | 36d | 2026-04-16 A | 2026-05-27 | 140SS+13d | 25% | 27d | 2026-04-16 | 2026-05-27 | 36d | 120d | 0d |
| 140 | 1.3.3.1.17.3 | Structural GA drawings | 39d | 2026-04-01 A | 2026-05-15 | 138FS-13d | 25% | 29.25d | 2026-04-01 | 2026-05-15 | 39d | 215d | 0d |
| 141 | 1.3.3.1.18 | **Conveyor 2018** | 152d | 2025-12-03 A | 2026-05-27 |  | 52% | 72.62d | 2025-12-03 | 2026-05-11 | 138d | 96d |  |
| 142 | 1.3.3.1.18.1 | Mechanical GA and Sectional drawing | 15d | 2025-12-03 A | 2025-12-19 A | 9SS+14d, 20SS+216d | 100% |  | 2025-12-03 | 2025-12-19 | 15d |  |  |
| 143 | 1.3.3.1.18.2 | Civil drawings | 73d | 2026-03-04 A | 2026-05-27 | 144SS+26d | 40% | 43.8d | 2026-03-04 | 2026-05-11 | 59d | 5d | 0d |
| 144 | 1.3.3.1.18.3 | Structural GA drawings | 99d | 2026-02-02 A | 2026-05-27 | 142FS-26d | 54% | 45.54d | 2026-02-02 | 2026-04-16 | 64d | 96d | 0d |
| 145 | 1.3.3.1.19 | **Transfer House TH7** | 152d | 2025-10-16 A | 2026-04-09 A |  | 100% |  | 2025-10-16 | 2026-06-10 | 205d |  |  |
| 146 | 1.3.3.1.19.1 | Mechanical GA and Sectional drawing | 41d | 2025-10-16 A | 2025-12-02 A | 21SS+75d | 100% |  | 2025-10-16 | 2025-12-02 | 41d |  |  |
| 147 | 1.3.3.1.19.2 | Civil drawings | 31d | 2026-03-05 A | 2026-04-09 A | 148SS+50d | 100% |  | 2026-04-14 | 2026-06-10 | 50d |  |  |
| 148 | 1.3.3.1.19.3 | Structural GA drawings | 51d | 2026-01-06 A | 2026-03-05 A | 146FS+30d | 100% |  | 2026-03-17 | 2026-05-14 | 51d |  |  |

| ID | WBS | Task | Duration | Start | Finish | Predecessors | Complete | Remaining | Baseline start | Baseline finish | Baseline duration | Total slack | Free slack |
| --- | --- | --- | --- | --- | --- | --- | --- | --- | --- | --- | --- | --- | --- |
| 149 | 1.3.3.1.20 | **Conveyor 2019** | 113d | 2026-01-15 A | 2026-05-26 |  | 54% | 52.22d | 2026-01-15 | 2026-05-27 | 113.2d | 131d |  |
| 150 | 1.3.3.1.20.1 | Mechanical GA and Sectional drawing | 45.8d | 2026-01-15 A | 2026-03-26 A | 9SS+14d, 20SS+275d | 100% |  | 2026-01-15 | 2026-04-30 | 75d |  |  |
| 151 | 1.3.3.1.20.2 | Civil drawings | 38d | 2026-04-13 A | 2026-05-26 | 152SS+13d | 30% | 26.6d | 2026-04-20 | 2026-05-27 | 32d | 30d | 0d |
| 152 | 1.3.3.1.20.3 | Structural GA drawings | 51d | 2026-03-20 A | 2026-05-18 | 150FS-45d | 30% | 35.7d | 2026-03-20 | 2026-05-14 | 47d | 138d | 7d |
| 153 | 1.3.3.1.21 | **Transfer House TH8A** | 206d | 2025-10-01 A | 2026-05-27 |  | 70% | 61.73d | 2025-10-01 | 2026-05-18 | 198d | 577d |  |
| 154 | 1.3.3.1.21.1 | Mechanical GA and Sectional drawing | 128d | 2025-10-01 A | 2026-02-25 A | 21SS+59d | 100% |  | 2025-10-01 | 2026-02-25 | 128d |  |  |
| 155 | 1.3.3.1.21.2 | Civil drawings | 78d | 2026-02-26 A | 2026-05-27 | 156SS+20d | 41% | 46.02d | 2026-02-26 | 2026-05-18 | 70d | 134d | 0d |
| 156 | 1.3.3.1.21.3 | Structural GA drawings | 98d | 2026-02-03 A | 2026-05-27 | 154FS-20d | 54% | 45.08d | 2026-02-03 | 2026-04-15 | 62d | 577d | 0d |
| 157 | 1.3.3.1.22 | **Transfer House TH8** | 178d | 2025-11-03 A | 2026-05-27 |  | 66% | 59.9d | 2025-11-03 | 2026-05-26 | 177d | 222d |  |
| 158 | 1.3.3.1.22.1 | Mechanical GA and Sectional drawing | 125d | 2025-11-03 A | 2026-03-26 A | 21SS+100d | 100% |  | 2025-11-03 | 2026-04-15 | 142d |  |  |
| 159 | 1.3.3.1.22.2 | Civil drawings | 34d | 2026-04-18 A | 2026-05-27 | 160SS+24d | 20% | 27.2d | 2026-04-17 | 2026-05-26 | 34d | 113d | 0d |
| 160 | 1.3.3.1.22.3 | Structural GA drawings | 58d | 2026-03-21 A | 2026-05-27 | 158FS-45d | 21% | 45.82d | 2026-03-18 | 2026-05-11 | 47d | 222d | 0d |
| 161 | 1.3.3.1.23 | **Conveyor 2020** | 114d | 2026-01-15 A | 2026-05-27 |  | 61% | 44.88d | 2026-01-15 | 2026-05-27 | 114d | 198d |  |
| 162 | 1.3.3.1.23.1 | Mechanical GA and Sectional drawing | 108d | 2026-01-15 A | 2026-05-20 | 9SS+14d, 20SS+250d | 89% | 11.88d | 2026-01-15 | 2026-04-25 | 87d | 12d | 0d |
| 163 | 1.3.3.1.23.2 | Civil drawings | 38d | 2026-04-14 A | 2026-05-27 | 164SS+11d | 25% | 28.5d | 2026-04-14 | 2026-05-27 | 38d | 112d | 0d |
| 164 | 1.3.3.1.23.3 | Structural GA drawings | 48d | 2026-04-01 A | 2026-05-26 | 162FS-43d | 25% | 36d | 2026-03-27 | 2026-05-18 | 45d | 199d | 0d |
| 165 | 1.3.3.1.24 | **Transfer House TH8B** | 167d | 2025-11-15 A | 2026-05-27 |  | 55% | 75.11d | 2025-11-15 | 2026-05-27 | 167d | 143d |  |
| 166 | 1.3.3.1.24.1 | Mechanical GA and Sectional drawing | 104d | 2025-11-15 A | 2026-03-14 A | 21SS+100d | 100% |  | 2025-11-15 | 2026-04-15 | 131d |  |  |
| 167 | 1.3.3.1.24.2 | Civil drawings | 36d | 2026-04-16 | 2026-05-27 | 168SS+13d |  |  | 2026-04-16 | 2026-05-27 | 36d | 143d | 0d |
| 168 | 1.3.3.1.24.3 | Structural GA drawings | 49d | 2026-04-01 | 2026-05-27 | 166FS+14d |  |  | 2026-03-17 | 2026-05-12 | 49d | 143d | 0d |
| 169 | 1.3.3.1.25 | **Substation 1** | 169d | 2025-10-17 A | 2026-04-30 |  | 85% | 25.24d | 2025-10-17 | 2026-04-30 | 169d | 59d |  |
| 170 | 1.3.3.1.25.1 | Electrical GA and Sectional drawing of Substation | 54d | 2025-10-17 A | 2025-12-18 A | 13SS+60d | 100% |  | 2025-10-17 | 2025-12-18 | 54d |  |  |
| 171 | 1.3.3.1.25.2 | Civil drawing of Substation | 89d | 2026-01-17 A | 2026-04-30 | 170FF+26d | 76% | 21.36d | 2026-01-17 | 2026-04-30 | 89d | 59d | 0d |
| 172 | 1.3.3.1.26 | **Substation 2** | 110d | 2025-10-17 A | 2026-02-20 A |  | 100% |  | 2025-10-17 | 2026-04-30 | 169d |  |  |
| 173 | 1.3.3.1.26.1 | Electrical GA and Sectional drawing of Substation | 54d | 2025-10-17 A | 2025-12-18 A | 170SS-7d | 100% |  | 2025-10-17 | 2025-12-18 | 54d |  |  |
| 174 | 1.3.3.1.26.2 | Civil drawing of Substation | 37d | 2026-01-09 A | 2026-02-20 A | 173FF+26d | 100% |  | 2026-01-09 | 2026-04-30 | 96d |  |  |

| ID | WBS | Task | Duration | Start | Finish | Predecessors | Complete | Remaining | Baseline start | Baseline finish | Baseline duration | Total slack | Free slack | Constraint |
| --- | --- | --- | --- | --- | --- | --- | --- | --- | --- | --- | --- | --- | --- | --- |
| 175 | 1.3.3.1.27 | **Substation 3** | 169d | 2025-10-17 A | 2026-04-30 |  | 85% | 24.88d | 2025-10-17 | 2026-04-30 | 169d | 49d |  |  |
| 176 | 1.3.3.1.27.1 | Electrical GA and Sectional drawing of Substation | 54d | 2025-10-17 A | 2025-12-18 A | 173SS | 100% |  | 2025-10-17 | 2025-12-18 | 54d |  |  |  |
| 177 | 1.3.3.1.27.2 | Civil drawing of Substation | 96d | 2026-01-09 A | 2026-04-30 | 176FF+26d | 77% | 22.08d | 2026-01-09 | 2026-04-30 | 96d | 49d | 0d |  |
| 178 | 1.3.3.1.28 | **Substation 4** | 169d | 2025-10-17 A | 2026-04-30 |  | 85% | 24.88d | 2025-10-17 | 2026-04-30 | 169d | 43d |  |  |
| 179 | 1.3.3.1.28.1 | Electrical GA and Sectional drawing of Substation | 54d | 2025-10-17 A | 2025-12-18 A | 176SS | 100% |  | 2025-10-17 | 2025-12-18 | 54d |  |  | finish no earlier than 2025-12-18 |
| 180 | 1.3.3.1.28.2 | Civil drawing of Substation | 96d | 2026-01-09 A | 2026-04-30 | 179FF+26d | 77% | 22.08d | 2026-01-09 | 2026-04-30 | 96d | 43d | 0d |  |
| 181 | 1.3.3.1.29 | **Pump House and Reservoir** | 49d | 2026-04-01 | 2026-05-27 |  |  |  | 2026-04-01 | 2026-05-27 | 49d | 54d |  |  |
| 182 | 1.3.3.1.29.1 | Mechanical , Utility, Electrical drawing | 49d | 2026-04-01 | 2026-05-27 | 9FS+186d |  |  | 2026-04-01 | 2026-05-27 | 49d | 54d | 0d |  |
| 183 | 1.3.3.1.29.2 | Civil drawing of Pump House | 36d | 2026-04-16 | 2026-05-27 | 182SS+13d |  |  | 2026-04-16 | 2026-05-27 | 36d | 54d | 0d |  |
| 184 | 1.3.3.1.30 | **Office Building #1 and Toilet Block** | 74d | 2025-09-09 A | 2025-12-03 A |  | 100% |  | 2025-09-09 | 2025-12-03 | 74d |  |  |  |
| 185 | 1.3.3.1.30.1 | Civil drawings of Office Building#1 and Toilets | 74d | 2025-09-09 A | 2025-12-03 A | 9FS+10d | 100% |  | 2025-09-09 | 2025-12-03 | 74d |  |  |  |
| 186 | 1.3.3.1.31 | **Office Building #2 and Toilet Block** | 134d | 2025-11-12 A | 2026-04-15 |  | 94% | 8.04d | 2025-11-12 | 2026-04-15 | 134d | 148d |  |  |
| 187 | 1.3.3.1.31.1 | Civil drawings of Office Building#2 and Toilets | 134d | 2025-11-12 A | 2026-04-15 | 9FS+65d | 94% | 8.04d | 2025-11-12 | 2026-04-15 | 134d | 148d | 41d |  |
| 188 | 1.3.3.1.32 | **Miscellaneous Civil Work like Car, Truck Parking, Boundary Wall etc** | 299d | 2025-11-18 A | 2026-10-30 |  | 50% | 149.5d | 2025-11-18 | 2026-10-30 | 299d | 43d |  |  |
| 189 | 1.3.3.1.32.1 | Civil drawings of Miscellaneous Civil Work | 220d | 2025-11-18 A | 2026-10-30 | 24FS+223d | 50% | 110d | 2025-11-18 | 2026-10-30 | 220d | 43d | 0d |  |
| 190 | 1.3.3.1.33 | **Haul Roads and Service Roads** | 125.9d | 2025-12-22 A | 2026-05-15 |  | 80% | 25.18d | 2025-12-22 | 2026-05-15 | 125.9d | 114.1d |  |  |
| 191 | 1.3.3.1.33.1 | Civil drawings for Haul Roads and Service Roads | 125d | 2025-12-22 A | 2026-05-15 | 38FS-78d | 80% | 25d | 2025-12-22 | 2026-05-15 | 125d | 114.1d | 1d |  |
| 192 | 1.3.3.2 | **Deposit 11C** | 428d | 2025-07-21 A | 2026-11-30 |  | 74% | 112.25d | 2025-07-21 | 2026-11-30 | 428d | 417d |  |  |
| 193 | 1.3.3.2.1 | **Primary Crusher** | 289d | 2025-12-01 A | 2026-10-31 |  | 47% | 153.68d | 2025-12-01 | 2026-10-31 | 289d | 143d |  |  |
| 194 | 1.3.3.2.1.1 | Mechanical GA and Sectional drawing | 87d | 2025-12-01 A | 2026-03-10 A | 472SS+35d | 100% |  | 2025-12-01 | 2026-04-30 | 131d |  |  |  |
| 195 | 1.3.3.2.1.2 | Civil drawings | 53d | 2026-03-26 A | 2026-05-27 | 196FF | 50% | 26.5d | 2026-04-10 | 2026-05-27 | 41d | 0d |  |  |
| 196 | 1.3.3.2.1.3 | Structural GA drawings | 53d | 2026-03-27 A | 2026-05-27 | 194FS+14d | 50% | 26.5d | 2026-03-27 | 2026-05-27 | 53d | 0d |  |  |
| 197 | 1.3.3.2.1.4 | Electrical drawing including SLD, Equipment Layout, Earthing& Lighting Protection, Cable Tray and Illumination Layout | 53d | 2026-07-31 | 2026-09-30 | 61FS+55d, 65FS+55d |  |  | 2026-07-31 | 2026-09-30 | 53d | 159d |  |  |
| 198 | 1.3.3.2.1.5 | Utility drawings | 53d | 2026-09-01 | 2026-10-31 | 9, 20FS+331d |  |  | 2026-09-01 | 2026-10-31 | 53d | 143d | 25d |  |

| ID | WBS | Task | Duration | Start | Finish | Predecessors | Complete | Remaining | Baseline start | Baseline finish | Baseline duration | Total slack | Free slack |
| --- | --- | --- | --- | --- | --- | --- | --- | --- | --- | --- | --- | --- | --- |
| 199 | 1.3.3.2.2 | **Conveyor 3005** | 192d | 2025-10-17 A | 2026-05-27 |  | 73% | 51.27d | 2025-10-17 | 2026-05-27 | 192d | 145d |  |
| 200 | 1.3.3.2.2.1 | Mechanical GA and Sectional drawing | 104d | 2025-10-17 A | 2026-02-13 A | 9, 29FS+80d | 100% |  | 2025-10-17 | 2026-02-13 | 104d |  |  |
| 201 | 1.3.3.2.2.2 | Civil drawings | 55d | 2026-03-25 A | 2026-05-27 | 202SS+65d | 30% | 38.5d | 2026-03-25 | 2026-05-27 | 55d | 41d | 36d |
| 202 | 1.3.3.2.2.3 | Structural GA drawings | 120d | 2026-01-08 A | 2026-05-27 | 200SS+78d, 49FF+20d | 70% | 36d | 2026-01-08 | 2026-04-30 | 97d | 145d | 0d |
| 203 | 1.3.3.2.3 | **Secondary Crusher** | 336d | 2025-10-21 A | 2026-11-14 |  | 60% | 135.79d | 2025-10-21 | 2026-11-14 | 336d | 135d |  |
| 204 | 1.3.3.2.3.1 | Mechanical GA and Sectional drawing | 35d | 2025-10-21 A | 2025-11-29 A | 478SS | 100% |  | 2025-10-21 | 2025-11-29 | 35d |  |  |
| 205 | 1.3.3.2.3.2 | Civil drawings | 23d | 2026-01-20 A | 2026-03-13 A | 206FF | 100% |  | 2026-01-20 | 2026-05-27 | 87d |  |  |
| 206 | 1.3.3.2.3.3 | Structural GA drawings | 161d | 2025-11-22 A | 2026-05-27 | 204FS-7d | 85% | 24.15d | 2025-11-22 | 2026-05-27 | 161d | 0d |  |
| 207 | 1.3.3.2.3.4 | Electrical drawing including SLD, Equipment Layout, Earthing& Lighting Protection, Cable Tray and Illumination Layout | 55d | 2026-08-12 | 2026-10-14 | 61FS+65d, 65FS+65d |  |  | 2026-08-12 | 2026-10-14 | 55d | 162d |  |
| 208 | 1.3.3.2.3.5 | Utility drawings | 53d | 2026-09-15 | 2026-11-14 | 9, 20FS+343d |  |  | 2026-09-15 | 2026-11-14 | 53d | 131d | 13d |
| 209 | 1.3.3.2.4 | **Conveyor 3009** | 191d | 2025-10-18 A | 2026-05-27 |  | 90% | 18.46d | 2025-10-18 | 2026-05-21 | 186d | 65d |  |
| 210 | 1.3.3.2.4.1 | Mechanical GA and Sectional drawing | 52d | 2025-10-18 A | 2025-12-17 A | 9, 29 | 100% |  | 2025-10-18 | 2025-12-17 | 52d |  |  |
| 211 | 1.3.3.2.4.2 | Civil drawings | 10d | 2026-03-27 A | 2026-04-10 A | 212FS-50d | 100% |  | 2026-03-27 | 2026-05-21 | 48d |  |  |
| 212 | 1.3.3.2.4.3 | Structural GA drawings | 58d | 2025-12-22 A | 2026-05-27 | 210FS+7d | 80% | 11.6d | 2025-12-22 | 2026-04-30 | 35d | 65d | 0d |
| 213 | 1.3.3.2.5 | **Transfer House TH1** | 194d | 2025-10-15 A | 2026-05-27 |  | 81% | 36.8d | 2025-10-15 | 2026-05-23 | 191d | 120d |  |
| 214 | 1.3.3.2.5.1 | Mechanical GA and Sectional drawing | 21d | 2025-10-15 A | 2025-11-07 A | 30SS+52d | 100% |  | 2025-10-15 | 2025-11-07 | 21d |  |  |
| 215 | 1.3.3.2.5.2 | Civil drawings | 55d | 2026-03-25 A | 2026-05-27 | 216SS+78d | 40% | 33d | 2026-03-25 | 2026-05-23 | 52d | 50d | 0d |
| 216 | 1.3.3.2.5.3 | Structural GA drawings | 133d | 2025-12-25 A | 2026-05-27 | 214SS+78d | 95% | 6.65d | 2025-12-25 | 2026-04-30 | 110d | 120d | 0d |
| 217 | 1.3.3.2.6 | **Conveyor 3010** | 163d | 2025-11-20 A | 2026-05-27 |  | 75% | 40.68d | 2025-11-20 | 2026-05-11 | 149d | 577d |  |
| 218 | 1.3.3.2.6.1 | Mechanical GA and Sectional drawing | 63d | 2025-11-20 A | 2026-01-30 A | 30FS+78d | 100% |  | 2025-11-20 | 2026-01-30 | 63d |  |  |
| 219 | 1.3.3.2.6.2 | Civil drawings | 54d | 2026-03-26 A | 2026-05-27 | 220SS+57d | 36% | 34.56d | 2026-03-12 | 2026-05-11 | 52d | 577d |  |
| 220 | 1.3.3.2.6.3 | Structural GA drawings | 108d | 2026-01-19 A | 2026-05-27 | 218SS+70d | 80% | 21.6d | 2026-01-19 | 2026-04-30 | 85d | 148d | 0d |
| 221 | 1.3.3.2.7 | **Transfer House TH2** | 213d | 2025-07-26 A | 2026-03-30 A |  | 100% |  | 2025-07-26 | 2026-05-16 | 254d |  |  |
| 222 | 1.3.3.2.7.1 | Mechanical GA and Sectional drawing | 128d | 2025-07-26 A | 2025-12-22 A | 30SS | 100% |  | 2025-07-26 | 2025-12-22 | 128d |  |  |
| 223 | 1.3.3.2.7.2 | Civil drawings | 25d | 2026-03-02 A | 2026-03-30 A | 224SS+60d | 100% |  | 2026-03-02 | 2026-05-16 | 66d |  |  |
| 224 | 1.3.3.2.7.3 | Structural GA drawings | 57d | 2025-12-23 A | 2026-02-25 A | 222 | 100% |  | 2025-12-23 | 2026-05-09 | 120d |  |  |

| ID | WBS | Task | Duration | Start | Finish | Predecessors | Complete | Remaining | Baseline start | Baseline finish | Baseline duration | Total slack | Free slack | Constraint |
| --- | --- | --- | --- | --- | --- | --- | --- | --- | --- | --- | --- | --- | --- | --- |
| 225 | 1.3.3.2.8 | **Conveyor 3011** | 198d | 2025-10-10 A | 2026-05-27 |  | 86% | 28.5d | 2025-10-10 | 2026-05-26 | 197d | 115d |  |  |
| 226 | 1.3.3.2.8.1 | Mechanical GA and Sectional drawing | 119d | 2025-10-10 A | 2026-02-24 A | 9, 29, 30 | 100% |  | 2025-10-10 | 2026-03-25 | 144d |  |  |  |
| 227 | 1.3.3.2.8.2 | Civil drawings | 53d | 2026-03-27 A | 2026-05-27 | 228SS+78d | 35% | 34.45d | 2026-03-27 | 2026-05-26 | 52d | 46d | 0d |  |
| 228 | 1.3.3.2.8.3 | Structural GA drawings | 131d | 2025-12-27 A | 2026-05-27 | 226FS-100d | 93% | 9.17d | 2025-12-27 | 2026-04-30 | 108d | 115d | 0d |  |
| 229 | 1.3.3.2.9 | **Transfer House TH3** | 243d | 2025-08-19 A | 2026-05-27 |  | 87% | 30.66d | 2025-08-19 | 2026-05-25 | 241d | 136d |  |  |
| 230 | 1.3.3.2.9.1 | Mechanical GA and Sectional drawing | 70d | 2025-08-19 A | 2025-11-07 A | 30FS+78d | 100% |  | 2025-08-19 | 2025-11-07 | 70d |  |  |  |
| 231 | 1.3.3.2.9.2 | Civil drawings | 54d | 2026-03-26 A | 2026-05-27 | 232SS+85d | 50% | 27d | 2026-03-26 | 2026-05-25 | 52d | 136d | 38d |  |
| 232 | 1.3.3.2.9.3 | Structural GA drawings | 90d | 2025-12-18 A | 2026-03-31 A | 230SS+104d | 100% |  | 2025-12-18 | 2026-05-11 | 125d |  |  |  |
| 233 | 1.3.3.2.10 | **Primary Stock Pile and Conveyor 3012** | 354d | 2025-10-15 A | 2026-11-30 |  | 54% | 161.64d | 2025-10-15 | 2026-11-30 | 354d | 118d |  |  |
| 234 | 1.3.3.2.10.1 | Mechanical GA and Sectional drawing | 102d | 2025-10-15 A | 2026-02-09 A | 29FS+26d, 30FS+52d | 100% |  | 2025-10-15 | 2026-02-09 | 102d |  |  |  |
| 235 | 1.3.3.2.10.2 | Civil drawings | 53d | 2026-03-27 A | 2026-05-27 | 236FF | 50% | 26.5d | 2026-04-03 | 2026-05-27 | 47d | 0d |  | finish no earlier than 2026-05-27 |
| 236 | 1.3.3.2.10.3 | Structural GA drawings of Conveyor 3012 | 92d | 2026-02-10 A | 2026-05-27 | 234 | 70% | 27.6d | 2026-02-10 | 2026-05-27 | 92d | 0d |  |  |
| 237 | 1.3.3.2.10.4 | Electrical drawing including SLD, Equipment Layout, Earthing& Lighting Protection, Cable Tray and Illumination Layout | 55d | 2026-08-29 | 2026-10-31 | 61FS+80d, 65FS+80d |  |  | 2026-08-29 | 2026-10-31 | 55d | 137d |  |  |
| 238 | 1.3.3.2.10.5 | Utility drawings | 53d | 2026-09-30 | 2026-11-30 | 9, 20FS+356d |  |  | 2026-09-30 | 2026-11-30 | 53d | 118d | 0d |  |
| 239 | 1.3.3.2.11 | **Conveyor 3016** | 182d | 2025-10-29 A | 2026-05-27 |  | 76% | 44.42d | 2025-10-29 | 2026-05-15 | 172d | 98d |  |  |
| 240 | 1.3.3.2.11.1 | Mechanical GA and Sectional drawing | 46d | 2025-10-29 A | 2025-12-21 A | 9SS+14d, 20SS+100d | 100% |  | 2025-10-29 | 2025-12-21 | 46d |  |  |  |
| 241 | 1.3.3.2.11.2 | Civil drawings | 106d | 2026-01-23 A | 2026-05-27 | 240FS+25d | 65% | 37.1d | 2026-01-23 | 2026-05-15 | 96d | 98d | 0d |  |
| 242 | 1.3.3.2.12 | **Transfer House TH4** | 243d | 2025-08-19 A | 2026-05-27 |  | 66% | 83.61d | 2025-08-19 | 2026-05-23 | 240d | 122d |  |  |
| 243 | 1.3.3.2.12.1 | Mechanical GA and Sectional drawing | 72d | 2025-08-19 A | 2025-11-10 A | 30SS+20d | 100% |  | 2025-08-19 | 2025-11-10 | 72d |  |  |  |
| 244 | 1.3.3.2.12.2 | Civil drawings | 48d | 2026-04-02 | 2026-05-27 | 245FS-48d |  |  | 2026-04-01 | 2026-05-23 | 46d | 122d | 23d |  |
| 245 | 1.3.3.2.12.3 | Structural GA drawings | 124d | 2026-01-03 A | 2026-05-27 | 243FS+56d | 71% | 35.96d | 2026-01-03 | 2026-04-30 | 101d | 122d | 0d |  |
| 246 | 1.3.3.2.13 | **Transfer House TH5** | 243d | 2025-08-19 A | 2026-05-27 |  | 78% | 52.28d | 2025-08-19 | 2026-05-25 | 241d | 42d |  |  |
| 247 | 1.3.3.2.13.1 | Mechanical GA and Sectional drawing | 72d | 2025-08-19 A | 2025-11-10 A | 30SS+20d | 100% |  | 2025-08-19 | 2025-11-10 | 72d |  |  |  |
| 248 | 1.3.3.2.13.2 | Civil drawings | 47d | 2026-04-03 | 2026-05-27 | 249FS-47d |  |  | 2026-04-01 | 2026-05-25 | 47d | 42d | 0d |  |
| 249 | 1.3.3.2.13.3 | Structural GA drawings | 171d | 2025-11-11 A | 2026-05-27 | 247 | 91% | 15.39d | 2025-11-11 | 2026-04-30 | 148d | 42d | 0d |  |

| ID | WBS | Task | Duration | Start | Finish | Predecessors | Complete | Remaining | Baseline start | Baseline finish | Baseline duration | Total slack | Free slack |
| --- | --- | --- | --- | --- | --- | --- | --- | --- | --- | --- | --- | --- | --- |
| 250 | 1.3.3.2.14 | **Conveyor 3017** | 235d | 2025-08-28 A | 2026-05-27 |  | 75% | 58.78d | 2025-08-28 | 2026-05-21 | 230d | 94d |  |
| 251 | 1.3.3.2.14.1 | Mechanical GA and Sectional drawing | 125d | 2025-08-28 A | 2026-01-19 A | 9, 29, 30 | 100% |  | 2025-08-28 | 2026-01-19 | 125d |  |  |
| 252 | 1.3.3.2.14.2 | Civil drawings | 48d | 2026-04-02 | 2026-05-27 | 253FS-48d |  |  | 2026-03-27 | 2026-05-21 | 48d | 94d | 25d |
| 253 | 1.3.3.2.14.3 | Structural GA drawings | 157d | 2025-11-27 A | 2026-05-27 | 251SS+78d | 78% | 34.54d | 2025-11-27 | 2026-04-30 | 134d | 94d | 0d |
| 254 | 1.3.3.2.15 | **Transfer House TH6** | 243d | 2025-08-19 A | 2026-05-27 |  | 80% | 47.51d | 2025-08-19 | 2026-05-23 | 240d | 28d |  |
| 255 | 1.3.3.2.15.1 | Mechanical GA and Sectional drawing | 84d | 2025-08-19 A | 2025-11-24 A | 30SS+20d | 100% |  | 2025-08-19 | 2025-11-24 | 84d |  |  |
| 256 | 1.3.3.2.15.2 | Civil drawings | 46d | 2026-04-04 | 2026-05-27 | 257FS-45d |  |  | 2026-04-02 | 2026-05-23 | 45d | 28d | 2d |
| 257 | 1.3.3.2.15.3 | Structural GA drawings | 164d | 2025-11-18 A | 2026-05-26 | 255SS+78d | 93% | 11.48d | 2025-11-18 | 2026-04-30 | 142d | 28d | 0d |
| 258 | 1.3.3.2.16 | **Transfer House TH7** | 243d | 2025-08-19 A | 2026-05-27 |  | 70% | 72.41d | 2025-08-19 | 2026-05-23 | 240d | 26d |  |
| 259 | 1.3.3.2.16.1 | Mechanical GA and Sectional drawing | 107d | 2025-08-19 A | 2025-12-20 A | 30SS+20d | 100% |  | 2025-08-19 | 2025-12-20 | 107d |  |  |
| 260 | 1.3.3.2.16.2 | Civil drawings | 45d | 2026-04-06 | 2026-05-27 | 261FS-44d |  |  | 2026-04-02 | 2026-05-23 | 45d | 26d | 0d |
| 261 | 1.3.3.2.16.3 | Structural GA drawings | 147d | 2025-12-08 A | 2026-05-26 | 259SS+95d | 70% | 44.1d | 2025-12-08 | 2026-04-30 | 125d | 26d | 0d |
| 262 | 1.3.3.2.17 | **Conveyor 2017A** | 238d | 2025-08-25 A | 2026-05-27 |  | 74% | 62.84d | 2025-08-25 | 2026-05-22 | 234d | 105d |  |
| 263 | 1.3.3.2.17.1 | Mechanical GA and Sectional drawing | 164d | 2025-08-25 A | 2026-03-02 A | 9SS+65d, 29SS+65d, 30SS+65d | 100% |  | 2025-08-25 | 2026-04-10 | 198d |  |  |
| 264 | 1.3.3.2.17.2 | Civil drawings | 44d | 2026-04-07 | 2026-05-27 | 265FS-43d |  |  | 2026-04-02 | 2026-05-22 | 44d | 105d | 0d |
| 265 | 1.3.3.2.17.3 | Structural GA drawings | 127d | 2025-12-30 A | 2026-05-26 | 263FS-100d | 65% | 44.45d | 2025-12-30 | 2026-04-30 | 105d | 105d | 0d |
| 266 | 1.3.3.2.18 | **Conveyor 3018** | 268d | 2025-07-21 A | 2026-05-27 |  | 77% | 62.43d | 2025-07-21 | 2026-05-21 | 263d | 48d |  |
| 267 | 1.3.3.2.18.1 | Mechanical GA and Sectional drawing | 133d | 2025-07-21 A | 2025-12-22 A | 9SS+52d, 29SS+52d, 30SS+52d | 100% |  | 2025-07-21 | 2025-12-22 | 133d |  |  |
| 268 | 1.3.3.2.18.2 | Civil drawings | 40d | 2026-04-11 A | 2026-05-27 | 269FS-40d | 15% | 34d | 2026-04-07 | 2026-05-21 | 39d | 48d | 0d |
| 269 | 1.3.3.2.18.3 | Structural GA drawings | 134d | 2025-12-24 A | 2026-05-27 | 267 | 72% | 37.52d | 2025-12-24 | 2026-05-06 | 116d | 6d | 0d |
| 270 | 1.3.3.2.19 | **Transfer House TH8** | 232.92d | 2025-08-30 A | 2026-05-27 |  | 82% | 43.09d | 2025-08-30 | 2026-05-25 | 230.92d | 106.08d |  |
| 271 | 1.3.3.2.19.1 | Mechanical GA and Sectional drawing | 170d | 2025-08-30 A | 2026-03-14 A | 30SS+20d | 100% |  | 2025-08-30 | 2026-04-10 | 193d |  |  |
| 272 | 1.3.3.2.19.2 | Civil drawings | 48d | 2026-04-01 | 2026-05-27 | 273FS-47d |  |  | 2026-04-01 | 2026-05-25 | 46d | 106.08d | 0d |
| 273 | 1.3.3.2.19.3 | Structural GA drawings | 118d | 2025-12-18 A | 2026-05-26 | 271FS-104d | 88% | 14.16d | 2025-12-18 | 2026-04-30 | 96d | 106.08d | 0d |

| ID | WBS | Task | Duration | Start | Finish | Predecessors | Complete | Remaining | Baseline start | Baseline finish | Baseline duration | Total slack | Free slack |
| --- | --- | --- | --- | --- | --- | --- | --- | --- | --- | --- | --- | --- | --- |
| 274 | 1.3.3.2.20 | **Substation 1** | 191.8d | 2025-10-17 A | 2026-05-27 |  | 84% | 30.53d | 2025-10-17 | 2026-04-30 | 169d | 4.2d |  |
| 275 | 1.3.3.2.20.1 | Electrical GA and Sectional drawing of Substation | 119d | 2025-10-17 A | 2026-03-03 A | 170SS | 100% |  | 2025-10-17 | 2026-03-31 | 143d |  |  |
| 276 | 1.3.3.2.20.2 | Civil drawing of Substation | 54d | 2026-03-02 A | 2026-05-27 | 275FS-26d | 49% | 27.54d | 2026-03-02 | 2026-04-30 | 52d | 4.2d | 0d |
| 277 | 1.3.3.2.21 | **Substation 2** | 117d | 2025-10-17 A | 2026-02-28 A |  | 100% |  | 2025-10-17 | 2026-02-28 | 117d |  |  |
| 278 | 1.3.3.2.21.1 | Electrical GA and Sectional drawing of Substation | 54d | 2025-10-17 A | 2025-12-18 A | 275SS | 100% |  | 2025-10-17 | 2025-12-18 | 54d |  |  |
| 279 | 1.3.3.2.21.2 | Civil drawing of Substation | 63d | 2025-12-19 A | 2026-02-28 A | 278 | 100% |  | 2025-12-19 | 2026-02-28 | 63d |  |  |
| 280 | 1.3.3.2.22 | **Pump House and Reservoir** | 49d | 2026-04-01 | 2026-05-27 |  |  |  | 2026-04-01 | 2026-05-27 | 49d | 137d |  |
| 281 | 1.3.3.2.22.1 | Mechanical and Utility GA and Sectional drawing | 49d | 2026-04-01 | 2026-05-27 | 182SS |  |  | 2026-04-01 | 2026-05-21 | 44d | 137d | 0d |
| 282 | 1.3.3.2.22.2 | Civil drawing of Pump House | 36d | 2026-04-16 | 2026-05-27 | 281SS+13d |  |  | 2026-04-16 | 2026-05-27 | 36d | 137d | 2d |
| 283 | 1.3.3.2.23 | **Office Building #1 and Toilet Block** | 85d | 2025-09-09 A | 2025-12-16 A |  | 100% |  | 2025-09-09 | 2025-12-16 | 85d |  |  |
| 284 | 1.3.3.2.23.1 | Civil drawings of Office Building#1 and Toilets | 85d | 2025-09-09 A | 2025-12-16 A | 9FS+10d | 100% |  | 2025-09-09 | 2025-12-16 | 85d |  |  |
| 285 | 1.3.3.2.24 | **Office Building#2 and Out Door Toilet** | 134d | 2025-11-27 A | 2026-04-30 |  | 95% | 6.7d | 2025-11-27 | 2026-04-15 | 121d | 122d |  |
| 286 | 1.3.3.2.24.1 | Civil drawings of Office Building#2 and Toilets | 134d | 2025-11-27 A | 2026-04-30 | 9FS+78d | 95% | 6.7d | 2025-11-27 | 2026-04-15 | 121d | 122d | 0d |
| 287 | 1.3.3.2.25 | **Miscellaneous Civil Work like Car, Truck Parking, Boundary Wall etc** | 299d | 2025-11-18 A | 2026-10-30 |  | 50% | 149.5d | 2025-11-18 | 2026-10-30 | 299d | 89d |  |
| 288 | 1.3.3.2.25.1 | Civil drawings of Miscellaneous Civil Work | 194d | 2025-11-18 A | 2026-10-30 | 189SS+160d, 35FS+223d | 50% | 97d | 2025-11-18 | 2026-10-30 | 194d | 89d | 0d |
| 289 | 1.3.3.2.26 | **Haul and Service Roads** | 124.5d | 2025-12-23 A | 2026-05-15 |  | 78% | 27.39d | 2025-12-23 | 2026-05-15 | 124.5d | 166.5d |  |
| 290 | 1.3.3.2.26.1 | Civil drawings for Haul Roads and Service Roads | 123d | 2025-12-23 A | 2026-05-15 | 191SS | 78% | 27.06d | 2025-12-23 | 2026-05-15 | 123d | 166.5d | 6.5d |
| 291 | 1.4 | **Supply/Delivery** | 757d | 2025-03-29 A | 2027-08-27 |  | 26% | 562.28d | 2025-03-29 | 2027-08-27 | 757d | 55d |  |
| 292 | 1.4.1 | **Building Steel Structures and sheeting** | 468d | 2026-03-02 A | 2027-08-27 |  | 2% | 457.35d | 2026-03-02 | 2027-08-27 | 468d | 49d |  |
| 293 | 1.4.1.1 | **Deposit 14** | 468d | 2026-03-02 A | 2027-08-27 |  | 2% | 457.35d | 2026-03-02 | 2027-08-27 | 468d | 49d |  |
| 294 | 1.4.1.1.1 | **Building steel structures** | 468d | 2026-03-02 A | 2027-08-27 |  | 4% | 451.2d | 2026-03-02 | 2027-08-27 | 468d | 16d |  |
| 295 | 1.4.1.1.1.1 | Placement of Orders for Conveyors and Transfer Houses | 78d | 2026-03-02 A | 2026-05-30 | 26FS+140d | 37% | 49.14d | 2026-03-02 | 2026-05-30 | 78d | 16d | 0d |
| 296 | 1.4.1.1.1.2 | Fabrication for Conveyors and Transfer Houses | 376d | 2026-06-01 | 2027-08-11 | 295 |  |  | 2026-06-01 | 2027-08-11 | 376d | 16d | 0d |
| 297 | 1.4.1.1.1.3 | Delivery for Conveyors and Transfer Houses at site | 350d | 2026-07-17 | 2027-08-27 | 296SS+40d |  |  | 2026-07-17 | 2027-08-27 | 350d | 16d | 0d |

| ID | WBS | Task | Duration | Start | Finish | Predecessors | Complete | Remaining | Baseline start | Baseline finish | Baseline duration | Total slack | Free slack | Constraint | Text11 | Text1 |
| --- | --- | --- | --- | --- | --- | --- | --- | --- | --- | --- | --- | --- | --- | --- | --- | --- |
| 298 | 1.4.1.1.2 | **Sheeting** | 429d | 2026-04-16 | 2027-08-27 |  |  |  | 2026-04-16 | 2027-08-27 | 429d | 19d |  |  |  |  |
| 299 | 1.4.1.1.2.1 | Placement of Orders for various units | 100d | 2026-04-16 | 2026-08-10 | 295FS-39d |  |  | 2026-04-16 | 2026-08-10 | 100d | 19d | 0d |  |  |  |
| 300 | 1.4.1.1.2.2 | Delivery at site for various units | 364d | 2026-07-01 | 2027-08-27 | 299SS+65d |  |  | 2026-07-01 | 2027-08-27 | 364d | 49d | 0d |  |  |  |
| 301 | 1.4.1.2 | **Deposit 11C** | 468d | 2026-03-02 A | 2027-08-27 |  | 2% | 457.35d | 2026-03-02 | 2027-08-27 | 468d | 19d |  |  |  |  |
| 302 | 1.4.1.2.1 | **Building steel structures** | 468d | 2026-03-02 A | 2027-08-27 |  | 4% | 451.2d | 2026-03-02 | 2027-08-27 | 468d | 15d |  |  |  |  |
| 303 | 1.4.1.2.1.1 | Placement of Order for Conveyors and Transfer Houses | 78d | 2026-03-02 A | 2026-05-30 | 33FS+140d | 37% | 49.14d | 2026-03-02 | 2026-05-30 | 78d | 15d | 0d |  |  |  |
| 304 | 1.4.1.2.1.2 | Fabrication for Conveyors and Transfer Houses | 376d | 2026-06-01 | 2027-08-11 | 303 |  |  | 2026-06-01 | 2027-08-11 | 376d | 15d | 0d |  |  |  |
| 305 | 1.4.1.2.1.3 | Delivery for Conveyors and Transfer Houses at site | 350d | 2026-07-17 | 2027-08-27 | 304SS+40d |  |  | 2026-07-17 | 2027-08-27 | 350d | 15d | 0d |  |  |  |
| 306 | 1.4.1.2.2 | **Sheeting** | 429d | 2026-04-16 | 2027-08-27 |  |  |  | 2026-04-16 | 2027-08-27 | 429d | 19d |  |  |  |  |
| 307 | 1.4.1.2.2.1 | Placement of Orders for various units | 100d | 2026-04-16 | 2026-08-10 | 299SS |  |  | 2026-04-16 | 2026-08-10 | 100d | 19d | 0d |  |  |  |
| 308 | 1.4.1.2.2.2 | Delivery for various units at site | 364d | 2026-07-01 | 2027-08-27 | 307SS+65d |  |  | 2026-07-01 | 2027-08-27 | 364d | 19d | 0d |  |  |  |
| 309 | 1.4.2 | **Mechanical Plant & Equipment including Technological Structures** | 713d | 2025-03-29 A | 2027-07-07 |  | 36% | 453.79d | 2025-03-29 | 2027-07-07 | 713d | 99d |  |  |  |  |
| 310 | 1.4.2.1 | **Indegenous** | 713d | 2025-03-29 A | 2027-07-07 |  | 36% | 453.79d | 2025-03-29 | 2027-07-07 | 713d | 99d |  |  |  |  |
| 311 | 1.4.2.1.1 | **Deposit 14** | 713d | 2025-03-29 A | 2027-07-07 |  | 36% | 454.07d | 2025-03-29 | 2027-07-07 | 713d | 99d |  |  |  |  |
| 312 | 1.4.2.1.1.1 | **Gyratory Crusher** | 565d | 2025-03-29 A | 2027-01-16 |  | 57% | 240.61d | 2025-03-29 | 2027-01-16 | 565d | 0d |  |  |  |  |
| 313 | 1.4.2.1.1.1.1 | Release of Purchase Specification | 24d | 2025-03-29 A | 2025-04-27 A | 9SS, 20SS | 100% |  | 2025-03-29 | 2025-04-27 | 24d |  |  | finish no earlier than 2025-04-27 | Completed |  |
| 314 | 1.4.2.1.1.1.2 | Evaluation of offer & placement of purchase order | 90d | 2025-05-13 A | 2025-08-25 A | 313 | 100% |  | 2025-05-13 | 2025-08-25 | 90d |  |  |  | Completed |  |
| 315 | 1.4.2.1.1.1.3 | Drawing Submission and manufacturing clearance | 85d | 2025-10-27 A | 2026-01-31 A | 314FS+30d | 100% |  | 2025-10-27 | 2026-01-31 | 85d |  |  |  | In Progress |  |
| 316 | 1.4.2.1.1.1.4 | Manufacturing and inspection | 250d | 2026-02-02 A | 2026-11-19 | 315 | 35% | 162.5d | 2026-02-02 | 2026-11-19 | 250d | 0d |  |  |  | no |
| 317 | 1.4.2.1.1.1.5 | Dispatch and delivery at site | 50d | 2026-11-20 | 2027-01-16 | 316 |  |  | 2026-11-20 | 2027-01-16 | 50d | 0d |  |  |  | no |
| 318 | 1.4.2.1.1.2 | **Cone Crusher** | 565d | 2025-03-29 A | 2027-01-16 |  | 55% | 254.54d | 2025-03-29 | 2027-01-16 | 565d | 0d |  |  |  |  |
| 319 | 1.4.2.1.1.2.1 | Release of Purchase Specification | 15d | 2025-03-29 A | 2025-04-15 A | 9SS, 20SS | 100% |  | 2025-03-29 | 2025-04-15 | 15d |  |  |  | Completed |  |
| 320 | 1.4.2.1.1.2.2 | Evaluation of offer & placement of purchase order | 90d | 2025-05-13 A | 2025-08-25 A | 319 | 100% |  | 2025-05-13 | 2025-08-25 | 90d |  |  |  | Completed |  |
| 321 | 1.4.2.1.1.2.3 | Drawing Submission and manufacturing clearance | 77d | 2025-10-21 A | 2026-01-16 A | 320FS+30d | 100% |  | 2025-10-21 | 2026-01-16 | 77d |  |  |  | In Progress |  |
| 322 | 1.4.2.1.1.2.4 | Manufacturing and inspection | 200d | 2026-01-17 A | 2026-09-07 | 321 | 45% | 110d | 2026-01-17 | 2026-09-07 | 200d | 0d |  |  |  | no |
| 323 | 1.4.2.1.1.2.5 | Dispatch and delivery at site | 113d | 2026-09-08 | 2027-01-16 | 322 |  |  | 2026-09-08 | 2027-01-16 | 113d | 0d |  |  |  | no |

| ID | WBS | Task | Duration | Start | Finish | Predecessors | Complete | Remaining | Baseline start | Baseline finish | Baseline duration | Total slack | Free slack | Constraint | Text11 |
| --- | --- | --- | --- | --- | --- | --- | --- | --- | --- | --- | --- | --- | --- | --- | --- |
| 324 | 1.4.2.1.1.3 | **Apron Feeder (3000 TPH & 1500 TPH )** | 471d | 2025-04-01 A | 2026-10-01 |  | 96% | 16.99d | 2025-04-01 | 2026-10-01 | 471d | 173d |  |  |  |
| 325 | 1.4.2.1.1.3.1 | Release of Purchase Specification | 21d | 2025-04-01 A | 2025-04-24 A | 9SS+3d, 20SS+3d | 100% |  | 2025-04-01 | 2025-04-24 | 21d |  |  |  | Completed |
| 326 | 1.4.2.1.1.3.2 | Evaluation of offer & placement of purchase order | 43d | 2025-05-02 A | 2025-06-20 A | 325 | 100% |  | 2025-05-02 | 2025-06-20 | 43d |  |  |  | Completed |
| 327 | 1.4.2.1.1.3.3 | Drawing Submission and manufacturing clearance | 53d | 2025-08-14 A | 2025-10-14 A | 326FS+7d | 100% |  | 2025-08-14 | 2025-10-14 | 53d |  |  |  | Completed |
| 328 | 1.4.2.1.1.3.4 | Manufacturing and inspection | 213d | 2025-10-15 A | 2026-06-18 | 327 | 95% | 10.65d | 2025-10-15 | 2026-06-18 | 213d | 85.5d | 0d |  | In Progress |
| 329 | 1.4.2.1.1.3.5 | Dispatch and delivery at site | 90d | 2026-03-20 A | 2026-10-01 | 328 | 95% | 4.5d | 2026-06-19 | 2026-10-01 | 90d | 173d | 109d |  |  |
| 330 | 1.4.2.1.1.4 | **Scalping Screen** | 299d | 2025-04-01 A | 2026-03-14 A |  | 100% |  | 2025-04-01 | 2026-08-13 | 429d |  |  |  |  |
| 331 | 1.4.2.1.1.4.1 | Release of Purchase Specification | 21d | 2025-04-01 A | 2025-04-24 A | 9SS+3d, 20SS+3d | 100% |  | 2025-04-01 | 2025-04-24 | 21d |  |  |  | Completed |
| 332 | 1.4.2.1.1.4.2 | Evaluation of offer & placement of purchase order | 41d | 2025-05-02 A | 2025-06-18 A | 331 | 100% |  | 2025-05-02 | 2025-06-18 | 41d |  |  |  | Completed |
| 333 | 1.4.2.1.1.4.3 | Drawing Submission and manufacturing clearance | 75d | 2025-08-16 A | 2025-11-11 A | 332FS+30d | 100% |  | 2025-08-16 | 2025-11-11 | 75d |  |  |  | Completed |
| 334 | 1.4.2.1.1.4.4 | Manufacturing and inspection | 92d | 2025-11-12 A | 2026-02-25 A | 333 | 100% |  | 2025-11-12 | 2026-04-30 | 147d |  |  | finish no earlier than 2026-02-25 | In Progress |
| 335 | 1.4.2.1.1.4.5 | Dispatch and delivery at site | 15d | 2026-02-26 A | 2026-03-14 A | 334 | 100% |  | 2026-05-01 | 2026-08-13 | 90d |  |  |  |  |
| 336 | 1.4.2.1.1.5 | **EOT Cranes (160/30T and 40/5T)** | 519d | 2025-04-15 A | 2026-12-10 |  | 63% | 191.21d | 2025-04-15 | 2026-11-27 | 508d | 17d |  |  |  |
| 337 | 1.4.2.1.1.5.1 | Release of Purchase Specification | 8d | 2025-04-15 A | 2025-04-23 A | 9SS+16d, 20SS+16d | 100% |  | 2025-04-15 | 2025-04-23 | 8d |  |  |  | Completed |
| 338 | 1.4.2.1.1.5.2 | Evaluation of offer & placement of purchase order | 125d | 2025-05-02 A | 2025-09-24 A | 337 | 100% |  | 2025-05-02 | 2025-09-24 | 125d |  |  |  | Completed |
| 339 | 1.4.2.1.1.5.3 | Drawing Submission and manufacturing clearance | 41d | 2025-10-17 A | 2025-12-03 A | 338 | 100% |  | 2025-10-17 | 2025-11-20 | 30d |  |  | finish no earlier than 2025-12-03 | Completed |
| 340 | 1.4.2.1.1.5.4 | Manufacturing and inspection | 230d | 2025-12-04 A | 2026-08-27 | 339 | 60% | 92d | 2025-11-21 | 2026-08-14 | 230d | 17d | 0d |  | In Progress |
| 341 | 1.4.2.1.1.5.5 | Dispatch and delivery at site | 90d | 2026-08-28 | 2026-12-10 | 340 |  |  | 2026-08-15 | 2026-11-27 | 90d | 17d |  |  |  |
| 342 | 1.4.2.1.1.6 | **Travelling Tripper** | 506d | 2025-04-15 A | 2026-11-25 |  | 65% | 178.53d | 2025-04-15 | 2026-09-12 | 443d | 118d |  |  |  |
| 343 | 1.4.2.1.1.6.1 | Release of Purchase Specification | 9d | 2025-04-15 A | 2025-04-24 A | 9SS+16d, 20SS+16d | 100% |  | 2025-04-15 | 2025-04-24 | 9d |  |  |  | Completed |
| 344 | 1.4.2.1.1.6.2 | Evaluation of offer & placement of purchase order | 57d | 2025-04-28 A | 2025-07-02 A | 343 | 100% |  | 2025-04-28 | 2025-07-02 | 57d |  |  |  | Completed |
| 345 | 1.4.2.1.1.6.3 | Drawing Submission and manufacturing clearance | 63d | 2025-08-25 A | 2025-11-05 A | 344FS+45d | 100% |  | 2025-08-25 | 2025-11-19 | 75d |  |  |  | Completed |
| 346 | 1.4.2.1.1.6.4 | Manufacturing and inspection | 241d | 2025-11-06 A | 2026-08-12 | 345 | 70% | 72.3d | 2025-11-20 | 2026-05-30 | 166d | 118d | 0d |  | In Progress |
| 347 | 1.4.2.1.1.6.5 | Dispatch and delivery at site | 90d | 2026-08-13 | 2026-11-25 | 346 |  |  | 2026-06-01 | 2026-09-12 | 90d | 118d |  |  |  |

| ID | WBS | Task | Duration | Start | Finish | Predecessors | Complete | Remaining | Baseline start | Baseline finish | Baseline duration | Total slack | Free slack | Constraint | Text11 |
| --- | --- | --- | --- | --- | --- | --- | --- | --- | --- | --- | --- | --- | --- | --- | --- |
| 348 | 1.4.2.1.1.7 | **Idlers** | 229d | 2025-09-22 A | 2026-06-13 |  | 90% | 22.5d | 2025-09-22 | 2026-09-12 | 307d | 264d |  |  |  |
| 349 | 1.4.2.1.1.7.1 | Release of Purchase Specification | 15d | 2025-09-22 A | 2025-10-08 A | 9FS+24d, 20FS+24d | 100% |  | 2025-09-22 | 2025-10-08 | 15d |  |  |  | Completed |
| 350 | 1.4.2.1.1.7.2 | Evaluation of offer & placement of purchase order | 44d | 2025-10-09 A | 2025-11-28 A | 349 | 100% |  | 2025-10-09 | 2025-11-28 | 44d |  |  |  | Completed |
| 351 | 1.4.2.1.1.7.3 | Drawing Submission and manufacturing clearance | 26d | 2025-11-29 A | 2025-12-28 A | 350 | 100% |  | 2025-11-29 | 2025-12-28 | 26d |  |  |  | In Progress |
| 352 | 1.4.2.1.1.7.4 | Manufacturing and inspection | 54d | 2025-12-29 A | 2026-02-28 A | 351 | 100% |  | 2025-12-29 | 2026-05-30 | 132d |  |  |  |  |
| 353 | 1.4.2.1.1.7.5 | Dispatch and delivery at site | 90d | 2026-03-02 A | 2026-06-13 | 352 | 75% | 22.5d | 2026-06-01 | 2026-09-12 | 90d | 264d | 217d |  |  |
| 354 | 1.4.2.1.1.8 | **Gearbox** | 407d | 2025-09-26 A | 2027-01-12 |  | 41% | 241.9d | 2025-09-26 | 2026-12-28 | 394d | 147d |  |  |  |
| 355 | 1.4.2.1.1.8.1 | Release of Purchase Specification | 15d | 2025-09-26 A | 2025-10-13 A | 9FS+28d, 20FS+28d | 100% |  | 2025-09-26 | 2025-10-13 | 15d |  |  | finish no earlier than 2025-10-13 | Completed |
| 356 | 1.4.2.1.1.8.2 | Evaluation of offer & placement of purchase order | 26d | 2025-10-14 A | 2025-11-12 A | 355 | 100% |  | 2025-10-14 | 2025-11-12 | 26d |  |  | finish no earlier than 2025-11-12 | Completed |
| 357 | 1.4.2.1.1.8.3 | Drawing Submission and manufacturing clearance | 146d | 2025-11-13 A | 2026-04-30 | 356 | 85% | 21.9d | 2025-11-13 | 2026-04-15 | 133d | 147d | 0d |  | Completed |
| 358 | 1.4.2.1.1.8.4 | Manufacturing and inspection | 130d | 2026-05-01 | 2026-09-29 | 357 |  |  | 2026-04-16 | 2026-09-14 | 130d | 147d | 0d |  | In Progress |
| 359 | 1.4.2.1.1.8.5 | Dispatch and delivery at site | 90d | 2026-09-30 | 2027-01-12 | 358 |  |  | 2026-09-15 | 2026-12-28 | 90d | 147d | 110d |  |  |
| 360 | 1.4.2.1.1.9 | **Pulley** | 457.75d | 2025-09-22 A | 2027-03-08 |  | 40% | 272.94d | 2025-09-22 | 2027-01-12 | 411d | 108.25d |  |  |  |
| 361 | 1.4.2.1.1.9.1 | Release of Purchase Specification | 15d | 2025-09-22 A | 2025-10-08 A | 9FS+24d, 20FS+24d | 100% |  | 2025-09-22 | 2025-10-08 | 15d |  |  |  | Completed |
| 362 | 1.4.2.1.1.9.2 | Evaluation of offer & placement of purchase order | 61d | 2025-10-14 A | 2025-12-23 A | 361 | 100% |  | 2025-10-14 | 2025-12-23 | 61d |  |  |  | Completed |
| 363 | 1.4.2.1.1.9.3 | Drawing Submission and manufacturing clearance | 121d | 2025-12-24 A | 2026-05-25 | 362FS+40d | 85% | 18.15d | 2026-02-07 | 2026-03-31 | 45d | 108.25d | 0d |  | In Progress |
| 364 | 1.4.2.1.1.9.4 | Manufacturing and inspection | 156d | 2026-05-25 | 2026-11-23 | 363 |  |  | 2026-04-01 | 2026-09-29 | 156d | 108.25d | 0d |  |  |
| 365 | 1.4.2.1.1.9.5 | Dispatch and delivery at site | 90d | 2026-11-23 | 2027-03-08 | 364 |  |  | 2026-09-30 | 2027-01-12 | 90d | 108.25d | 77.25d |  |  |
| 366 | 1.4.2.1.1.10 | **Belt** | 318d | 2025-09-26 A | 2026-09-30 |  | 75% | 78.4d | 2025-09-26 | 2026-10-27 | 341d | 211d |  |  |  |
| 367 | 1.4.2.1.1.10.1 | Release of Purchase Specification | 15d | 2025-09-26 A | 2025-10-13 A | 9FS+28d, 20FS+28d | 100% |  | 2025-09-26 | 2025-10-13 | 15d |  |  |  | Completed |
| 368 | 1.4.2.1.1.10.2 | Evaluation of offer & placement of purchase order | 33d | 2025-10-14 A | 2025-11-20 A | 367 | 100% |  | 2025-10-14 | 2025-11-20 | 33d |  |  |  | Completed |
| 369 | 1.4.2.1.1.10.3 | Drawing Submission and manufacturing clearance | 46d | 2025-11-21 A | 2026-01-12 A | 368 | 100% |  | 2025-11-21 | 2026-01-07 | 42d |  |  | finish no earlier than 2026-01-12 | Completed |
| 370 | 1.4.2.1.1.10.4 | Manufacturing and inspection | 145d | 2026-01-13 A | 2026-06-30 | 369 | 65% | 50.75d | 2026-01-08 | 2026-07-14 | 161d | 151.35d | 0d |  | In Progress |
| 371 | 1.4.2.1.1.10.5 | Dispatch and delivery at site | 79d | 2026-03-02 A | 2026-09-30 | 370FS-100d | 65% | 27.65d | 2026-07-15 | 2026-10-27 | 90d | 211d | 124d |  |  |

| ID | WBS | Task | Duration | Start | Finish | Predecessors | Complete | Remaining | Baseline start | Baseline finish | Baseline duration | Total slack | Free slack | Text11 |
| --- | --- | --- | --- | --- | --- | --- | --- | --- | --- | --- | --- | --- | --- | --- |
| 372 | 1.4.2.1.1.11 | **Coupling** | 380d | 2026-01-21 A | 2027-04-08 |  | 20% | 302.32d | 2026-01-21 | 2027-04-08 | 380d | 56d |  |  |
| 373 | 1.4.2.1.1.11.1 | Release of Purchase Specification | 24d | 2026-01-21 A | 2026-02-17 A | 9FS+126d, 20FS+126d | 100% |  | 2026-01-21 | 2026-02-17 | 24d |  |  | In Progress |
| 374 | 1.4.2.1.1.11.2 | Evaluation of offer & placement of purchase order | 88d | 2026-02-18 A | 2026-05-30 | 373 | 61% | 34.32d | 2026-02-18 | 2026-05-30 | 88d | 56d | 0d |  |
| 375 | 1.4.2.1.1.11.3 | Drawing Submission and manufacturing clearance | 109d | 2026-06-01 | 2026-10-05 | 374 |  |  | 2026-06-01 | 2026-10-05 | 109d | 56d | 0d |  |
| 376 | 1.4.2.1.1.11.4 | Manufacturing and inspection | 104d | 2026-10-06 | 2027-02-03 | 375 |  |  | 2026-10-06 | 2027-02-03 | 104d | 56d | 0d |  |
| 377 | 1.4.2.1.1.11.5 | Dispatch and delivery at site | 55d | 2027-02-04 | 2027-04-08 | 376 |  |  | 2027-02-04 | 2027-04-08 | 55d | 56d | 0d |  |
| 378 | 1.4.2.1.1.12 | **Hydraulic Gate** | 461d | 2025-10-22 A | 2027-04-10 |  | 36% | 295.5d | 2025-10-22 | 2027-01-15 | 388d | 10d |  |  |
| 379 | 1.4.2.1.1.12.1 | Release of Purchase Specification | 9d | 2025-10-22 A | 2025-10-31 A | 9FS+52d, 20FS+56d | 100% |  | 2025-10-22 | 2025-11-22 | 28d |  |  | Completed |
| 380 | 1.4.2.1.1.12.2 | Evaluation of offer & placement of purchase order | 26d | 2025-11-01 A | 2025-12-01 A | 379 | 100% |  | 2025-11-24 | 2025-12-01 | 7d |  |  | Completed |
| 381 | 1.4.2.1.1.12.3 | Drawing Submission and manufacturing clearance | 62d | 2025-12-02 A | 2026-02-10 A | 380 | 100% |  | 2025-12-02 | 2026-05-15 | 143d |  |  | In Progress |
| 382 | 1.4.2.1.1.12.4 | Manufacturing and inspection | 274d | 2026-02-11 A | 2026-12-26 | 381 | 25% | 205.5d | 2026-05-16 | 2026-10-02 | 120d | 10d | 0d |  |
| 383 | 1.4.2.1.1.12.5 | Dispatch and delivery at site | 90d | 2026-12-28 | 2027-04-10 | 382 |  |  | 2026-10-03 | 2027-01-15 | 90d | 10d |  |  |
| 384 | 1.4.2.1.1.13 | **Prism Gate** | 402d | 2026-01-08 A | 2027-04-21 |  | 23% | 309.75d | 2026-01-08 | 2027-04-21 | 402d | 56d |  |  |
| 385 | 1.4.2.1.1.13.1 | Release of Purchase Specification | 123d | 2026-01-08 A | 2026-05-30 | 9FS+100d, 20FS+110d | 75% | 30.75d | 2026-01-08 | 2026-05-30 | 123d | 56d | 0d | In Progress |
| 386 | 1.4.2.1.1.13.2 | Evaluation of offer & placement of purchase order | 60d | 2026-06-01 | 2026-08-08 | 385 |  |  | 2026-06-01 | 2026-08-08 | 60d | 56d | 0d |  |
| 387 | 1.4.2.1.1.13.3 | Drawing Submission and manufacturing clearance | 60d | 2026-08-10 | 2026-10-17 | 386 |  |  | 2026-08-10 | 2026-10-17 | 60d | 56d | 0d |  |
| 388 | 1.4.2.1.1.13.4 | Manufacturing and inspection | 104d | 2026-10-19 | 2027-02-16 | 387 |  |  | 2026-10-19 | 2027-02-16 | 104d | 56d | 0d |  |
| 389 | 1.4.2.1.1.13.5 | Dispatch and delivery at site | 55d | 2027-02-17 | 2027-04-21 | 388 |  |  | 2027-02-17 | 2027-04-21 | 55d | 56d | 0d |  |
| 390 | 1.4.2.1.1.14 | **Metal Detector** | 527d | 2025-09-22 A | 2027-05-26 |  | 34% | 348.19d | 2025-09-22 | 2027-05-26 | 527d | 135d |  |  |
| 391 | 1.4.2.1.1.14.1 | Release of Purchase Specification | 16d | 2025-09-22 A | 2025-10-09 A | 9FS+150d, 20FS+150d | 100% |  | 2025-09-22 | 2025-10-09 | 16d |  |  | Completed |
| 392 | 1.4.2.1.1.14.2 | Evaluation of offer & placement of purchase order | 201d | 2025-10-10 A | 2026-05-30 | 391 | 81% | 38.19d | 2025-10-10 | 2026-05-30 | 201d | 135d | 0d | In Progress |
| 393 | 1.4.2.1.1.14.3 | Drawing Submission and manufacturing clearance | 100d | 2026-06-01 | 2026-09-24 | 392 |  |  | 2026-06-01 | 2026-09-24 | 100d | 135d | 0d |  |
| 394 | 1.4.2.1.1.14.4 | Manufacturing and inspection | 120d | 2026-09-25 | 2027-02-11 | 393 |  |  | 2026-09-25 | 2027-02-11 | 120d | 135d | 0d |  |
| 395 | 1.4.2.1.1.14.5 | Dispatch and delivery at site | 90d | 2027-02-12 | 2027-05-26 | 394 |  |  | 2027-02-12 | 2027-05-26 | 90d | 135d | 0d |  |

| ID | WBS | Task | Duration | Start | Finish | Predecessors | Complete | Remaining | Baseline start | Baseline finish | Baseline duration | Total slack | Free slack | Text11 |
| --- | --- | --- | --- | --- | --- | --- | --- | --- | --- | --- | --- | --- | --- | --- |
| 396 | 1.4.2.1.1.15 | **ILMS/ CBMS** | 443d | 2025-10-15 A | 2027-03-13 |  | 35% | 290.14d | 2025-10-15 | 2027-03-13 | 443d | 167d |  |  |
| 397 | 1.4.2.1.1.15.1 | Release of Purchase Specification | 15d | 2025-10-15 A | 2025-10-31 A | 9FS+170d, 20FS+190d | 100% |  | 2025-10-15 | 2025-10-31 | 15d |  |  | Completed |
| 398 | 1.4.2.1.1.15.2 | Evaluation of offer & placement of purchase order | 25d | 2025-11-01 A | 2025-11-29 A | 397 | 100% |  | 2025-11-01 | 2025-11-29 | 25d |  |  | Completed |
| 399 | 1.4.2.1.1.15.3 | Drawing Submission and manufacturing clearance | 129d | 2026-01-01 A | 2026-05-30 | 398FS+30d | 80% | 25.8d | 2026-01-01 | 2026-05-30 | 129d | 167d | 0d | In Progress |
| 400 | 1.4.2.1.1.15.4 | Manufacturing and inspection | 156d | 2026-06-01 | 2026-11-28 | 399 |  |  | 2026-06-01 | 2026-11-28 | 156d | 167d | 0d |  |
| 401 | 1.4.2.1.1.15.5 | Dispatch and delivery at site | 90d | 2026-11-30 | 2027-03-13 | 400 |  |  | 2026-11-30 | 2027-03-13 | 90d | 167d | 0d |  |
| 402 | 1.4.2.1.1.16 | **Belt Weigher** | 448d | 2026-02-02 A | 2027-07-07 |  | 17% | 374d | 2026-02-02 | 2027-07-07 | 448d | 98d |  |  |
| 403 | 1.4.2.1.1.16.1 | Release of Purchase Specification | 22d | 2026-02-02 A | 2026-02-26 A | 9FS+260d, 20FS+280d | 100% |  | 2026-02-02 | 2026-02-26 | 22d |  |  | Completed |
| 404 | 1.4.2.1.1.16.2 | Evaluation of offer & placement of purchase order | 80d | 2026-02-27 A | 2026-05-30 | 403 | 65% | 28d | 2026-02-27 | 2026-05-30 | 80d | 98d | 0d | In Progress |
| 405 | 1.4.2.1.1.16.3 | Drawing Submission and manufacturing clearance | 100d | 2026-06-01 | 2026-09-24 | 404 |  |  | 2026-06-01 | 2026-09-24 | 100d | 98d | 0d |  |
| 406 | 1.4.2.1.1.16.4 | Manufacturing and inspection | 156d | 2026-09-25 | 2027-03-25 | 405 |  |  | 2026-09-25 | 2027-03-25 | 156d | 98d | 0d |  |
| 407 | 1.4.2.1.1.16.5 | Dispatch and delivery at site | 90d | 2027-03-26 | 2027-07-07 | 406 |  |  | 2027-03-26 | 2027-07-07 | 90d | 98d | 0d |  |
| 408 | 1.4.2.1.1.17 | **Flap Gate** | 316d | 2026-04-13 A | 2027-04-15 |  | 5% | 301.6d | 2026-04-13 | 2027-04-15 | 316d | 87d |  |  |
| 409 | 1.4.2.1.1.17.1 | Release of Purchase Specification | 36d | 2026-04-13 A | 2026-05-23 | 9FS+196d, 20FS+206d | 40% | 21.6d | 2026-04-13 | 2026-05-23 | 36d | 87d | 0d | In Progress |
| 410 | 1.4.2.1.1.17.2 | Evaluation of offer & placement of purchase order | 60d | 2026-05-25 | 2026-08-01 | 409 |  |  | 2026-05-25 | 2026-08-01 | 60d | 87d | 0d |  |
| 411 | 1.4.2.1.1.17.3 | Drawing Submission and manufacturing clearance | 60d | 2026-08-03 | 2026-10-10 | 410 |  |  | 2026-08-03 | 2026-10-10 | 60d | 87d | 0d |  |
| 412 | 1.4.2.1.1.17.4 | Manufacturing and inspection | 100d | 2026-10-12 | 2027-02-04 | 411 |  |  | 2026-10-12 | 2027-02-04 | 100d | 87d | 0d |  |
| 413 | 1.4.2.1.1.17.5 | Dispatch and delivery at site | 60d | 2027-02-05 | 2027-04-15 | 412 |  |  | 2027-02-05 | 2027-04-15 | 60d | 87d | 0d |  |
| 414 | 1.4.2.1.1.18 | **Elevator** | 443d | 2026-01-27 A | 2027-06-25 |  | 16% | 371.48d | 2026-01-27 | 2027-06-25 | 443d | 81d |  |  |
| 415 | 1.4.2.1.1.18.1 | Release of Purchase Specification | 27d | 2026-01-27 A | 2026-02-26 A | 9FS+260d, 20FS+280d | 100% |  | 2026-01-27 | 2026-02-26 | 27d |  |  |  |
| 416 | 1.4.2.1.1.18.2 | Evaluation of offer & placement of purchase order | 106d | 2026-02-27 A | 2026-06-30 | 415 | 42% | 61.48d | 2026-02-27 | 2026-06-30 | 106d | 81d | 0d |  |
| 417 | 1.4.2.1.1.18.3 | Drawing Submission and manufacturing clearance | 75d | 2026-07-01 | 2026-09-25 | 416 |  |  | 2026-07-01 | 2026-09-25 | 75d | 81d | 0d |  |
| 418 | 1.4.2.1.1.18.4 | Manufacturing and inspection | 180d | 2026-09-26 | 2027-04-23 | 417 |  |  | 2026-09-26 | 2027-04-23 | 180d | 81d | 0d |  |
| 419 | 1.4.2.1.1.18.5 | Dispatch and delivery at site | 55d | 2027-04-24 | 2027-06-25 | 418 |  |  | 2027-04-24 | 2027-06-25 | 55d | 81d | 0d |  |

| ID | WBS | Task | Duration | Start | Finish | Predecessors | Complete | Remaining | Baseline start | Baseline finish | Baseline duration | Total slack | Free slack | Text11 |
| --- | --- | --- | --- | --- | --- | --- | --- | --- | --- | --- | --- | --- | --- | --- |
| 420 | 1.4.2.1.1.19 | **Rock Breaker** | 335d | 2026-02-07 A | 2027-03-04 |  | 18% | 273.26d | 2026-02-07 | 2027-03-04 | 335d | 181d |  |  |
| 421 | 1.4.2.1.1.19.1 | Release of Purchase Specification | 15d | 2026-02-07 A | 2026-02-24 A | 9FS+270d, 20FS+290d | 100% |  | 2026-02-07 | 2026-02-24 | 15d |  |  |  |
| 422 | 1.4.2.1.1.19.2 | Evaluation of offer & placement of purchase order | 82d | 2026-02-25 A | 2026-05-30 | 421 | 57% | 35.26d | 2026-02-25 | 2026-05-30 | 82d | 181d | 0d |  |
| 423 | 1.4.2.1.1.19.3 | Drawing Submission and manufacturing clearance | 70d | 2026-06-01 | 2026-08-20 | 422 |  |  | 2026-06-01 | 2026-08-20 | 70d | 181d | 0d |  |
| 424 | 1.4.2.1.1.19.4 | Manufacturing and inspection | 118d | 2026-08-21 | 2027-01-05 | 423 |  |  | 2026-08-21 | 2027-01-05 | 118d | 181d | 0d |  |
| 425 | 1.4.2.1.1.19.5 | Dispatch and delivery at site | 50d | 2027-01-06 | 2027-03-04 | 424 |  |  | 2027-01-06 | 2027-03-04 | 50d | 181d | 126d |  |
| 426 | 1.4.2.1.1.20 | **Hydraulic Gripper** | 408d | 2026-02-02 A | 2027-05-21 |  | 16% | 344.7d | 2026-02-02 | 2027-05-21 | 408d | 85d |  |  |
| 427 | 1.4.2.1.1.20.1 | Release of Purchase Specification | 12d | 2026-02-02 A | 2026-02-14 A | 9FS+136d, 20FS+116d | 100% |  | 2026-02-02 | 2026-02-14 | 12d |  |  |  |
| 428 | 1.4.2.1.1.20.2 | Evaluation of offer & placement of purchase order | 90d | 2026-02-16 A | 2026-05-30 | 427 | 57% | 38.7d | 2026-02-16 | 2026-05-30 | 90d | 85d | 0d |  |
| 429 | 1.4.2.1.1.20.3 | Drawing Submission and manufacturing clearance | 90d | 2026-06-01 | 2026-09-12 | 428 |  |  | 2026-06-01 | 2026-09-12 | 90d | 85d | 0d |  |
| 430 | 1.4.2.1.1.20.4 | Manufacturing and inspection | 156d | 2026-09-14 | 2027-03-13 | 429 |  |  | 2026-09-14 | 2027-03-13 | 156d | 85d | 0d |  |
| 431 | 1.4.2.1.1.20.5 | Dispatch and delivery at site | 60d | 2027-03-15 | 2027-05-21 | 430 |  |  | 2027-03-15 | 2027-05-21 | 60d | 85d | 32d |  |
| 432 | 1.4.2.1.1.21 | **Technological Structures** | 314d | 2026-05-16 | 2027-05-16 |  |  |  | 2026-05-16 | 2027-05-16 | 314d | 7d |  |  |
| 433 | 1.4.2.1.1.21.1 | Release of Purchase Specification | 39d | 2026-05-16 | 2026-06-30 | 21FS+230d |  |  | 2026-05-16 | 2026-06-30 | 39d | 7d | 0d | In Progress |
| 434 | 1.4.2.1.1.21.2 | Evaluation of offer & placement of Purchase Order | 60d | 2026-07-01 | 2026-09-08 | 433 |  |  | 2026-07-01 | 2026-09-08 | 60d | 31d | 0d |  |
| 435 | 1.4.2.1.1.21.3 | Drawing Submission and Manufacturing Clearance | 90d | 2026-09-09 | 2026-12-22 | 434 |  |  | 2026-09-09 | 2026-12-22 | 90d | 31d | 0d |  |
| 436 | 1.4.2.1.1.21.4 | Manufacturing and inspection | 125d | 2026-12-23 | 2027-05-16 | 435 |  |  | 2026-12-23 | 2027-05-16 | 125d | 31d | 0d |  |
| 437 | 1.4.2.1.1.21.5 | Dispatch and delivery at site | 60d | 2027-02-08 | 2027-04-17 | 436SS+40d |  |  | 2027-02-08 | 2027-04-17 | 60d | 31d | 0d |  |
| 438 | 1.4.2.1.1.22 | **AC, Ventilation, Ducting, Dumpers, Exhaust Fans etc** | 257d | 2026-07-08 | 2027-05-03 |  |  |  | 2026-07-08 | 2027-05-03 | 257d | 11d |  |  |
| 439 | 1.4.2.1.1.22.1 | Release of Purchase Specification | 21d | 2026-07-08 | 2026-07-31 | 9FS+270d, 21FS+270d |  |  | 2026-07-08 | 2026-07-31 | 21d | 11d | 0d |  |
| 440 | 1.4.2.1.1.22.2 | Evaluation of offer & placement of purchase order | 50d | 2026-08-01 | 2026-09-28 | 439 |  |  | 2026-08-01 | 2026-09-28 | 50d | 11d | 0d |  |
| 441 | 1.4.2.1.1.22.3 | Drawing Submission and manufacturing clearance | 60d | 2026-09-29 | 2026-12-07 | 440 |  |  | 2026-09-29 | 2026-12-07 | 60d | 11d | 0d |  |
| 442 | 1.4.2.1.1.22.4 | Manufacturing and inspection | 100d | 2026-12-08 | 2027-04-02 | 441 |  |  | 2026-12-08 | 2027-04-02 | 100d | 11d | 0d |  |
| 443 | 1.4.2.1.1.22.5 | Dispatch and delivery at site | 26d | 2027-04-03 | 2027-05-03 | 442 |  |  | 2027-04-03 | 2027-05-03 | 26d | 11d | 0d |  |

| ID | WBS | Task | Duration | Start | Finish | Predecessors | Baseline start | Baseline finish | Baseline duration | Total slack | Free slack | Constraint |
| --- | --- | --- | --- | --- | --- | --- | --- | --- | --- | --- | --- | --- |
| 444 | 1.4.2.1.1.23 | **Dust Supression System** | 267d | 2026-07-08 | 2027-05-14 |  | 2026-07-08 | 2027-05-14 | 267d | 14d |  |  |
| 445 | 1.4.2.1.1.23.1 | Release of Purchase Specification | 21d | 2026-07-08 | 2026-07-31 | 9FS+270d, 20FS+280d | 2026-07-08 | 2026-07-31 | 21d | 14d | 0d |  |
| 446 | 1.4.2.1.1.23.2 | Evaluation of offer & placement of purchase order | 60d | 2026-08-01 | 2026-10-09 | 445 | 2026-08-01 | 2026-10-09 | 60d | 14d | 0d |  |
| 447 | 1.4.2.1.1.23.3 | Drawing Submission and manufacturing clearance | 60d | 2026-10-10 | 2026-12-18 | 446 | 2026-10-10 | 2026-12-18 | 60d | 14d | 0d |  |
| 448 | 1.4.2.1.1.23.4 | Manufacturing and inspection | 100d | 2026-12-19 | 2027-04-14 | 447, 42FF | 2026-12-19 | 2027-04-14 | 100d | 14d | 0d |  |
| 449 | 1.4.2.1.1.23.5 | Dispatch and delivery at site | 26d | 2027-04-15 | 2027-05-14 | 448 | 2027-04-15 | 2027-05-14 | 26d | 14d | 0d |  |
| 450 | 1.4.2.1.1.24 | **Fire Fighting System** | 258d | 2026-07-08 | 2027-05-04 |  | 2026-07-08 | 2027-05-04 | 258d | 10d |  |  |
| 451 | 1.4.2.1.1.24.1 | Release of Purchase Specification | 21d | 2026-07-08 | 2026-07-31 | 9FS+270d, 20FS+280d | 2026-07-08 | 2026-07-31 | 21d | 10d | 0d |  |
| 452 | 1.4.2.1.1.24.2 | Evaluation of offer & placement of purchase order | 52d | 2026-08-01 | 2026-09-30 | 451 | 2026-08-01 | 2026-09-30 | 52d | 10d | 0d |  |
| 453 | 1.4.2.1.1.24.3 | Drawing Submission and manufacturing clearance | 60d | 2026-10-01 | 2026-12-09 | 452 | 2026-10-01 | 2026-12-09 | 60d | 10d | 0d |  |
| 454 | 1.4.2.1.1.24.4 | Manufacturing and inspection | 100d | 2026-12-10 | 2027-04-05 | 453 | 2026-12-10 | 2027-04-05 | 100d | 10d | 0d |  |
| 455 | 1.4.2.1.1.24.5 | Dispatch and delivery at site | 25d | 2027-04-06 | 2027-05-04 | 454 | 2027-04-06 | 2027-05-04 | 25d | 10d | 0d |  |
| 456 | 1.4.2.1.1.25 | **Water Supply System** | 266d | 2026-07-08 | 2027-05-13 |  | 2026-07-08 | 2027-05-13 | 266d | 10d |  |  |
| 457 | 1.4.2.1.1.25.1 | Release of Purchase Specification | 21d | 2026-07-08 | 2026-07-31 | 9FS+270d | 2026-07-08 | 2026-07-31 | 21d | 10d | 0d |  |
| 458 | 1.4.2.1.1.25.2 | Evaluation of offer & placement of purchase order | 50d | 2026-08-01 | 2026-09-28 | 457 | 2026-08-01 | 2026-09-28 | 50d | 10d | 0d |  |
| 459 | 1.4.2.1.1.25.3 | Drawing Submission and manufacturing clearance | 50d | 2026-10-22 | 2026-12-18 | 458FS+20d | 2026-10-22 | 2026-12-18 | 50d | 10d | 0d | finish no earlier than 2026-09-30 |
| 460 | 1.4.2.1.1.25.4 | Manufacturing and inspection | 100d | 2026-12-19 | 2027-04-14 | 459 | 2026-12-19 | 2027-04-14 | 100d | 10d | 0d | finish no earlier than 2027-02-16 |
| 461 | 1.4.2.1.1.25.5 | Dispatch and delivery at site | 25d | 2027-04-15 | 2027-05-13 | 460 | 2027-04-15 | 2027-05-13 | 25d | 10d | 0d | finish no earlier than 2027-02-28 |
| 462 | 1.4.2.1.1.26 | **Miscellaneous Mechanical components** | 228d | 2026-08-20 | 2027-05-12 |  | 2026-08-20 | 2027-05-12 | 228d | 10d |  |  |
| 463 | 1.4.2.1.1.26.1 | Release of Purchase Specification | 13d | 2026-08-20 | 2026-09-03 | 9FS+307d | 2026-08-20 | 2026-09-03 | 13d | 10d | 0d |  |
| 464 | 1.4.2.1.1.26.2 | Evaluation of offer & placement of purchase order | 50d | 2026-09-04 | 2026-10-31 | 463 | 2026-09-04 | 2026-10-31 | 50d | 10d | 0d |  |
| 465 | 1.4.2.1.1.26.3 | Drawing Submission and manufacturing clearance | 50d | 2026-11-02 | 2026-12-29 | 464 | 2026-11-02 | 2026-12-29 | 50d | 10d | 0d |  |
| 466 | 1.4.2.1.1.26.4 | Manufacturing and inspection | 100d | 2026-12-30 | 2027-04-24 | 465 | 2026-12-30 | 2027-04-24 | 100d | 10d | 0d |  |
| 467 | 1.4.2.1.1.26.5 | Dispatch and delivery at site | 15d | 2027-04-26 | 2027-05-12 | 466 | 2027-04-26 | 2027-05-12 | 15d | 10d | 0d |  |

| ID | WBS | Task | Duration | Start | Finish | Predecessors | Complete | Remaining | Baseline start | Baseline finish | Baseline duration | Total slack | Free slack | Text11 | Text1 |
| --- | --- | --- | --- | --- | --- | --- | --- | --- | --- | --- | --- | --- | --- | --- | --- |
| 468 | 1.4.2.1.2 | **Deposit 11C** | 713d | 2025-03-29 A | 2027-07-07 |  | 36% | 453.49d | 2025-03-29 | 2027-07-07 | 713d | 83d |  |  |  |
| 469 | 1.4.2.1.2.1 | **Gyratory Crusher** | 565d | 2025-03-29 A | 2027-01-16 |  | 58% | 234.5d | 2025-03-29 | 2027-01-16 | 565d | 0d |  |  |  |
| 470 | 1.4.2.1.2.1.1 | Release of Purchase Specification | 24d | 2025-03-29 A | 2025-04-27 A | 313SS | 100% |  | 2025-03-29 | 2025-04-27 | 24d |  |  | Completed |  |
| 471 | 1.4.2.1.2.1.2 | Evaluation of offer & placement of purchase order | 103d | 2025-04-28 A | 2025-08-25 A | 470 | 100% |  | 2025-04-28 | 2025-08-25 | 103d |  |  | Completed |  |
| 472 | 1.4.2.1.2.1.3 | Drawing Submission and manufacturing clearance | 85d | 2025-10-27 A | 2026-01-31 A | 471FS+30d | 100% |  | 2025-10-27 | 2026-01-31 | 85d |  |  | In Progress |  |
| 473 | 1.4.2.1.2.1.4 | Manufacturing and inspection | 250d | 2026-02-02 A | 2026-11-19 | 472 | 35% | 162.5d | 2026-02-02 | 2026-11-19 | 250d | 0d |  |  | no |
| 474 | 1.4.2.1.2.1.5 | Dispatch and delivery at site | 50d | 2026-11-20 | 2027-01-16 | 473 |  |  | 2026-11-20 | 2027-01-16 | 50d | 0d |  |  | no |
| 475 | 1.4.2.1.2.2 | **Cone Crusher** | 565d | 2025-03-29 A | 2027-01-16 |  | 55% | 254.54d | 2025-03-29 | 2027-01-16 | 565d | 0d |  |  |  |
| 476 | 1.4.2.1.2.2.1 | Release of Purchase Specification | 15d | 2025-03-29 A | 2025-04-15 A | 319SS | 100% |  | 2025-03-29 | 2025-04-15 | 15d |  |  | Completed |  |
| 477 | 1.4.2.1.2.2.2 | Evaluation of offer & placement of purchase order | 90d | 2025-05-13 A | 2025-08-25 A | 476FS+26d | 100% |  | 2025-05-13 | 2025-08-25 | 90d |  |  | Completed |  |
| 478 | 1.4.2.1.2.2.3 | Drawing Submission and manufacturing clearance | 77d | 2025-10-21 A | 2026-01-16 A | 477 | 100% |  | 2025-10-21 | 2026-01-16 | 77d |  |  | In Progress |  |
| 479 | 1.4.2.1.2.2.4 | Manufacturing and inspection | 200d | 2026-01-17 A | 2026-09-07 | 478 | 45% | 110d | 2026-01-17 | 2026-09-07 | 200d | 0d |  |  | no |
| 480 | 1.4.2.1.2.2.5 | Dispatch and delivery at site | 113d | 2026-09-08 | 2027-01-16 | 479 |  |  | 2026-09-08 | 2027-01-16 | 113d | 0d |  |  | no |
| 481 | 1.4.2.1.2.3 | **Apron Feeder (3000 TPH & 1500 TPH )** | 472d | 2025-04-02 A | 2026-10-03 |  | 76% | 112.84d | 2025-04-02 | 2026-10-01 | 470d | 103d |  |  |  |
| 482 | 1.4.2.1.2.3.1 | Release of Purchase Specification | 20d | 2025-04-02 A | 2025-04-24 A | 325SS | 100% |  | 2025-04-02 | 2025-04-24 | 20d |  |  | Completed |  |
| 483 | 1.4.2.1.2.3.2 | Evaluation of offer & placement of purchase order | 43d | 2025-05-02 A | 2025-06-20 A | 482 | 100% |  | 2025-05-02 | 2025-06-20 | 43d |  |  | Completed |  |
| 484 | 1.4.2.1.2.3.3 | Drawing Submission and manufacturing clearance | 55d | 2025-08-14 A | 2025-10-16 A | 483FS+7d | 100% |  | 2025-08-14 | 2025-10-14 | 53d |  |  | Completed |  |
| 485 | 1.4.2.1.2.3.4 | Manufacturing and inspection | 213d | 2025-10-17 A | 2026-06-20 | 484 | 95% | 10.65d | 2025-10-15 | 2026-06-18 | 213d | 103d | 0d | In Progress |  |
| 486 | 1.4.2.1.2.3.5 | Dispatch and delivery at site | 90d | 2026-06-22 | 2026-10-03 | 485 |  |  | 2026-06-19 | 2026-10-01 | 90d | 103d | 84d |  |  |
| 487 | 1.4.2.1.2.4 | **Scalping Screen** | 301d | 2025-03-29 A | 2026-03-14 A |  | 100% |  | 2025-03-29 | 2026-08-13 | 431d |  |  |  |  |
| 488 | 1.4.2.1.2.4.1 | Release of Purchase Specification | 21d | 2025-03-29 A | 2025-04-22 A | 331SS | 100% |  | 2025-03-29 | 2025-04-22 | 21d |  |  | Completed |  |
| 489 | 1.4.2.1.2.4.2 | Evaluation of offer & placement of purchase order | 41d | 2025-05-02 A | 2025-06-18 A | 488 | 100% |  | 2025-05-02 | 2025-06-18 | 41d |  |  | Completed |  |
| 490 | 1.4.2.1.2.4.3 | Drawing Submission and manufacturing clearance | 75d | 2025-08-16 A | 2025-11-11 A | 489FS+30d | 100% |  | 2025-08-16 | 2025-11-11 | 75d |  |  | Completed |  |
| 491 | 1.4.2.1.2.4.4 | Manufacturing and inspection | 88d | 2025-11-12 A | 2026-02-20 A | 490 | 100% |  | 2025-11-12 | 2026-04-30 | 147d |  |  | In Progress |  |
| 492 | 1.4.2.1.2.4.5 | Dispatch and delivery at site | 19d | 2026-02-21 A | 2026-03-14 A | 491 | 100% |  | 2026-05-01 | 2026-08-13 | 90d |  |  |  |  |

| ID | WBS | Task | Duration | Start | Finish | Predecessors | Complete | Remaining | Baseline start | Baseline finish | Baseline duration | Total slack | Free slack | Text11 |
| --- | --- | --- | --- | --- | --- | --- | --- | --- | --- | --- | --- | --- | --- | --- |
| 493 | 1.4.2.1.2.5 | **EOT Cranes (160/30T and 40/5T)** | 519d | 2025-04-15 A | 2026-12-10 |  | 63% | 191.21d | 2025-04-15 | 2026-11-27 | 508d | 42d |  |  |
| 494 | 1.4.2.1.2.5.1 | Release of Purchase Specification | 8d | 2025-04-15 A | 2025-04-23 A | 337SS | 100% |  | 2025-04-15 | 2025-04-23 | 8d |  |  | Completed |
| 495 | 1.4.2.1.2.5.2 | Evaluation of offer & placement of purchase order | 125d | 2025-05-02 A | 2025-09-24 A | 494 | 100% |  | 2025-05-02 | 2025-09-24 | 125d |  |  | Completed |
| 496 | 1.4.2.1.2.5.3 | Drawing Submission and manufacturing clearance | 41d | 2025-10-17 A | 2025-12-03 A | 495FS+10d | 100% |  | 2025-10-17 | 2025-11-20 | 30d |  |  | Completed |
| 497 | 1.4.2.1.2.5.4 | Manufacturing and inspection | 230d | 2025-12-04 A | 2026-08-27 | 496 | 60% | 92d | 2025-11-21 | 2026-08-14 | 230d | 42d | 0d | In Progress |
| 498 | 1.4.2.1.2.5.5 | Dispatch and delivery at site | 90d | 2026-08-28 | 2026-12-10 | 497 |  |  | 2026-08-15 | 2026-11-27 | 90d | 42d | 27d |  |
| 499 | 1.4.2.1.2.6 | **Travelling Tripper** | 506d | 2025-04-15 A | 2026-11-25 |  | 61% | 199.74d | 2025-04-15 | 2026-09-12 | 443d | 113d |  |  |
| 500 | 1.4.2.1.2.6.1 | Release of Purchase Specification | 9d | 2025-04-15 A | 2025-04-24 A | 343SS | 100% |  | 2025-04-15 | 2025-04-24 | 9d |  |  | Completed |
| 501 | 1.4.2.1.2.6.2 | Evaluation of offer & placement of purchase order | 57d | 2025-04-28 A | 2025-07-02 A | 500 | 100% |  | 2025-04-28 | 2025-07-02 | 57d |  |  | Completed |
| 502 | 1.4.2.1.2.6.3 | Drawing Submission and manufacturing clearance | 63d | 2025-08-25 A | 2025-11-05 A | 501FS+45d | 100% |  | 2025-08-25 | 2025-11-19 | 75d |  |  | Completed |
| 503 | 1.4.2.1.2.6.4 | Manufacturing and inspection | 241d | 2025-11-06 A | 2026-08-12 | 502 | 62% | 91.58d | 2025-11-20 | 2026-05-30 | 166d | 113d | 0d | In Progress |
| 504 | 1.4.2.1.2.6.5 | Dispatch and delivery at site | 90d | 2026-08-13 | 2026-11-25 | 503 |  |  | 2026-06-01 | 2026-09-12 | 90d | 113d | 87d |  |
| 505 | 1.4.2.1.2.7 | **Idlers** | 229d | 2025-09-22 A | 2026-06-13 |  | 90% | 22.5d | 2025-09-22 | 2026-09-12 | 307d | 239d |  |  |
| 506 | 1.4.2.1.2.7.1 | Release of Purchase Specification | 15d | 2025-09-22 A | 2025-10-08 A | 349SS | 100% |  | 2025-09-22 | 2025-10-08 | 15d |  |  | Completed |
| 507 | 1.4.2.1.2.7.2 | Evaluation of offer & placement of purchase order | 44d | 2025-10-09 A | 2025-11-28 A | 506 | 100% |  | 2025-10-09 | 2025-11-28 | 44d |  |  | Completed |
| 508 | 1.4.2.1.2.7.3 | Drawing Submission and manufacturing clearance | 26d | 2025-11-29 A | 2025-12-28 A | 507 | 100% |  | 2025-11-29 | 2025-12-28 | 26d |  |  | In Progress |
| 509 | 1.4.2.1.2.7.4 | Manufacturing and inspection | 54d | 2025-12-29 A | 2026-02-28 A | 508 | 100% |  | 2025-12-29 | 2026-05-30 | 132d |  |  |  |
| 510 | 1.4.2.1.2.7.5 | Dispatch and delivery at site | 90d | 2026-03-02 A | 2026-06-13 | 509 | 75% | 22.5d | 2026-06-01 | 2026-09-12 | 90d | 239d | 232d |  |
| 511 | 1.4.2.1.2.8 | **Gearbox** | 407d | 2025-09-26 A | 2027-01-12 |  | 43% | 233.14d | 2025-09-26 | 2026-12-28 | 394d | 126d |  |  |
| 512 | 1.4.2.1.2.8.1 | Release of Purchase Specification | 15d | 2025-09-26 A | 2025-10-13 A | 355SS | 100% |  | 2025-09-26 | 2025-10-13 | 15d |  |  | Completed |
| 513 | 1.4.2.1.2.8.2 | Evaluation of offer & placement of purchase order | 26d | 2025-10-14 A | 2025-11-12 A | 512 | 100% |  | 2025-10-14 | 2025-11-12 | 26d |  |  | Completed |
| 514 | 1.4.2.1.2.8.3 | Drawing Submission and manufacturing clearance | 146d | 2025-11-13 A | 2026-04-30 | 513 | 91% | 13.14d | 2025-11-13 | 2026-04-30 | 133d | 126d | 0d | Completed |
| 515 | 1.4.2.1.2.8.4 | Manufacturing and inspection | 130d | 2026-05-01 | 2026-09-29 | 514 |  |  | 2026-04-16 | 2026-09-14 | 130d | 126d | 0d | In Progress |
| 516 | 1.4.2.1.2.8.5 | Dispatch and delivery at site | 90d | 2026-09-30 | 2027-01-12 | 515 |  |  | 2026-09-15 | 2026-12-28 | 90d | 126d | 106d |  |

| ID | WBS | Task | Duration | Start | Finish | Predecessors | Complete | Remaining | Baseline start | Baseline finish | Baseline duration | Total slack | Free slack | Text11 |
| --- | --- | --- | --- | --- | --- | --- | --- | --- | --- | --- | --- | --- | --- | --- |
| 517 | 1.4.2.1.2.9 | **Pulley** | 457.75d | 2025-09-22 A | 2027-03-08 |  | 40% | 276.7d | 2025-09-22 | 2027-01-12 | 411d | 60.25d |  |  |
| 518 | 1.4.2.1.2.9.1 | Release of Purchase Specification | 15d | 2025-09-22 A | 2025-10-08 A | 361SS | 100% |  | 2025-09-22 | 2025-10-08 | 15d |  |  | Completed |
| 519 | 1.4.2.1.2.9.2 | Evaluation of offer & placement of purchase order | 65d | 2025-10-09 A | 2025-12-23 A | 518 | 100% |  | 2025-10-09 | 2025-12-23 | 65d |  |  | Completed |
| 520 | 1.4.2.1.2.9.3 | Drawing Submission and manufacturing clearance | 121d | 2025-12-24 A | 2026-05-25 | 519FS+40d | 80% | 24.2d | 2026-02-07 | 2026-03-31 | 45d | 60.25d | 0d | In Progress |
| 521 | 1.4.2.1.2.9.4 | Manufacturing and inspection | 156d | 2026-05-25 | 2026-11-23 | 520 |  |  | 2026-04-01 | 2026-09-29 | 156d | 60.25d | 0d |  |
| 522 | 1.4.2.1.2.9.5 | Dispatch and delivery at site | 90d | 2026-11-23 | 2027-03-08 | 521 |  |  | 2026-09-30 | 2027-01-12 | 90d | 60.25d | 0d |  |
| 523 | 1.4.2.1.2.10 | **Belt** | 318d | 2025-09-26 A | 2026-09-30 |  | 75% | 78.4d | 2025-09-26 | 2026-10-27 | 341d | 191d |  |  |
| 524 | 1.4.2.1.2.10.1 | Release of Purchase Specification | 15d | 2025-09-26 A | 2025-10-13 A | 367SS | 100% |  | 2025-09-26 | 2025-10-13 | 15d |  |  | Completed |
| 525 | 1.4.2.1.2.10.2 | Evaluation of offer & placement of purchase order | 33d | 2025-10-14 A | 2025-11-20 A | 524 | 100% |  | 2025-10-14 | 2025-11-20 | 33d |  |  | Completed |
| 526 | 1.4.2.1.2.10.3 | Drawing Submission and manufacturing clearance | 46d | 2025-11-21 A | 2026-01-12 A | 525 | 100% |  | 2025-11-21 | 2026-01-07 | 42d |  |  | Completed |
| 527 | 1.4.2.1.2.10.4 | Manufacturing and inspection | 145d | 2026-01-13 A | 2026-06-30 | 526 | 65% | 50.75d | 2026-01-08 | 2026-07-14 | 161d | 51.35d | 0d | In Progress |
| 528 | 1.4.2.1.2.10.5 | Dispatch and delivery at site | 79d | 2026-03-02 A | 2026-09-30 | 527 | 65% | 27.65d | 2026-07-15 | 2026-10-27 | 90d | 191d | 132d |  |
| 529 | 1.4.2.1.2.11 | **Coupling** | 380d | 2026-01-21 A | 2027-04-08 |  | 20% | 303.2d | 2026-01-21 | 2027-04-08 | 380d | 101d |  |  |
| 530 | 1.4.2.1.2.11.1 | Release of Purchase Specification | 24d | 2026-01-21 A | 2026-02-17 A | 373SS | 100% |  | 2026-01-21 | 2026-02-17 | 24d |  |  | In Progress |
| 531 | 1.4.2.1.2.11.2 | Evaluation of offer & placement of purchase order | 88d | 2026-02-18 A | 2026-05-30 | 530 | 60% | 35.2d | 2026-02-18 | 2026-05-30 | 88d | 101d | 0d |  |
| 532 | 1.4.2.1.2.11.3 | Drawing Submission and manufacturing clearance | 109d | 2026-06-01 | 2026-10-05 | 531 |  |  | 2026-06-01 | 2026-10-05 | 109d | 101d | 0d |  |
| 533 | 1.4.2.1.2.11.4 | Manufacturing and inspection | 104d | 2026-10-06 | 2027-02-03 | 532 |  |  | 2026-10-06 | 2027-02-03 | 104d | 101d | 0d |  |
| 534 | 1.4.2.1.2.11.5 | Dispatch and delivery at site | 55d | 2027-02-04 | 2027-04-08 | 533 |  |  | 2027-02-04 | 2027-04-08 | 55d | 101d | 56d |  |
| 535 | 1.4.2.1.2.12 | **Technological Structures** | 314d | 2026-05-16 | 2027-05-16 |  |  |  | 2026-05-16 | 2027-05-16 | 314d | 7d |  |  |
| 536 | 1.4.2.1.2.12.1 | Release of Purchase Specification | 39d | 2026-05-16 | 2026-06-30 | 433SS |  |  | 2026-05-16 | 2026-06-30 | 39d | 7d | 0d | In Progress |
| 537 | 1.4.2.1.2.12.2 | Evaluation of offer & placement of Purchase Order | 60d | 2026-07-01 | 2026-09-08 | 536 |  |  | 2026-07-01 | 2026-09-08 | 60d | 7d | 0d |  |
| 538 | 1.4.2.1.2.12.3 | Drawing Submission and Manufacturing Clearance | 90d | 2026-09-09 | 2026-12-22 | 537 |  |  | 2026-09-09 | 2026-12-22 | 90d | 7d | 0d |  |
| 539 | 1.4.2.1.2.12.4 | Manufacturing and inspection | 125d | 2026-12-23 | 2027-05-16 | 538 |  |  | 2026-12-23 | 2027-05-16 | 125d | 7d | 0d |  |
| 540 | 1.4.2.1.2.12.5 | Dispatch and delivery at site | 60d | 2027-02-08 | 2027-04-17 | 539SS+40d |  |  | 2027-02-08 | 2027-04-17 | 60d | 7d | 0d |  |

| ID | WBS | Task | Duration | Start | Finish | Predecessors | Complete | Remaining | Baseline start | Baseline finish | Baseline duration | Total slack | Free slack | Text11 |
| --- | --- | --- | --- | --- | --- | --- | --- | --- | --- | --- | --- | --- | --- | --- |
| 541 | 1.4.2.1.2.13 | **Hydraulic Gate** | 461d | 2025-10-22 A | 2027-04-10 |  | 42% | 268.1d | 2025-10-22 | 2027-01-15 | 388d | 102d |  |  |
| 542 | 1.4.2.1.2.13.1 | Release of Purchase Specification | 9d | 2025-10-22 A | 2025-10-31 A | 379SS | 100% |  | 2025-10-22 | 2025-11-22 | 28d |  |  | Completed |
| 543 | 1.4.2.1.2.13.2 | Evaluation of offer & placement of purchase order | 26d | 2025-11-01 A | 2025-12-01 A | 542 | 100% |  | 2025-11-24 | 2025-12-01 | 7d |  |  | Completed |
| 544 | 1.4.2.1.2.13.3 | Drawing Submission and manufacturing clearance | 62d | 2025-12-02 A | 2026-02-10 A | 543 | 100% |  | 2025-12-02 | 2026-05-15 | 143d |  |  | In Progress |
| 545 | 1.4.2.1.2.13.4 | Manufacturing and inspection | 274d | 2026-02-11 A | 2026-12-26 | 544 | 35% | 178.1d | 2026-05-16 | 2026-10-02 | 120d | 102d | 0d |  |
| 546 | 1.4.2.1.2.13.5 | Dispatch and delivery at site | 90d | 2026-12-28 | 2027-04-10 | 545 |  |  | 2026-10-03 | 2027-01-15 | 90d | 102d | 83d |  |
| 547 | 1.4.2.1.2.14 | **Metal Detector** | 539d | 2025-09-08 A | 2027-05-26 |  | 35% | 348.19d | 2025-09-08 | 2027-05-26 | 539d | 106d |  |  |
| 548 | 1.4.2.1.2.14.1 | Release of Purchase Specification | 28d | 2025-09-08 A | 2025-10-09 A | 391SS | 100% |  | 2025-09-08 | 2025-10-09 | 28d |  |  | Completed |
| 549 | 1.4.2.1.2.14.2 | Evaluation of offer & placement of purchase order | 201d | 2025-10-10 A | 2026-05-30 | 548 | 81% | 38.19d | 2025-10-10 | 2026-05-30 | 201d | 106d | 0d | In Progress |
| 550 | 1.4.2.1.2.14.3 | Drawing Submission and manufacturing clearance | 100d | 2026-06-01 | 2026-09-24 | 549 |  |  | 2026-06-01 | 2026-09-24 | 100d | 106d | 0d |  |
| 551 | 1.4.2.1.2.14.4 | Manufacturing and inspection | 120d | 2026-09-25 | 2027-02-11 | 550 |  |  | 2026-09-25 | 2027-02-11 | 120d | 106d | 0d |  |
| 552 | 1.4.2.1.2.14.5 | Dispatch and delivery at site | 90d | 2027-02-12 | 2027-05-26 | 551, 70FS-45d |  |  | 2027-02-12 | 2027-05-26 | 90d | 106d | 0d |  |
| 553 | 1.4.2.1.2.15 | **ILMS/ CBMS** | 443d | 2025-10-15 A | 2027-03-13 |  | 35% | 290.14d | 2025-10-15 | 2027-03-13 | 443d | 165d |  |  |
| 554 | 1.4.2.1.2.15.1 | Release of Purchase Specification | 15d | 2025-10-15 A | 2025-10-31 A | 397SS | 100% |  | 2025-10-15 | 2025-10-31 | 15d |  |  | Completed |
| 555 | 1.4.2.1.2.15.2 | Evaluation of offer & placement of purchase order | 25d | 2025-11-01 A | 2025-11-29 A | 554 | 100% |  | 2025-11-01 | 2025-11-29 | 25d |  |  | Completed |
| 556 | 1.4.2.1.2.15.3 | Drawing Submission and manufacturing clearance | 129d | 2026-01-01 A | 2026-05-30 | 555FS+30d | 80% | 25.8d | 2026-01-01 | 2026-05-30 | 129d | 165d | 0d | In Progress |
| 557 | 1.4.2.1.2.15.4 | Manufacturing and inspection | 156d | 2026-06-01 | 2026-11-28 | 556 |  |  | 2026-06-01 | 2026-11-28 | 156d | 165d | 0d |  |
| 558 | 1.4.2.1.2.15.5 | Dispatch and delivery at site | 90d | 2026-11-30 | 2027-03-13 | 557 |  |  | 2026-11-30 | 2027-03-13 | 90d | 165d | 0d |  |
| 559 | 1.4.2.1.2.16 | **Belt Weigher** | 448d | 2026-02-02 A | 2027-07-07 |  | 17% | 370d | 2026-02-02 | 2027-07-07 | 448d | 83d |  |  |
| 560 | 1.4.2.1.2.16.1 | Release of Purchase Specification | 22d | 2026-02-02 A | 2026-02-26 A | 403SS | 100% |  | 2026-02-02 | 2026-02-26 | 22d |  |  | Completed |
| 561 | 1.4.2.1.2.16.2 | Evaluation of offer & placement of purchase order | 80d | 2026-02-27 A | 2026-05-30 | 560 | 70% | 24d | 2026-02-27 | 2026-05-30 | 80d | 83d | 0d | In Progress |
| 562 | 1.4.2.1.2.16.3 | Drawing Submission and manufacturing clearance | 100d | 2026-06-01 | 2026-09-24 | 561 |  |  | 2026-06-01 | 2026-09-24 | 100d | 83d | 0d |  |
| 563 | 1.4.2.1.2.16.4 | Manufacturing and inspection | 156d | 2026-09-25 | 2027-03-25 | 562 |  |  | 2026-09-25 | 2027-03-25 | 156d | 83d | 0d |  |
| 564 | 1.4.2.1.2.16.5 | Dispatch and delivery at site | 90d | 2027-03-26 | 2027-07-07 | 563 |  |  | 2027-03-26 | 2027-07-07 | 90d | 83d | 0d |  |

| ID | WBS | Task | Duration | Start | Finish | Predecessors | Complete | Remaining | Baseline start | Baseline finish | Baseline duration | Total slack | Free slack | Text11 |
| --- | --- | --- | --- | --- | --- | --- | --- | --- | --- | --- | --- | --- | --- | --- |
| 565 | 1.4.2.1.2.17 | **Flap Gate** | 316d | 2026-04-13 A | 2027-04-15 |  | 6% | 298d | 2026-04-13 | 2027-04-15 | 316d | 70d |  |  |
| 566 | 1.4.2.1.2.17.1 | Release of Purchase Specification | 36d | 2026-04-13 A | 2026-05-23 | 409SS | 50% | 18d | 2026-04-13 | 2026-05-23 | 36d | 70d | 0d | In Progress |
| 567 | 1.4.2.1.2.17.2 | Evaluation of offer & placement of purchase order | 60d | 2026-05-25 | 2026-08-01 | 566 |  |  | 2026-05-25 | 2026-08-01 | 60d | 70d | 0d |  |
| 568 | 1.4.2.1.2.17.3 | Drawing Submission and manufacturing clearance | 60d | 2026-08-03 | 2026-10-10 | 567 |  |  | 2026-08-03 | 2026-10-10 | 60d | 70d | 0d |  |
| 569 | 1.4.2.1.2.17.4 | Manufacturing and inspection | 100d | 2026-10-12 | 2027-02-04 | 568 |  |  | 2026-10-12 | 2027-02-04 | 100d | 70d | 0d |  |
| 570 | 1.4.2.1.2.17.5 | Dispatch and delivery at site | 60d | 2027-02-05 | 2027-04-15 | 569 |  |  | 2027-02-05 | 2027-04-15 | 60d | 70d | 48d |  |
| 571 | 1.4.2.1.2.18 | **Elevator** | 443d | 2026-01-27 A | 2027-06-25 |  | 16% | 371.48d | 2026-01-27 | 2027-06-25 | 443d | 81d |  |  |
| 572 | 1.4.2.1.2.18.1 | Release of Purchase Specification | 27d | 2026-01-27 A | 2026-02-26 A | 415SS | 100% |  | 2026-01-27 | 2026-02-26 | 27d |  |  |  |
| 573 | 1.4.2.1.2.18.2 | Evaluation of offer & placement of purchase order | 106d | 2026-02-27 A | 2026-06-30 | 572 | 42% | 61.48d | 2026-02-27 | 2026-06-30 | 106d | 81d | 0d |  |
| 574 | 1.4.2.1.2.18.3 | Drawing Submission and manufacturing clearance | 75d | 2026-07-01 | 2026-09-25 | 573 |  |  | 2026-07-01 | 2026-09-25 | 75d | 81d | 0d |  |
| 575 | 1.4.2.1.2.18.4 | Manufacturing and inspection | 180d | 2026-09-26 | 2027-04-23 | 574 |  |  | 2026-09-26 | 2027-04-23 | 180d | 81d | 0d |  |
| 576 | 1.4.2.1.2.18.5 | Dispatch and delivery at site | 55d | 2027-04-24 | 2027-06-25 | 575 |  |  | 2027-04-24 | 2027-06-25 | 55d | 81d | 0d |  |
| 577 | 1.4.2.1.2.19 | **Rock Breaker** | 335d | 2026-02-07 A | 2027-03-04 |  | 18% | 273.26d | 2026-02-07 | 2027-03-04 | 335d | 135d |  |  |
| 578 | 1.4.2.1.2.19.1 | Release of Purchase Specification | 15d | 2026-02-07 A | 2026-02-24 A | 421SS | 100% |  | 2026-02-07 | 2026-02-24 | 15d |  |  |  |
| 579 | 1.4.2.1.2.19.2 | Evaluation of offer & placement of purchase order | 82d | 2026-02-25 A | 2026-05-30 | 578 | 57% | 35.26d | 2026-02-25 | 2026-05-30 | 82d | 135d | 0d |  |
| 580 | 1.4.2.1.2.19.3 | Drawing Submission and manufacturing clearance | 70d | 2026-06-01 | 2026-08-20 | 579 |  |  | 2026-06-01 | 2026-08-20 | 70d | 135d | 0d |  |
| 581 | 1.4.2.1.2.19.4 | Manufacturing and inspection | 118d | 2026-08-21 | 2027-01-05 | 580 |  |  | 2026-08-21 | 2027-01-05 | 118d | 135d | 0d |  |
| 582 | 1.4.2.1.2.19.5 | Dispatch and delivery at site | 50d | 2027-01-06 | 2027-03-04 | 581 |  |  | 2027-01-06 | 2027-03-04 | 50d | 135d | 82d |  |
| 583 | 1.4.2.1.2.20 | **Hydraulic Gripper** | 408d | 2026-02-02 A | 2027-05-21 |  | 16% | 342d | 2026-02-02 | 2027-05-21 | 408d | 93d |  |  |
| 584 | 1.4.2.1.2.20.1 | Release of Purchase Specification | 12d | 2026-02-02 A | 2026-02-14 A | 427SS | 100% |  | 2026-02-02 | 2026-02-14 | 12d |  |  |  |
| 585 | 1.4.2.1.2.20.2 | Evaluation of offer & placement of purchase order | 90d | 2026-02-16 A | 2026-05-30 | 584 | 60% | 36d | 2026-02-16 | 2026-05-30 | 90d | 93d | 0d |  |
| 586 | 1.4.2.1.2.20.3 | Drawing Submission and manufacturing clearance | 90d | 2026-06-01 | 2026-09-12 | 585 |  |  | 2026-06-01 | 2026-09-12 | 90d | 93d | 0d |  |
| 587 | 1.4.2.1.2.20.4 | Manufacturing and inspection | 156d | 2026-09-14 | 2027-03-13 | 586 |  |  | 2026-09-14 | 2027-03-13 | 156d | 93d | 0d |  |
| 588 | 1.4.2.1.2.20.5 | Dispatch and delivery at site | 60d | 2027-03-15 | 2027-05-21 | 587 |  |  | 2027-03-15 | 2027-05-21 | 60d | 93d | 40d |  |

| ID | WBS | Task | Duration | Start | Finish | Predecessors | Baseline start | Baseline finish | Baseline duration | Total slack | Free slack |
| --- | --- | --- | --- | --- | --- | --- | --- | --- | --- | --- | --- |
| 589 | 1.4.2.1.2.21 | **AC, Ventilation, Ducting, Dumpers, Exhaust Fans etc** | 257d | 2026-07-08 | 2027-05-03 |  | 2026-07-08 | 2027-05-03 | 257d | 11d |  |
| 590 | 1.4.2.1.2.21.1 | Release of Purchase Specification | 21d | 2026-07-08 | 2026-07-31 | 439SS | 2026-07-08 | 2026-07-31 | 21d | 11d | 0d |
| 591 | 1.4.2.1.2.21.2 | Evaluation of offer & placement of purchase order | 50d | 2026-08-01 | 2026-09-28 | 590 | 2026-08-01 | 2026-09-28 | 50d | 11d | 0d |
| 592 | 1.4.2.1.2.21.3 | Drawing Submission and manufacturing clearance | 60d | 2026-09-29 | 2026-12-07 | 591 | 2026-09-29 | 2026-12-07 | 60d | 11d | 0d |
| 593 | 1.4.2.1.2.21.4 | Manufacturing and inspection | 100d | 2026-12-08 | 2027-04-02 | 592 | 2026-12-08 | 2027-04-02 | 100d | 11d | 0d |
| 594 | 1.4.2.1.2.21.5 | Dispatch and delivery at site | 26d | 2027-04-03 | 2027-05-03 | 593 | 2027-04-03 | 2027-05-03 | 26d | 11d | 0d |
| 595 | 1.4.2.1.2.22 | **Dust Supression System** | 267d | 2026-07-08 | 2027-05-14 |  | 2026-07-08 | 2027-05-14 | 267d | 27d |  |
| 596 | 1.4.2.1.2.22.1 | Release of Purchase Specification | 21d | 2026-07-08 | 2026-07-31 | 445SS | 2026-07-08 | 2026-07-31 | 21d | 27d | 0d |
| 597 | 1.4.2.1.2.22.2 | Evaluation of offer & placement of purchase order | 60d | 2026-08-01 | 2026-10-09 | 596 | 2026-08-01 | 2026-10-09 | 60d | 27d | 0d |
| 598 | 1.4.2.1.2.22.3 | Drawing Submission and manufacturing clearance | 60d | 2026-10-10 | 2026-12-18 | 597 | 2026-10-10 | 2026-12-18 | 60d | 27d | 0d |
| 599 | 1.4.2.1.2.22.4 | Manufacturing and inspection | 100d | 2026-12-19 | 2027-04-14 | 598 | 2026-12-19 | 2027-04-14 | 100d | 27d | 0d |
| 600 | 1.4.2.1.2.22.5 | Dispatch and delivery at site | 26d | 2027-04-15 | 2027-05-14 | 599 | 2027-04-15 | 2027-05-14 | 26d | 27d | 0d |
| 601 | 1.4.2.1.2.23 | **Fire Fighting System** | 258d | 2026-07-08 | 2027-05-04 |  | 2026-07-08 | 2027-05-04 | 258d | 10d |  |
| 602 | 1.4.2.1.2.23.1 | Release of Purchase Specification | 21d | 2026-07-08 | 2026-07-31 | 451SS | 2026-07-08 | 2026-07-31 | 21d | 10d | 0d |
| 603 | 1.4.2.1.2.23.2 | Evaluation of offer & placement of purchase order | 52d | 2026-08-01 | 2026-09-30 | 602 | 2026-08-01 | 2026-09-30 | 52d | 10d | 0d |
| 604 | 1.4.2.1.2.23.3 | Drawing Submission and manufacturing clearance | 60d | 2026-10-01 | 2026-12-09 | 603 | 2026-10-01 | 2026-12-09 | 60d | 10d | 0d |
| 605 | 1.4.2.1.2.23.4 | Manufacturing and inspection | 100d | 2026-12-10 | 2027-04-05 | 604, 45FF | 2026-12-10 | 2027-04-05 | 100d | 10d | 0d |
| 606 | 1.4.2.1.2.23.5 | Dispatch and delivery at site | 25d | 2027-04-06 | 2027-05-04 | 605 | 2027-04-06 | 2027-05-04 | 25d | 10d | 0d |
| 607 | 1.4.2.1.2.24 | **Water Supply System** | 266d | 2026-07-08 | 2027-05-13 |  | 2026-07-08 | 2027-05-13 | 266d | 28d |  |
| 608 | 1.4.2.1.2.24.1 | Release of Purchase Specification | 21d | 2026-07-08 | 2026-07-31 | 457SS | 2026-07-08 | 2026-07-31 | 21d | 28d | 0d |
| 609 | 1.4.2.1.2.24.2 | Evaluation of offer & placement of purchase order | 50d | 2026-08-01 | 2026-09-28 | 608 | 2026-08-01 | 2026-09-28 | 50d | 28d | 0d |
| 610 | 1.4.2.1.2.24.3 | Drawing Submission and manufacturing clearance | 50d | 2026-10-22 | 2026-12-18 | 609FS+20d | 2026-10-22 | 2026-12-18 | 50d | 28d | 0d |
| 611 | 1.4.2.1.2.24.4 | Manufacturing and inspection | 100d | 2026-12-19 | 2027-04-14 | 610 | 2026-12-19 | 2027-04-14 | 100d | 28d | 0d |
| 612 | 1.4.2.1.2.24.5 | Dispatch and delivery at site | 25d | 2027-04-15 | 2027-05-13 | 611 | 2027-04-15 | 2027-05-13 | 25d | 28d | 0d |

| ID | WBS | Task | Type | Duration | Start | Finish | Predecessors | Complete | Remaining | Baseline start | Baseline finish | Baseline duration | Total slack | Free slack | Constraint | Text11 |
| --- | --- | --- | --- | --- | --- | --- | --- | --- | --- | --- | --- | --- | --- | --- | --- | --- |
| 613 | 1.4.2.1.2.25 | **Miscellaneous Mechanical components** |  | 228d | 2026-08-20 | 2027-05-12 |  |  |  | 2026-08-20 | 2027-05-12 | 228d | 10d |  |  |  |
| 614 | 1.4.2.1.2.25.1 | Release of Purchase Specification |  | 13d | 2026-08-20 | 2026-09-03 | 463SS |  |  | 2026-08-20 | 2026-09-03 | 13d | 10d | 0d |  |  |
| 615 | 1.4.2.1.2.25.2 | Evaluation of offer & placement of purchase order |  | 50d | 2026-09-04 | 2026-10-31 | 614 |  |  | 2026-09-04 | 2026-10-31 | 50d | 10d | 0d |  |  |
| 616 | 1.4.2.1.2.25.3 | Drawing Submission and manufacturing clearance |  | 50d | 2026-11-02 | 2026-12-29 | 615 |  |  | 2026-11-02 | 2026-12-29 | 50d | 10d | 0d |  |  |
| 617 | 1.4.2.1.2.25.4 | Manufacturing and inspection |  | 100d | 2026-12-30 | 2027-04-24 | 616 |  |  | 2026-12-30 | 2027-04-24 | 100d | 10d | 0d |  |  |
| 618 | 1.4.2.1.2.25.5 | Dispatch and delivery at site |  | 15d | 2027-04-26 | 2027-05-12 | 617 |  |  | 2027-04-26 | 2027-05-12 | 15d | 10d | 0d |  |  |
| 619 | 1.4.3 | **Electrical Plant & equipment** |  | 607d | 2025-09-22 A | 2027-08-27 |  | 13% | 530.11d | 2025-09-22 | 2027-08-27 | 607d | 40d |  |  |  |
| 620 | 1.4.3.1 | **Indegenous** |  | 607d | 2025-09-22 A | 2027-08-27 |  | 13% | 530.11d | 2025-09-22 | 2027-08-27 | 607d | 40d |  |  |  |
| 621 | 1.4.3.1.1 | **Deposit 14** |  | 605d | 2025-09-22 A | 2027-08-25 |  | 12% | 532.74d | 2025-09-22 | 2027-08-25 | 605d | 42d |  |  |  |
| 622 | 1.4.3.1.1.1 | **Electrical** |  | 587d | 2025-09-22 A | 2027-08-04 |  | 17% | 488.95d | 2025-09-22 | 2027-08-04 | 587d | 36d |  |  |  |
| 623 | 1.4.3.1.1.1.1 | **6.6 KV HT Switchboard** |  | 376d | 2025-12-30 A | 2027-03-13 |  | 24% | 285.52d | 2025-12-30 | 2027-03-13 | 376d | 44d |  |  |  |
| 624 | 1.4.3.1.1.1.1.1 | Release of Purchase Specification | milestone | 0d | 2025-12-30 A | 2025-12-30 A | 11FF+109d | 100% |  | 2025-12-30 | 2025-12-30 | 0d |  |  | must finish on 2025-12-30 | Completed |
| 625 | 1.4.3.1.1.1.1.2 | Evaluation of offer & placement of purchase order |  | 104d | 2025-12-31 A | 2026-04-30 | 624 | 87% | 13.52d | 2025-12-31 | 2026-04-30 | 104d | 44d | 0d |  | In Progress |
| 626 | 1.4.3.1.1.1.1.3 | Drawing Submission and manufacturing clearance |  | 90d | 2026-05-01 | 2026-08-13 | 625 |  |  | 2026-05-01 | 2026-08-13 | 90d | 44d | 0d |  |  |
| 627 | 1.4.3.1.1.1.1.4 | Manufacturing and inspection |  | 156d | 2026-08-14 | 2027-02-11 | 626 |  |  | 2026-08-14 | 2027-02-11 | 156d | 44d | 0d |  |  |
| 628 | 1.4.3.1.1.1.1.5 | Dispatch and delivery at site |  | 26d | 2027-02-12 | 2027-03-13 | 627 |  |  | 2027-02-12 | 2027-03-13 | 26d | 44d | 41d |  |  |
| 629 | 1.4.3.1.1.1.2 | **415 V Switchboard** |  | 403d | 2026-01-13 A | 2027-04-28 |  | 23% | 308.6d | 2026-01-13 | 2027-04-28 | 403d | 30d |  |  |  |
| 630 | 1.4.3.1.1.1.2.1 | Release of Purchase Specification | milestone | 0d | 2026-01-13 A | 2026-01-13 A | 11FF+123d | 100% |  | 2026-01-13 | 2026-01-13 | 0d |  |  | must finish on 2026-01-13 | Completed |
| 631 | 1.4.3.1.1.1.2.2 | Evaluation of offer & placement of purchase order |  | 118d | 2026-01-14 A | 2026-05-30 | 630 | 80% | 23.6d | 2026-01-14 | 2026-05-30 | 118d | 30d | 0d |  | In Progress |
| 632 | 1.4.3.1.1.1.2.3 | Drawing Submission and manufacturing clearance |  | 90d | 2026-06-01 | 2026-09-12 | 631 |  |  | 2026-06-01 | 2026-09-12 | 90d | 30d | 0d |  |  |
| 633 | 1.4.3.1.1.1.2.4 | Manufacturing and inspection |  | 156d | 2026-09-14 | 2027-03-13 | 632 |  |  | 2026-09-14 | 2027-03-13 | 156d | 30d | 0d |  |  |
| 634 | 1.4.3.1.1.1.2.5 | Dispatch and delivery at site |  | 39d | 2027-03-15 | 2027-04-28 | 633 |  |  | 2027-03-15 | 2027-04-28 | 39d | 30d | 24d |  |  |
| 635 | 1.4.3.1.1.1.3 | **6.6/0.433 KV Distribution Transformer** |  | 100d | 2025-11-25 A | 2026-03-20 A |  | 100% |  | 2025-11-25 | 2026-12-08 | 325d |  |  |  |  |
| 636 | 1.4.3.1.1.1.3.1 | Release of Purchase Specification | milestone | 0d | 2025-11-25 A | 2025-11-25 A | 12FF+65d | 100% |  | 2025-11-25 | 2025-11-25 | 0d |  |  | must finish on 2025-11-25 | Completed |
| 637 | 1.4.3.1.1.1.3.2 | Evaluation of offer & placement of purchase order |  | 13d | 2025-11-26 A | 2025-12-10 A | 636 | 100% |  | 2025-11-26 | 2025-12-10 | 13d |  |  |  | Completed |
| 638 | 1.4.3.1.1.1.3.3 | Drawing Submission and manufacturing clearance |  | 32d | 2025-12-11 A | 2026-01-15 A | 637 | 100% |  | 2025-12-11 | 2026-01-15 | 32d |  |  |  | In Progress |
| 639 | 1.4.3.1.1.1.3.4 | Manufacturing and inspection |  | 38d | 2026-01-16 A | 2026-02-28 A | 638 | 100% |  | 2026-01-16 | 2026-09-29 | 220d |  |  |  |  |
| 640 | 1.4.3.1.1.1.3.5 | Dispatch and delivery at site |  | 17d | 2026-03-02 A | 2026-03-20 A | 639 | 100% |  | 2026-09-30 | 2026-12-08 | 60d |  |  |  |  |

| ID | WBS | Task | Type | Duration | Start | Finish | Predecessors | Complete | Remaining | Baseline start | Baseline finish | Baseline duration | Total slack | Free slack | Text11 |
| --- | --- | --- | --- | --- | --- | --- | --- | --- | --- | --- | --- | --- | --- | --- | --- |
| 641 | 1.4.3.1.1.1.4 | **Conveyor Motor** |  | 481d | 2025-09-22 A | 2027-04-03 |  | 42% | 279.4d | 2025-09-22 | 2027-04-03 | 481d | 126d |  |  |
| 642 | 1.4.3.1.1.1.4.1 | Release of Purchase Specification |  | 53d | 2025-09-22 A | 2025-11-21 A | 13FS+22d | 100% |  | 2025-09-22 | 2025-11-21 | 53d |  |  | Completed |
| 643 | 1.4.3.1.1.1.4.2 | Evaluation of offer & placement of purchase order |  | 10d | 2025-11-22 A | 2025-12-03 A | 642 | 100% |  | 2025-11-22 | 2025-12-03 | 10d |  |  | Completed |
| 644 | 1.4.3.1.1.1.4.3 | Drawing Submission and manufacturing clearance |  | 154d | 2025-12-04 A | 2026-05-30 | 643 | 90% | 15.4d | 2025-12-04 | 2026-05-30 | 154d | 126d | 0d | In Progress |
| 645 | 1.4.3.1.1.1.4.4 | Manufacturing and inspection |  | 204d | 2026-06-01 | 2027-01-23 | 644 |  |  | 2026-06-01 | 2027-01-23 | 204d | 126d | 0d |  |
| 646 | 1.4.3.1.1.1.4.5 | Dispatch and delivery at site |  | 60d | 2027-01-25 | 2027-04-03 | 645 |  |  | 2027-01-25 | 2027-04-03 | 60d | 126d | 84d |  |
| 647 | 1.4.3.1.1.1.5 | **Bus Duct** |  | 443d | 2026-03-02 A | 2027-07-29 |  | 9% | 404.07d | 2026-05-30 | 2027-07-29 | 366d | 41d |  |  |
| 648 | 1.4.3.1.1.1.5.1 | Release of Purchase Specification | milestone | 0d | 2026-03-02 A | 2026-03-20 A | 638FS+115d | 100% |  | 2026-05-30 | 2026-07-31 | 54d |  |  |  |
| 649 | 1.4.3.1.1.1.5.2 | Evaluation of offer & placement of purchase order |  | 174d | 2026-03-21 A | 2026-10-09 | 648 | 20% | 139.2d | 2026-08-01 | 2026-10-09 | 60d | 41d | 0d |  |
| 650 | 1.4.3.1.1.1.5.3 | Drawing Submission and manufacturing clearance |  | 90d | 2026-11-14 | 2027-02-26 | 649FS+30d |  |  | 2026-11-14 | 2027-02-26 | 90d | 41d | 0d |  |
| 651 | 1.4.3.1.1.1.5.4 | Manufacturing and inspection |  | 106d | 2027-02-27 | 2027-06-29 | 650 |  |  | 2027-02-27 | 2027-06-29 | 106d | 41d | 0d |  |
| 652 | 1.4.3.1.1.1.5.5 | Dispatch and delivery at site |  | 26d | 2027-06-30 | 2027-07-29 | 651 |  |  | 2027-06-30 | 2027-07-29 | 26d | 41d | 0d |  |
| 653 | 1.4.3.1.1.1.6 | **Power Cables** |  | 232d | 2026-08-17 | 2027-05-13 |  |  |  | 2026-08-17 | 2027-05-13 | 232d | 10d |  |  |
| 654 | 1.4.3.1.1.1.6.1 | Release of Purchase Specification |  | 39d | 2026-08-17 | 2026-09-30 | 57FS+69d, 56FS+69d |  |  | 2026-08-17 | 2026-09-30 | 39d | 10d | 0d |  |
| 655 | 1.4.3.1.1.1.6.2 | Evaluation of offer & placement of purchase order |  | 39d | 2026-10-01 | 2026-11-14 | 654 |  |  | 2026-10-01 | 2026-11-14 | 39d | 10d | 0d |  |
| 656 | 1.4.3.1.1.1.6.3 | Drawing Submission and manufacturing clearance |  | 39d | 2026-12-03 | 2027-01-16 | 655FS+15d |  |  | 2026-12-03 | 2027-01-16 | 39d | 10d | 0d |  |
| 657 | 1.4.3.1.1.1.6.4 | Manufacturing and inspection |  | 90d | 2027-01-18 | 2027-05-01 | 656 |  |  | 2027-01-18 | 2027-05-01 | 90d | 10d | 0d |  |
| 658 | 1.4.3.1.1.1.6.5 | Dispatch and delivery at site |  | 10d | 2027-05-03 | 2027-05-13 | 657 |  |  | 2027-05-03 | 2027-05-13 | 10d | 10d | 7d |  |
| 659 | 1.4.3.1.1.1.7 | **Control Cable** |  | 237d | 2026-08-07 | 2027-05-10 |  |  |  | 2026-08-07 | 2027-05-10 | 237d | 3d |  |  |
| 660 | 1.4.3.1.1.1.7.1 | Release of Purchase Specification |  | 77d | 2026-08-07 | 2026-11-04 | 57FS+61d |  |  | 2026-08-07 | 2026-11-04 | 77d | 3d | 0d |  |
| 661 | 1.4.3.1.1.1.7.2 | Evaluation of offer & placement of purchase order |  | 30d | 2026-11-05 | 2026-12-09 | 660 |  |  | 2026-11-05 | 2026-12-09 | 30d | 13d | 0d |  |
| 662 | 1.4.3.1.1.1.7.3 | Drawing Submission and manufacturing clearance |  | 30d | 2026-12-10 | 2027-01-13 | 661 |  |  | 2026-12-10 | 2027-01-13 | 30d | 13d | 0d |  |
| 663 | 1.4.3.1.1.1.7.4 | Manufacturing and inspection |  | 90d | 2027-01-14 | 2027-04-28 | 662 |  |  | 2027-01-14 | 2027-04-28 | 90d | 13d | 0d |  |
| 664 | 1.4.3.1.1.1.7.5 | Dispatch and delivery at site |  | 10d | 2027-04-29 | 2027-05-10 | 663 |  |  | 2027-04-29 | 2027-05-10 | 10d | 13d | 0d |  |

| ID | WBS | Task | Type | Duration | Start | Finish | Predecessors | Complete | Remaining | Baseline start | Baseline finish | Baseline duration | Total slack | Free slack | Constraint | Text11 |
| --- | --- | --- | --- | --- | --- | --- | --- | --- | --- | --- | --- | --- | --- | --- | --- | --- |
| 665 | 1.4.3.1.1.1.8 | **Cable Tray** |  | 170d | 2026-11-05 | 2027-05-20 |  |  |  | 2026-11-05 | 2027-05-20 | 170d | 3d |  |  |  |
| 666 | 1.4.3.1.1.1.8.1 | Release of Purchase Specification |  | 10d | 2026-11-05 | 2026-11-16 | 654, 660, 56 |  |  | 2026-11-05 | 2026-11-16 | 10d | 3d | 0d | start no earlier than 2026-10-10 |  |
| 667 | 1.4.3.1.1.1.8.2 | Evaluation of offer & placement of purchase order |  | 30d | 2026-11-17 | 2026-12-21 | 666 |  |  | 2026-11-17 | 2026-12-21 | 30d | 3d | 0d |  |  |
| 668 | 1.4.3.1.1.1.8.3 | Drawing Submission and manufacturing clearance |  | 30d | 2027-01-26 | 2027-03-01 | 667FS+30d |  |  | 2027-01-26 | 2027-03-01 | 30d | 3d | 0d |  |  |
| 669 | 1.4.3.1.1.1.8.4 | Manufacturing and inspection |  | 60d | 2027-03-02 | 2027-05-10 | 668 |  |  | 2027-03-02 | 2027-05-10 | 60d | 3d | 0d |  |  |
| 670 | 1.4.3.1.1.1.8.5 | Dispatch and delivery at site |  | 10d | 2027-05-11 | 2027-05-20 | 669 |  |  | 2027-05-11 | 2027-05-20 | 10d | 3d | 0d |  |  |
| 671 | 1.4.3.1.1.1.9 | **VFD Panel** |  | 428d | 2025-12-23 A | 2027-05-05 |  | 26% | 316.36d | 2025-12-23 | 2027-05-05 | 428d | 11d |  |  |  |
| 672 | 1.4.3.1.1.1.9.1 | Release of Purchase Specification | milestone | 0d | 2025-12-23 A | 2025-12-23 A |  | 100% |  | 2025-12-23 | 2025-12-23 | 0d |  |  | must finish on 2025-12-23 | Completed |
| 673 | 1.4.3.1.1.1.9.2 | Evaluation of offer & placement of purchase order |  | 111d | 2025-12-24 A | 2026-04-30 | 672 | 90% | 11.1d | 2025-12-24 | 2026-04-30 | 111d | 11d | 0d |  | In Progress |
| 674 | 1.4.3.1.1.1.9.3 | Drawing Submission and manufacturing clearance |  | 90d | 2026-06-23 | 2026-10-05 | 673FS+45d |  |  | 2026-06-23 | 2026-10-05 | 90d | 11d | 0d |  |  |
| 675 | 1.4.3.1.1.1.9.4 | Manufacturing and inspection |  | 156d | 2026-10-06 | 2027-04-05 | 674 |  |  | 2026-10-06 | 2027-04-05 | 156d | 11d | 0d |  |  |
| 676 | 1.4.3.1.1.1.9.5 | Dispatch and delivery at site |  | 26d | 2027-04-06 | 2027-05-05 | 675 |  |  | 2027-04-06 | 2027-05-05 | 26d | 11d | 5d |  |  |
| 677 | 1.4.3.1.1.1.10 | **Earthing material** |  | 241d | 2026-08-11 | 2027-05-17 |  |  |  | 2026-08-11 | 2027-05-17 | 241d | 6d |  |  |  |
| 678 | 1.4.3.1.1.1.10.1 | Release of Purchase Specification |  | 31d | 2026-08-11 | 2026-09-15 | 14FS+316d |  |  | 2026-08-11 | 2026-09-15 | 31d | 6d | 0d |  |  |
| 679 | 1.4.3.1.1.1.10.2 | Evaluation of offer & placement of purchase order |  | 30d | 2026-09-16 | 2026-10-20 | 678 |  |  | 2026-09-16 | 2026-10-20 | 30d | 6d | 0d |  |  |
| 680 | 1.4.3.1.1.1.10.3 | Drawing Submission and manufacturing clearance |  | 30d | 2026-12-12 | 2027-01-15 | 679FS+45d |  |  | 2026-12-12 | 2027-01-15 | 30d | 6d | 0d |  |  |
| 681 | 1.4.3.1.1.1.10.4 | Manufacturing and inspection |  | 90d | 2027-01-16 | 2027-04-30 | 680 |  |  | 2027-01-16 | 2027-04-30 | 90d | 6d | 0d |  |  |
| 682 | 1.4.3.1.1.1.10.5 | Dispatch and delivery at site |  | 15d | 2027-05-01 | 2027-05-17 | 681 |  |  | 2027-05-01 | 2027-05-17 | 15d | 6d | 3d |  |  |
| 683 | 1.4.3.1.1.1.11 | **Illumination System** |  | 285d | 2026-09-08 | 2027-08-04 |  |  |  | 2026-09-08 | 2027-08-04 | 285d | 8d |  |  |  |
| 684 | 1.4.3.1.1.1.11.1 | Release of Purchase Specification |  | 15d | 2026-09-08 | 2026-09-24 | 15FS+340d |  |  | 2026-09-08 | 2026-09-24 | 15d | 8d | 0d |  |  |
| 685 | 1.4.3.1.1.1.11.2 | Evaluation of offer & placement of purchase order |  | 60d | 2026-09-25 | 2026-12-03 | 684 |  |  | 2026-09-25 | 2026-12-03 | 60d | 8d | 0d |  |  |
| 686 | 1.4.3.1.1.1.11.3 | Drawing Submission and manufacturing clearance |  | 60d | 2026-12-04 | 2027-02-11 | 685 |  |  | 2026-12-04 | 2027-02-11 | 60d | 8d | 0d |  |  |
| 687 | 1.4.3.1.1.1.11.4 | Manufacturing and inspection |  | 120d | 2027-02-12 | 2027-06-30 | 686 |  |  | 2027-02-12 | 2027-06-30 | 120d | 8d | 0d |  |  |
| 688 | 1.4.3.1.1.1.11.5 | Dispatch and delivery at site |  | 30d | 2027-07-01 | 2027-08-04 | 687 |  |  | 2027-07-01 | 2027-08-04 | 30d | 8d | 6d |  |  |

| ID | WBS | Task | Duration | Start | Finish | Predecessors | Baseline start | Baseline finish | Baseline duration | Total slack | Free slack |
| --- | --- | --- | --- | --- | --- | --- | --- | --- | --- | --- | --- |
| 689 | 1.4.3.1.1.1.12 | **UPS with Battery/ Battery Charger** | 234d | 2026-08-12 | 2027-05-11 |  | 2026-08-12 | 2027-05-11 | 234d | 6d |  |
| 690 | 1.4.3.1.1.1.12.1 | Release of Purchase Specification | 19d | 2026-08-12 | 2026-09-02 | 13FS+302d | 2026-08-12 | 2026-09-02 | 19d | 6d | 0d |
| 691 | 1.4.3.1.1.1.12.2 | Evaluation of offer & placement of purchase order | 50d | 2026-09-03 | 2026-10-30 | 690 | 2026-09-03 | 2026-10-30 | 50d | 6d | 0d |
| 692 | 1.4.3.1.1.1.12.3 | Drawing Submission and manufacturing clearance | 50d | 2026-10-31 | 2026-12-28 | 691 | 2026-10-31 | 2026-12-28 | 50d | 6d | 0d |
| 693 | 1.4.3.1.1.1.12.4 | Manufacturing and inspection | 100d | 2026-12-29 | 2027-04-23 | 692 | 2026-12-29 | 2027-04-23 | 100d | 6d | 0d |
| 694 | 1.4.3.1.1.1.12.5 | Dispatch and delivery at site | 15d | 2027-04-24 | 2027-05-11 | 693 | 2027-04-24 | 2027-05-11 | 15d | 6d | 0d |
| 695 | 1.4.3.1.1.1.13 | **Miscellaneous Electrical components** | 271d | 2026-07-01 | 2027-05-12 |  | 2026-07-01 | 2027-05-12 | 271d | 5d |  |
| 696 | 1.4.3.1.1.1.13.1 | Release of Purchase Specification | 21d | 2026-07-01 | 2026-07-24 | 55SS+229d | 2026-07-01 | 2026-07-24 | 21d | 5d | 0d |
| 697 | 1.4.3.1.1.1.13.2 | Evaluation of offer & placement of purchase order | 60d | 2026-07-25 | 2026-10-02 | 696 | 2026-07-25 | 2026-10-02 | 60d | 5d | 0d |
| 698 | 1.4.3.1.1.1.13.3 | Drawing Submission and manufacturing clearance | 45d | 2026-10-03 | 2026-11-24 | 697 | 2026-10-03 | 2026-11-24 | 45d | 5d | 0d |
| 699 | 1.4.3.1.1.1.13.4 | Manufacturing and inspection | 96d | 2026-11-25 | 2027-03-16 | 698 | 2026-11-25 | 2027-03-16 | 96d | 5d | 0d |
| 700 | 1.4.3.1.1.1.13.5 | Dispatch and delivery at site | 49d | 2027-03-17 | 2027-05-12 | 699 | 2027-03-17 | 2027-05-12 | 49d | 5d | 0d |
| 701 | 1.4.3.1.1.2 | **Control & Instrumentation** | 245d | 2026-11-14 | 2027-08-25 |  | 2026-11-14 | 2027-08-25 | 245d | 5d |  |
| 702 | 1.4.3.1.1.2.1 | **PLC Panel** | 192d | 2026-12-22 | 2027-07-31 |  | 2026-12-22 | 2027-07-31 | 192d | 2d |  |
| 703 | 1.4.3.1.1.2.1.1 | Release of Purchase Specification | 15d | 2026-12-22 | 2027-01-07 | 16FS+178d, 17FS+178d, 59FS+178d | 2026-12-22 | 2027-01-07 | 15d | 2d | 0d |
| 704 | 1.4.3.1.1.2.1.2 | Evaluation of offer & placement of purchase order | 30d | 2027-01-08 | 2027-02-11 | 703 | 2027-01-08 | 2027-02-11 | 30d | 7d | 0d |
| 705 | 1.4.3.1.1.2.1.3 | Drawing Submission and manufacturing clearance | 30d | 2027-02-12 | 2027-03-18 | 704 | 2027-02-12 | 2027-03-18 | 30d | 7d | 0d |
| 706 | 1.4.3.1.1.2.1.4 | Manufacturing and inspection | 104d | 2027-03-19 | 2027-07-16 | 705 | 2027-03-19 | 2027-07-16 | 104d | 7d | 0d |
| 707 | 1.4.3.1.1.2.1.5 | Dispatch and delivery at site | 13d | 2027-07-17 | 2027-07-31 | 706 | 2027-07-17 | 2027-07-31 | 13d | 7d | 0d |
| 708 | 1.4.3.1.1.2.2 | **Control Desk** | 182d | 2026-12-22 | 2027-07-20 |  | 2026-12-22 | 2027-07-20 | 182d | 2d |  |
| 709 | 1.4.3.1.1.2.2.1 | Release of Purchase Specification | 13d | 2026-12-22 | 2027-01-05 | 16FS+181d, 17FS+181d, 703SS | 2026-12-22 | 2027-01-05 | 13d | 2d | 0d |
| 710 | 1.4.3.1.1.2.2.2 | Evaluation of offer & placement of purchase order | 26d | 2027-01-06 | 2027-02-04 | 709 | 2027-01-06 | 2027-02-04 | 26d | 17d | 0d |
| 711 | 1.4.3.1.1.2.2.3 | Drawing Submission and manufacturing clearance | 26d | 2027-02-05 | 2027-03-06 | 710 | 2027-02-05 | 2027-03-06 | 26d | 17d | 0d |
| 712 | 1.4.3.1.1.2.2.4 | Manufacturing and inspection | 104d | 2027-03-08 | 2027-07-05 | 711 | 2027-03-08 | 2027-07-05 | 104d | 17d | 0d |
| 713 | 1.4.3.1.1.2.2.5 | Dispatch and delivery at site | 13d | 2027-07-06 | 2027-07-20 | 712 | 2027-07-06 | 2027-07-20 | 13d | 17d | 10d |

| ID | WBS | Task | Duration | Start | Finish | Predecessors | Baseline start | Baseline finish | Baseline duration | Total slack | Free slack | Constraint |
| --- | --- | --- | --- | --- | --- | --- | --- | --- | --- | --- | --- | --- |
| 714 | 1.4.3.1.1.2.3 | **UPS/ UPS DB** | 200d | 2027-01-06 | 2027-08-25 |  | 2027-01-06 | 2027-08-25 | 200d | 2d |  |  |
| 715 | 1.4.3.1.1.2.3.1 | Release of Purchase Specification | 13d | 2027-01-06 | 2027-01-20 | 16FS+178d, 17FS+178d, 709SS+13d | 2027-01-06 | 2027-01-20 | 13d | 2d | 0d |  |
| 716 | 1.4.3.1.1.2.3.2 | Evaluation of offer & placement of purchase order | 37d | 2027-01-21 | 2027-03-04 | 715 | 2027-01-21 | 2027-03-04 | 37d | 42d | 0d |  |
| 717 | 1.4.3.1.1.2.3.3 | Drawing Submission and manufacturing clearance | 37d | 2027-03-05 | 2027-04-16 | 716 | 2027-03-05 | 2027-04-16 | 37d | 42d | 0d |  |
| 718 | 1.4.3.1.1.2.3.4 | Manufacturing and inspection | 100d | 2027-04-17 | 2027-08-10 | 717 | 2027-04-17 | 2027-08-10 | 100d | 42d | 0d |  |
| 719 | 1.4.3.1.1.2.3.5 | Dispatch and delivery at site | 13d | 2027-08-11 | 2027-08-25 | 718 | 2027-08-11 | 2027-08-25 | 13d | 42d | 37d |  |
| 720 | 1.4.3.1.1.2.4 | **Instrumentation cable** | 193d | 2027-01-09 | 2027-08-20 |  | 2027-01-09 | 2027-08-20 | 193d | 2d |  |  |
| 721 | 1.4.3.1.1.2.4.1 | Release of Purchase Specification | 13d | 2027-01-09 | 2027-01-23 | 16FS+190d, 17FS+190d, 715SS+3d | 2027-01-09 | 2027-01-23 | 13d | 2d | 0d |  |
| 722 | 1.4.3.1.1.2.4.2 | Evaluation of offer & placement of purchase order | 30d | 2027-01-25 | 2027-02-27 | 721 | 2027-01-25 | 2027-02-27 | 30d | 2d | 0d |  |
| 723 | 1.4.3.1.1.2.4.3 | Drawing Submission and manufacturing clearance | 30d | 2027-03-24 | 2027-04-27 | 722FS+20d | 2027-03-24 | 2027-04-27 | 30d | 2d | 0d |  |
| 724 | 1.4.3.1.1.2.4.4 | Manufacturing and inspection | 90d | 2027-04-28 | 2027-08-09 | 723 | 2027-04-28 | 2027-08-09 | 90d | 2d | 0d |  |
| 725 | 1.4.3.1.1.2.4.5 | Dispatch and delivery at site | 10d | 2027-08-10 | 2027-08-20 | 724 | 2027-08-10 | 2027-08-20 | 10d | 2d | 0d |  |
| 726 | 1.4.3.1.1.2.5 | **CCTV System** | 199d | 2027-01-07 | 2027-08-25 |  | 2027-01-07 | 2027-08-25 | 199d | 8d |  |  |
| 727 | 1.4.3.1.1.2.5.1 | Release of Purchase Specification | 13d | 2027-01-07 | 2027-01-21 | 16FS+400d, 17FS+400d | 2027-01-07 | 2027-01-21 | 13d | 8d | 0d |  |
| 728 | 1.4.3.1.1.2.5.2 | Evaluation of offer & placement of purchase order | 26d | 2027-01-22 | 2027-02-20 | 727 | 2027-01-22 | 2027-02-20 | 26d | 16d | 0d |  |
| 729 | 1.4.3.1.1.2.5.3 | Drawing Submission and manufacturing clearance | 26d | 2027-04-15 | 2027-05-14 | 728FS+45d | 2027-04-15 | 2027-05-14 | 26d | 16d | 0d |  |
| 730 | 1.4.3.1.1.2.5.4 | Manufacturing and inspection | 76d | 2027-05-15 | 2027-08-10 | 729 | 2027-05-15 | 2027-08-10 | 76d | 16d | 0d |  |
| 731 | 1.4.3.1.1.2.5.5 | Dispatch and delivery at site | 13d | 2027-08-11 | 2027-08-25 | 730 | 2027-08-11 | 2027-08-25 | 13d | 16d | 0d |  |
| 732 | 1.4.3.1.1.2.6 | **LSIC System** | 182d | 2027-01-01 | 2027-07-30 |  | 2027-01-01 | 2027-07-30 | 182d | 12d |  |  |
| 733 | 1.4.3.1.1.2.6.1 | Release of Purchase Specification | 13d | 2027-01-01 | 2027-01-15 | 16FS+395d, 17FS+395d | 2027-01-01 | 2027-01-15 | 13d | 12d | 0d | finish no earlier than 2026-05-29 |
| 734 | 1.4.3.1.1.2.6.2 | Evaluation of offer & placement of purchase order | 26d | 2027-01-16 | 2027-02-15 | 733 | 2027-01-16 | 2027-02-15 | 26d | 12d | 0d | finish no earlier than 2026-07-10 |
| 735 | 1.4.3.1.1.2.6.3 | Drawing Submission and manufacturing clearance | 26d | 2027-02-16 | 2027-03-17 | 734 | 2027-02-16 | 2027-03-17 | 26d | 12d | 0d | finish no earlier than 2026-09-25 |
| 736 | 1.4.3.1.1.2.6.4 | Manufacturing and inspection | 104d | 2027-03-18 | 2027-07-15 | 735 | 2027-03-18 | 2027-07-15 | 104d | 12d | 0d | finish no earlier than 2027-02-08 |
| 737 | 1.4.3.1.1.2.6.5 | Dispatch and delivery at site | 13d | 2027-07-16 | 2027-07-30 | 736 | 2027-07-16 | 2027-07-30 | 13d | 12d | 0d | finish no earlier than 2027-03-02 |

| ID | WBS | Task | Duration | Start | Finish | Predecessors | Complete | Remaining | Baseline start | Baseline finish | Baseline duration | Total slack | Free slack | Constraint | Text11 |
| --- | --- | --- | --- | --- | --- | --- | --- | --- | --- | --- | --- | --- | --- | --- | --- |
| 738 | 1.4.3.1.1.2.7 | **PA/ Telephone System** | 195d | 2027-01-01 | 2027-08-14 |  |  |  | 2027-01-01 | 2027-08-14 | 195d | 25d |  |  |  |
| 739 | 1.4.3.1.1.2.7.1 | Release of Purchase Specification | 13d | 2027-01-01 | 2027-01-15 | 16FS+395d, 17FS+395d |  |  | 2027-01-01 | 2027-01-15 | 13d | 25d | 0d | finish no earlier than 2026-05-29 |  |
| 740 | 1.4.3.1.1.2.7.2 | Evaluation of offer & placement of purchase order | 39d | 2027-01-16 | 2027-03-02 | 739 |  |  | 2027-01-16 | 2027-03-02 | 39d | 25d | 0d | finish no earlier than 2026-07-10 |  |
| 741 | 1.4.3.1.1.2.7.3 | Drawing Submission and manufacturing clearance | 30d | 2027-03-03 | 2027-04-06 | 740 |  |  | 2027-03-03 | 2027-04-06 | 30d | 25d | 0d | finish no earlier than 2026-09-25 |  |
| 742 | 1.4.3.1.1.2.7.4 | Manufacturing and inspection | 100d | 2027-04-07 | 2027-07-30 | 741 |  |  | 2027-04-07 | 2027-07-30 | 100d | 25d | 0d | finish no earlier than 2027-02-08 |  |
| 743 | 1.4.3.1.1.2.7.5 | Dispatch and delivery at site | 13d | 2027-07-31 | 2027-08-14 | 742 |  |  | 2027-07-31 | 2027-08-14 | 13d | 25d | 0d |  |  |
| 744 | 1.4.3.1.1.2.8 | **Fire Detection & Alarm System** | 204d | 2026-11-14 | 2027-07-08 |  |  |  | 2026-11-14 | 2027-07-08 | 204d | 5d |  |  |  |
| 745 | 1.4.3.1.1.2.8.1 | Release of Purchase Specification | 13d | 2026-11-14 | 2026-11-28 | 11FS+370d, 12FS+370d, 13FS+370d |  |  | 2026-11-14 | 2026-11-28 | 13d | 5d | 0d | finish no earlier than 2026-05-29 |  |
| 746 | 1.4.3.1.1.2.8.2 | Evaluation of offer & placement of purchase order | 30d | 2026-11-30 | 2027-01-02 | 745 |  |  | 2026-11-30 | 2027-01-02 | 30d | 5d | 0d | finish no earlier than 2026-07-10 |  |
| 747 | 1.4.3.1.1.2.8.3 | Drawing Submission and manufacturing clearance | 30d | 2027-01-04 | 2027-02-06 | 746 |  |  | 2027-01-04 | 2027-02-06 | 30d | 5d | 0d | finish no earlier than 2026-09-25 |  |
| 748 | 1.4.3.1.1.2.8.4 | Manufacturing and inspection | 116d | 2027-02-08 | 2027-06-21 | 747 |  |  | 2027-02-08 | 2027-06-21 | 116d | 5d | 0d | finish no earlier than 2027-02-08 |  |
| 749 | 1.4.3.1.1.2.8.5 | Dispatch and delivery at site | 15d | 2027-06-22 | 2027-07-08 | 748 |  |  | 2027-06-22 | 2027-07-08 | 15d | 5d | 0d | finish no earlier than 2027-03-02 |  |
| 750 | 1.4.3.1.2 | **Deposit 11C** | 607d | 2025-09-22 A | 2027-08-27 |  | 13% | 526.21d | 2025-09-22 | 2027-08-27 | 607d | 40d |  |  |  |
| 751 | 1.4.3.1.2.1 | **Electrical** | 607d | 2025-09-22 A | 2027-08-27 |  | 18% | 498.89d | 2025-09-22 | 2027-08-27 | 607d | 16d |  |  |  |
| 752 | 1.4.3.1.2.1.1 | **33KV O/H line with poles and conductors** | 243d | 2026-08-01 | 2027-05-11 |  |  |  | 2026-08-01 | 2027-05-11 | 243d | 10d |  |  |  |
| 753 | 1.4.3.1.2.1.1.1 | Release of Purchase Specification | 26d | 2026-08-01 | 2026-08-31 | 9FS+291d |  |  | 2026-08-01 | 2026-08-31 | 26d | 10d | 0d |  |  |
| 754 | 1.4.3.1.2.1.1.2 | Evaluation of offer & placement of purchase order | 39d | 2026-09-01 | 2026-10-15 | 753 |  |  | 2026-09-01 | 2026-10-15 | 39d | 10d | 0d |  |  |
| 755 | 1.4.3.1.2.1.1.3 | Drawing Submission and manufacturing clearance | 45d | 2026-10-16 | 2026-12-07 | 754 |  |  | 2026-10-16 | 2026-12-07 | 45d | 10d | 0d |  |  |
| 756 | 1.4.3.1.2.1.1.4 | Manufacturing and inspection | 120d | 2026-12-08 | 2027-04-26 | 755 |  |  | 2026-12-08 | 2027-04-26 | 120d | 10d | 0d |  |  |
| 757 | 1.4.3.1.2.1.1.5 | Dispatch and delivery at site | 13d | 2027-04-27 | 2027-05-11 | 756 |  |  | 2027-04-27 | 2027-05-11 | 13d | 10d | 0d |  |  |
| 758 | 1.4.3.1.2.1.2 | **33 KV GIS and Control & Relay Panel** | 310d | 2026-09-02 | 2027-08-27 |  |  |  | 2026-09-02 | 2027-08-27 | 310d | 16d |  |  |  |
| 759 | 1.4.3.1.2.1.2.1 | Release of Purchase Specification | 13d | 2026-09-02 | 2026-09-16 | 11FS+320d |  |  | 2026-09-02 | 2026-09-16 | 13d | 16d | 0d |  | Completed |
| 760 | 1.4.3.1.2.1.2.2 | Evaluation of offer & placement of purchase order | 52d | 2026-09-17 | 2026-11-16 | 759 |  |  | 2026-09-17 | 2026-11-16 | 52d | 16d | 0d |  | In Progress |
| 761 | 1.4.3.1.2.1.2.3 | Drawing Submission and manufacturing clearance | 52d | 2027-01-26 | 2027-03-26 | 760FS+60d |  |  | 2027-01-26 | 2027-03-26 | 52d | 16d | 0d |  |  |
| 762 | 1.4.3.1.2.1.2.4 | Manufacturing and inspection | 120d | 2027-03-27 | 2027-08-12 | 761 |  |  | 2027-03-27 | 2027-08-12 | 120d | 16d | 0d |  |  |
| 763 | 1.4.3.1.2.1.2.5 | Dispatch and delivery at site | 13d | 2027-08-13 | 2027-08-27 | 762 |  |  | 2027-08-13 | 2027-08-27 | 13d | 16d | 0d |  |  |

| ID | WBS | Task | Type | Duration | Start | Finish | Predecessors | Complete | Remaining | Baseline start | Baseline finish | Baseline duration | Total slack | Free slack | Constraint | Text11 |
| --- | --- | --- | --- | --- | --- | --- | --- | --- | --- | --- | --- | --- | --- | --- | --- | --- |
| 764 | 1.4.3.1.2.1.3 | **33/6.9 KV Power Transformer** |  | 513d | 2025-11-05 A | 2027-06-23 |  | 34% | 338.93d | 2025-11-05 | 2027-06-23 | 513d | 32d |  |  |  |
| 765 | 1.4.3.1.2.1.3.1 | Release of Purchase Specification |  | 39d | 2025-11-05 A | 2025-12-19 A | 13FF+100d | 100% |  | 2025-11-05 | 2025-12-19 | 39d |  |  |  | Completed |
| 766 | 1.4.3.1.2.1.3.2 | Evaluation of offer & placement of purchase order |  | 162d | 2025-12-20 A | 2026-06-25 | 765 | 75% | 40.5d | 2025-12-20 | 2026-06-25 | 162d | 32d | 0d |  | Completed |
| 767 | 1.4.3.1.2.1.3.3 | Drawing Submission and manufacturing clearance |  | 90d | 2026-08-12 | 2026-11-24 | 766FS+40d |  |  | 2026-08-12 | 2026-11-24 | 90d | 32d | 0d |  |  |
| 768 | 1.4.3.1.2.1.3.4 | Manufacturing and inspection |  | 156d | 2026-11-25 | 2027-05-24 | 767 |  |  | 2026-11-25 | 2027-05-24 | 156d | 32d | 0d |  |  |
| 769 | 1.4.3.1.2.1.3.5 | Dispatch and delivery at site |  | 26d | 2027-05-25 | 2027-06-23 | 768 |  |  | 2027-05-25 | 2027-06-23 | 26d | 32d | 0d |  |  |
| 770 | 1.4.3.1.2.1.4 | **6.6/0.433 KV Distribution Transformer** |  | 100d | 2025-11-25 A | 2026-03-20 A |  | 100% |  | 2025-11-25 | 2026-12-08 | 325d |  |  |  |  |
| 771 | 1.4.3.1.2.1.4.1 | Release of Purchase Specification | milestone | 0d | 2025-11-25 A | 2025-11-25 A | 636SS | 100% |  | 2025-11-25 | 2025-11-25 | 0d |  |  | must finish on 2025-11-25 | Completed |
| 772 | 1.4.3.1.2.1.4.2 | Evaluation of offer & placement of purchase order |  | 13d | 2025-11-26 A | 2025-12-10 A | 771 | 100% |  | 2025-11-26 | 2025-12-10 | 13d |  |  |  | Completed |
| 773 | 1.4.3.1.2.1.4.3 | Drawing Submission and manufacturing clearance |  | 32d | 2025-12-11 A | 2026-01-15 A | 772 | 100% |  | 2025-12-11 | 2026-01-15 | 32d |  |  |  | In Progress |
| 774 | 1.4.3.1.2.1.4.4 | Manufacturing and inspection |  | 38d | 2026-01-16 A | 2026-02-28 A | 773 | 100% |  | 2026-01-16 | 2026-09-29 | 220d |  |  |  |  |
| 775 | 1.4.3.1.2.1.4.5 | Dispatch and delivery at site |  | 17d | 2026-03-02 A | 2026-03-20 A | 774 | 100% |  | 2026-09-30 | 2026-12-08 | 60d |  |  |  |  |
| 776 | 1.4.3.1.2.1.5 | **6.6 KV Switchboard** |  | 436d | 2025-10-23 A | 2027-03-13 |  | 35% | 282.4d | 2025-10-23 | 2027-03-13 | 436d | 64d |  |  |  |
| 777 | 1.4.3.1.2.1.5.1 | Release of Purchase Specification |  | 60d | 2025-10-23 A | 2025-12-30 A | 624SS | 100% |  | 2025-10-23 | 2025-12-30 | 60d |  |  |  | Completed |
| 778 | 1.4.3.1.2.1.5.2 | Evaluation of offer & placement of purchase order |  | 104d | 2025-12-31 A | 2026-04-30 | 777 | 90% | 10.4d | 2025-12-31 | 2026-04-30 | 104d | 64d | 0d |  |  |
| 779 | 1.4.3.1.2.1.5.3 | Drawing Submission and manufacturing clearance |  | 90d | 2026-05-01 | 2026-08-13 | 778 |  |  | 2026-05-01 | 2026-08-13 | 90d | 64d | 0d |  |  |
| 780 | 1.4.3.1.2.1.5.4 | Manufacturing and inspection |  | 156d | 2026-08-14 | 2027-02-11 | 779 |  |  | 2026-08-14 | 2027-02-11 | 156d | 64d | 0d |  |  |
| 781 | 1.4.3.1.2.1.5.5 | Dispatch and delivery at site |  | 26d | 2027-02-12 | 2027-03-13 | 780 |  |  | 2027-02-12 | 2027-03-13 | 26d | 64d | 50d |  |  |
| 782 | 1.4.3.1.2.1.6 | **Bus Duct** |  | 443d | 2026-03-02 A | 2027-07-29 |  | 13% | 387.44d | 2026-05-30 | 2027-07-29 | 366d | 41d |  |  |  |
| 783 | 1.4.3.1.2.1.6.1 | Release of Purchase Specification |  | 17d | 2026-03-02 A | 2026-03-20 A | 648SS | 100% |  | 2026-05-30 | 2026-07-31 | 54d |  |  |  |  |
| 784 | 1.4.3.1.2.1.6.2 | Evaluation of offer & placement of purchase order |  | 174d | 2026-03-21 A | 2026-10-09 | 783 | 20% | 139.2d | 2026-08-01 | 2026-10-09 | 60d | 41d | 0d |  |  |
| 785 | 1.4.3.1.2.1.6.3 | Drawing Submission and manufacturing clearance |  | 90d | 2026-11-14 | 2027-02-26 | 784FS+30d |  |  | 2026-11-14 | 2027-02-26 | 90d | 41d | 0d |  |  |
| 786 | 1.4.3.1.2.1.6.4 | Manufacturing and inspection |  | 106d | 2027-02-27 | 2027-06-29 | 785 |  |  | 2027-02-27 | 2027-06-29 | 106d | 41d | 0d |  |  |
| 787 | 1.4.3.1.2.1.6.5 | Dispatch and delivery at site |  | 26d | 2027-06-30 | 2027-07-29 | 786 |  |  | 2027-06-30 | 2027-07-29 | 26d | 41d | 0d |  |  |

| ID | WBS | Task | Duration | Start | Finish | Predecessors | Complete | Remaining | Baseline start | Baseline finish | Baseline duration | Total slack | Free slack | Text11 |
| --- | --- | --- | --- | --- | --- | --- | --- | --- | --- | --- | --- | --- | --- | --- |
| 788 | 1.4.3.1.2.1.7 | **Power Cable** | 232d | 2026-08-17 | 2027-05-13 |  |  |  | 2026-08-17 | 2027-05-13 | 232d | 36d |  |  |
| 789 | 1.4.3.1.2.1.7.1 | Release of Purchase Specification | 39d | 2026-08-17 | 2026-09-30 | 654SS |  |  | 2026-08-17 | 2026-09-30 | 39d | 36d | 0d |  |
| 790 | 1.4.3.1.2.1.7.2 | Evaluation of offer & placement of purchase order | 39d | 2026-10-01 | 2026-11-14 | 789 |  |  | 2026-10-01 | 2026-11-14 | 39d | 36d | 0d |  |
| 791 | 1.4.3.1.2.1.7.3 | Drawing Submission and manufacturing clearance | 39d | 2026-12-03 | 2027-01-16 | 790FS+15d |  |  | 2026-12-03 | 2027-01-16 | 39d | 36d | 0d |  |
| 792 | 1.4.3.1.2.1.7.4 | Manufacturing and inspection | 90d | 2027-01-18 | 2027-05-01 | 791 |  |  | 2027-01-18 | 2027-05-01 | 90d | 36d | 0d |  |
| 793 | 1.4.3.1.2.1.7.5 | Dispatch and delivery at site | 10d | 2027-05-03 | 2027-05-13 | 792 |  |  | 2027-05-03 | 2027-05-13 | 10d | 36d | 11d |  |
| 794 | 1.4.3.1.2.1.8 | **Conveyor Motor** | 481d | 2025-09-22 A | 2027-04-03 |  | 40% | 287.1d | 2025-09-22 | 2027-04-03 | 481d | 117d |  |  |
| 795 | 1.4.3.1.2.1.8.1 | Release of Purchase Specification | 53d | 2025-09-22 A | 2025-11-21 A | 642SS | 100% |  | 2025-09-22 | 2025-11-21 | 53d |  |  | Completed |
| 796 | 1.4.3.1.2.1.8.2 | Evaluation of offer & placement of purchase order | 10d | 2025-11-22 A | 2025-12-03 A | 795 | 100% |  | 2025-11-22 | 2025-12-03 | 10d |  |  | Completed |
| 797 | 1.4.3.1.2.1.8.3 | Drawing Submission and manufacturing clearance | 154d | 2025-12-04 A | 2026-05-30 | 796 | 85% | 23.1d | 2025-12-04 | 2026-05-30 | 154d | 117d | 0d | In Progress |
| 798 | 1.4.3.1.2.1.8.4 | Manufacturing and inspection | 204d | 2026-06-01 | 2027-01-23 | 797 |  |  | 2026-06-01 | 2027-01-23 | 204d | 117d | 0d |  |
| 799 | 1.4.3.1.2.1.8.5 | Dispatch and delivery at site | 60d | 2027-01-25 | 2027-04-03 | 798 |  |  | 2027-01-25 | 2027-04-03 | 60d | 117d | 87d |  |
| 800 | 1.4.3.1.2.1.9 | **Control Cable** | 237d | 2026-08-07 | 2027-05-10 |  |  |  | 2026-08-07 | 2027-05-10 | 237d | 52d |  |  |
| 801 | 1.4.3.1.2.1.9.1 | Release of Purchase Specification | 77d | 2026-08-07 | 2026-11-04 | 660SS |  |  | 2026-08-07 | 2026-11-04 | 77d | 52d | 0d |  |
| 802 | 1.4.3.1.2.1.9.2 | Evaluation of offer & placement of purchase order | 30d | 2026-11-05 | 2026-12-09 | 801 |  |  | 2026-11-05 | 2026-12-09 | 30d | 52d | 0d |  |
| 803 | 1.4.3.1.2.1.9.3 | Drawing Submission and manufacturing clearance | 30d | 2026-12-10 | 2027-01-13 | 802 |  |  | 2026-12-10 | 2027-01-13 | 30d | 52d | 0d |  |
| 804 | 1.4.3.1.2.1.9.4 | Manufacturing and inspection | 90d | 2027-01-14 | 2027-04-28 | 803 |  |  | 2027-01-14 | 2027-04-28 | 90d | 52d | 0d |  |
| 805 | 1.4.3.1.2.1.9.5 | Dispatch and delivery at site | 10d | 2027-04-29 | 2027-05-10 | 804 |  |  | 2027-04-29 | 2027-05-10 | 10d | 52d | 10d |  |
| 806 | 1.4.3.1.2.1.10 | **Cable Tray** | 170d | 2026-11-05 | 2027-05-20 |  |  |  | 2026-11-05 | 2027-05-20 | 170d | 31d |  |  |
| 807 | 1.4.3.1.2.1.10.1 | Release of Purchase Specification | 10d | 2026-11-05 | 2026-11-16 | 666SS, 63FS+130d |  |  | 2026-11-05 | 2026-11-16 | 10d | 31d | 0d |  |
| 808 | 1.4.3.1.2.1.10.2 | Evaluation of offer & placement of purchase order | 30d | 2026-11-17 | 2026-12-21 | 807 |  |  | 2026-11-17 | 2026-12-21 | 30d | 31d | 0d |  |
| 809 | 1.4.3.1.2.1.10.3 | Drawing Submission and manufacturing clearance | 30d | 2027-01-26 | 2027-03-01 | 808FS+30d |  |  | 2027-01-26 | 2027-03-01 | 30d | 31d | 0d |  |
| 810 | 1.4.3.1.2.1.10.4 | Manufacturing and inspection | 60d | 2027-03-02 | 2027-05-10 | 809 |  |  | 2027-03-02 | 2027-05-10 | 60d | 31d | 0d |  |
| 811 | 1.4.3.1.2.1.10.5 | Dispatch and delivery at site | 10d | 2027-05-11 | 2027-05-20 | 810 |  |  | 2027-05-11 | 2027-05-20 | 10d | 31d | 0d |  |

| ID | WBS | Task | Duration | Start | Finish | Predecessors | Complete | Remaining | Baseline start | Baseline finish | Baseline duration | Total slack | Free slack | Text11 |
| --- | --- | --- | --- | --- | --- | --- | --- | --- | --- | --- | --- | --- | --- | --- |
| 812 | 1.4.3.1.2.1.11 | **VFD Panel** | 451d | 2025-11-27 A | 2027-05-05 |  | 30% | 316.94d | 2025-11-27 | 2027-05-05 | 451d | 32d |  |  |
| 813 | 1.4.3.1.2.1.11.1 | Release of Purchase Specification | 23d | 2025-11-27 A | 2025-12-23 A | 672SS | 100% |  | 2025-11-27 | 2025-12-23 | 23d |  |  | Completed |
| 814 | 1.4.3.1.2.1.11.2 | Evaluation of offer & placement of purchase order | 111d | 2025-12-24 A | 2026-04-30 | 813 | 88% | 13.32d | 2025-12-24 | 2026-04-30 | 111d | 32d | 0d |  |
| 815 | 1.4.3.1.2.1.11.3 | Drawing Submission and manufacturing clearance | 90d | 2026-06-23 | 2026-10-05 | 814FS+45d |  |  | 2026-06-23 | 2026-10-05 | 90d | 32d | 0d |  |
| 816 | 1.4.3.1.2.1.11.4 | Manufacturing and inspection | 156d | 2026-10-06 | 2027-04-05 | 815 |  |  | 2026-10-06 | 2027-04-05 | 156d | 32d | 0d |  |
| 817 | 1.4.3.1.2.1.11.5 | Dispatch and delivery at site | 26d | 2027-04-06 | 2027-05-05 | 816 |  |  | 2027-04-06 | 2027-05-05 | 26d | 32d | 5d |  |
| 818 | 1.4.3.1.2.1.12 | **Earthing Material** | 241d | 2026-08-11 | 2027-05-17 |  |  |  | 2026-08-11 | 2027-05-17 | 241d | 34d |  |  |
| 819 | 1.4.3.1.2.1.12.1 | Release of Purchase Specification | 31d | 2026-08-11 | 2026-09-15 | 678SS |  |  | 2026-08-11 | 2026-09-15 | 31d | 34d | 0d |  |
| 820 | 1.4.3.1.2.1.12.2 | Evaluation of offer & placement of purchase order | 30d | 2026-09-16 | 2026-10-20 | 819 |  |  | 2026-09-16 | 2026-10-20 | 30d | 34d | 0d |  |
| 821 | 1.4.3.1.2.1.12.3 | Drawing Submission and manufacturing clearance | 30d | 2026-12-12 | 2027-01-15 | 820FS+45d |  |  | 2026-12-12 | 2027-01-15 | 30d | 34d | 0d |  |
| 822 | 1.4.3.1.2.1.12.4 | Manufacturing and inspection | 90d | 2027-01-16 | 2027-04-30 | 821 |  |  | 2027-01-16 | 2027-04-30 | 90d | 34d | 0d |  |
| 823 | 1.4.3.1.2.1.12.5 | Dispatch and delivery at site | 15d | 2027-05-01 | 2027-05-17 | 822 |  |  | 2027-05-01 | 2027-05-17 | 15d | 34d | 7d |  |
| 824 | 1.4.3.1.2.1.13 | **Illumination System** | 285d | 2026-09-08 | 2027-08-04 |  |  |  | 2026-09-08 | 2027-08-04 | 285d | 8d |  |  |
| 825 | 1.4.3.1.2.1.13.1 | Release of Purchase Specification | 15d | 2026-09-08 | 2026-09-24 | 684SS |  |  | 2026-09-08 | 2026-09-24 | 15d | 8d | 0d |  |
| 826 | 1.4.3.1.2.1.13.2 | Evaluation of offer & placement of purchase order | 60d | 2026-09-25 | 2026-12-03 | 825 |  |  | 2026-09-25 | 2026-12-03 | 60d | 8d | 0d |  |
| 827 | 1.4.3.1.2.1.13.3 | Drawing Submission and manufacturing clearance | 60d | 2026-12-04 | 2027-02-11 | 826 |  |  | 2026-12-04 | 2027-02-11 | 60d | 8d | 0d |  |
| 828 | 1.4.3.1.2.1.13.4 | Manufacturing and inspection | 120d | 2027-02-12 | 2027-06-30 | 827 |  |  | 2027-02-12 | 2027-06-30 | 120d | 8d | 0d |  |
| 829 | 1.4.3.1.2.1.13.5 | Dispatch and delivery at site | 30d | 2027-07-01 | 2027-08-04 | 828 |  |  | 2027-07-01 | 2027-08-04 | 30d | 8d | 6d |  |
| 830 | 1.4.3.1.2.1.14 | **UPS with Battery/Battery Charger** | 234d | 2026-08-12 | 2027-05-11 |  |  |  | 2026-08-12 | 2027-05-11 | 234d | 27d |  |  |
| 831 | 1.4.3.1.2.1.14.1 | Release of Purchase Specification | 19d | 2026-08-12 | 2026-09-02 | 690SS |  |  | 2026-08-12 | 2026-09-02 | 19d | 27d | 0d |  |
| 832 | 1.4.3.1.2.1.14.2 | Evaluation of offer & placement of purchase order | 50d | 2026-09-03 | 2026-10-30 | 831 |  |  | 2026-09-03 | 2026-10-30 | 50d | 27d | 0d |  |
| 833 | 1.4.3.1.2.1.14.3 | Drawing Submission and manufacturing clearance | 50d | 2026-10-31 | 2026-12-28 | 832 |  |  | 2026-10-31 | 2026-12-28 | 50d | 27d | 0d |  |
| 834 | 1.4.3.1.2.1.14.4 | Manufacturing and inspection | 100d | 2026-12-29 | 2027-04-23 | 833 |  |  | 2026-12-29 | 2027-04-23 | 100d | 27d | 0d |  |
| 835 | 1.4.3.1.2.1.14.5 | Dispatch and delivery at site | 15d | 2027-04-24 | 2027-05-11 | 834 |  |  | 2027-04-24 | 2027-05-11 | 15d | 27d | 0d |  |

| ID | WBS | Task | Duration | Start | Finish | Predecessors | Baseline start | Baseline finish | Baseline duration | Total slack | Free slack | Constraint |
| --- | --- | --- | --- | --- | --- | --- | --- | --- | --- | --- | --- | --- |
| 836 | 1.4.3.1.2.1.15 | **Miscellaneous Electrical components** | 271d | 2026-07-01 | 2027-05-12 |  | 2026-07-01 | 2027-05-12 | 271d | 28d |  |  |
| 837 | 1.4.3.1.2.1.15.1 | Release of Purchase Specification | 21d | 2026-07-01 | 2026-07-24 | 696SS | 2026-07-01 | 2026-07-24 | 21d | 28d | 0d |  |
| 838 | 1.4.3.1.2.1.15.2 | Evaluation of offer & placement of purchase order | 60d | 2026-07-25 | 2026-10-02 | 837 | 2026-07-25 | 2026-10-02 | 60d | 28d | 0d |  |
| 839 | 1.4.3.1.2.1.15.3 | Drawing Submission and manufacturing clearance | 45d | 2026-10-03 | 2026-11-24 | 838 | 2026-10-03 | 2026-11-24 | 45d | 28d | 0d |  |
| 840 | 1.4.3.1.2.1.15.4 | Manufacturing and inspection | 96d | 2026-11-25 | 2027-03-16 | 839 | 2026-11-25 | 2027-03-16 | 96d | 28d | 0d |  |
| 841 | 1.4.3.1.2.1.15.5 | Dispatch and delivery at site | 49d | 2027-03-17 | 2027-05-12 | 840 | 2027-03-17 | 2027-05-12 | 49d | 28d | 0d |  |
| 842 | 1.4.3.1.2.2 | **Control & Instrumentation** | 245d | 2026-11-14 | 2027-08-25 |  | 2026-11-14 | 2027-08-25 | 245d | 5d |  |  |
| 843 | 1.4.3.1.2.2.1 | **PLC Panel** | 192d | 2026-12-22 | 2027-07-31 |  | 2026-12-22 | 2027-07-31 | 192d | 23d |  |  |
| 844 | 1.4.3.1.2.2.1.1 | Release of Purchase Specification | 15d | 2026-12-22 | 2027-01-07 | 703SS | 2026-12-22 | 2027-01-07 | 15d | 23d | 0d | start no earlier than 2026-05-09 |
| 845 | 1.4.3.1.2.2.1.2 | Evaluation of offer & placement of purchase order | 30d | 2027-01-08 | 2027-02-11 | 844 | 2027-01-08 | 2027-02-11 | 30d | 23d | 0d |  |
| 846 | 1.4.3.1.2.2.1.3 | Drawing Submission and manufacturing clearance | 30d | 2027-02-12 | 2027-03-18 | 845 | 2027-02-12 | 2027-03-18 | 30d | 23d | 0d |  |
| 847 | 1.4.3.1.2.2.1.4 | Manufacturing and inspection | 104d | 2027-03-19 | 2027-07-16 | 846 | 2027-03-19 | 2027-07-16 | 104d | 23d | 0d |  |
| 848 | 1.4.3.1.2.2.1.5 | Dispatch and delivery at site | 13d | 2027-07-17 | 2027-07-31 | 847 | 2027-07-17 | 2027-07-31 | 13d | 23d | 0d |  |
| 849 | 1.4.3.1.2.2.2 | **Control Desk** | 182d | 2026-12-22 | 2027-07-20 |  | 2026-12-22 | 2027-07-20 | 182d | 33d |  |  |
| 850 | 1.4.3.1.2.2.2.1 | Release of Purchase Specification | 13d | 2026-12-22 | 2027-01-05 | 709SS | 2026-12-22 | 2027-01-05 | 13d | 33d | 0d | start no earlier than 2026-05-09 |
| 851 | 1.4.3.1.2.2.2.2 | Evaluation of offer & placement of purchase order | 26d | 2027-01-06 | 2027-02-04 | 850 | 2027-01-06 | 2027-02-04 | 26d | 33d | 0d |  |
| 852 | 1.4.3.1.2.2.2.3 | Drawing Submission and manufacturing clearance | 26d | 2027-02-05 | 2027-03-06 | 851 | 2027-02-05 | 2027-03-06 | 26d | 33d | 0d |  |
| 853 | 1.4.3.1.2.2.2.4 | Manufacturing and inspection | 104d | 2027-03-08 | 2027-07-05 | 852 | 2027-03-08 | 2027-07-05 | 104d | 33d | 0d |  |
| 854 | 1.4.3.1.2.2.2.5 | Dispatch and delivery at site | 13d | 2027-07-06 | 2027-07-20 | 853 | 2027-07-06 | 2027-07-20 | 13d | 33d | 10d |  |
| 855 | 1.4.3.1.2.2.3 | **UPS/ UPS DB** | 200d | 2027-01-06 | 2027-08-25 |  | 2027-01-06 | 2027-08-25 | 200d | 42d |  |  |
| 856 | 1.4.3.1.2.2.3.1 | Release of Purchase Specification | 13d | 2027-01-06 | 2027-01-20 | 715SS | 2027-01-06 | 2027-01-20 | 13d | 42d | 0d |  |
| 857 | 1.4.3.1.2.2.3.2 | Evaluation of offer & placement of purchase order | 37d | 2027-01-21 | 2027-03-04 | 856 | 2027-01-21 | 2027-03-04 | 37d | 42d | 0d |  |
| 858 | 1.4.3.1.2.2.3.3 | Drawing Submission and manufacturing clearance | 37d | 2027-03-05 | 2027-04-16 | 857 | 2027-03-05 | 2027-04-16 | 37d | 42d | 0d |  |
| 859 | 1.4.3.1.2.2.3.4 | Manufacturing and inspection | 100d | 2027-04-17 | 2027-08-10 | 858 | 2027-04-17 | 2027-08-10 | 100d | 42d | 0d |  |
| 860 | 1.4.3.1.2.2.3.5 | Dispatch and delivery at site | 13d | 2027-08-11 | 2027-08-25 | 859 | 2027-08-11 | 2027-08-25 | 13d | 42d | 14d |  |

| ID | WBS | Task | Duration | Start | Finish | Predecessors | Baseline start | Baseline finish | Baseline duration | Total slack | Free slack | Constraint |
| --- | --- | --- | --- | --- | --- | --- | --- | --- | --- | --- | --- | --- |
| 861 | 1.4.3.1.2.2.4 | **Instrumentation Cable** | 193d | 2027-01-09 | 2027-08-20 |  | 2027-01-09 | 2027-08-20 | 193d | 2d |  |  |
| 862 | 1.4.3.1.2.2.4.1 | Release of Purchase Specification | 13d | 2027-01-09 | 2027-01-23 | 721SS | 2027-01-09 | 2027-01-23 | 13d | 2d | 0d |  |
| 863 | 1.4.3.1.2.2.4.2 | Evaluation of offer & placement of purchase order | 30d | 2027-01-25 | 2027-02-27 | 862 | 2027-01-25 | 2027-02-27 | 30d | 2d | 0d |  |
| 864 | 1.4.3.1.2.2.4.3 | Drawing Submission and manufacturing clearance | 30d | 2027-03-24 | 2027-04-27 | 863FS+20d | 2027-03-24 | 2027-04-27 | 30d | 2d | 0d |  |
| 865 | 1.4.3.1.2.2.4.4 | Manufacturing and inspection | 90d | 2027-04-28 | 2027-08-09 | 864 | 2027-04-28 | 2027-08-09 | 90d | 2d | 0d |  |
| 866 | 1.4.3.1.2.2.4.5 | Dispatch and delivery at site | 10d | 2027-08-10 | 2027-08-20 | 865 | 2027-08-10 | 2027-08-20 | 10d | 2d | 0d |  |
| 867 | 1.4.3.1.2.2.5 | **CCTV System** | 199d | 2027-01-07 | 2027-08-25 |  | 2027-01-07 | 2027-08-25 | 199d | 8d |  |  |
| 868 | 1.4.3.1.2.2.5.1 | Release of Purchase Specification | 13d | 2027-01-07 | 2027-01-21 | 727SS | 2027-01-07 | 2027-01-21 | 13d | 8d | 0d | finish no earlier than 2026-05-29 |
| 869 | 1.4.3.1.2.2.5.2 | Evaluation of offer & placement of purchase order | 26d | 2027-01-22 | 2027-02-20 | 868 | 2027-01-22 | 2027-02-20 | 26d | 8d | 0d | finish no earlier than 2026-07-10 |
| 870 | 1.4.3.1.2.2.5.3 | Drawing Submission and manufacturing clearance | 26d | 2027-04-15 | 2027-05-14 | 869FS+45d | 2027-04-15 | 2027-05-14 | 26d | 8d | 0d | finish no earlier than 2026-09-25 |
| 871 | 1.4.3.1.2.2.5.4 | Manufacturing and inspection | 76d | 2027-05-15 | 2027-08-10 | 870 | 2027-05-15 | 2027-08-10 | 76d | 8d | 0d | finish no earlier than 2027-02-08 |
| 872 | 1.4.3.1.2.2.5.5 | Dispatch and delivery at site | 13d | 2027-08-11 | 2027-08-25 | 871 | 2027-08-11 | 2027-08-25 | 13d | 8d | 0d | finish no earlier than 2027-03-02 |
| 873 | 1.4.3.1.2.2.6 | **LSIC System** | 182d | 2027-01-01 | 2027-07-30 |  | 2027-01-01 | 2027-07-30 | 182d | 12d |  |  |
| 874 | 1.4.3.1.2.2.6.1 | Release of Purchase Specification | 13d | 2027-01-01 | 2027-01-15 | 733SS | 2027-01-01 | 2027-01-15 | 13d | 12d | 0d |  |
| 875 | 1.4.3.1.2.2.6.2 | Evaluation of offer & placement of purchase order | 26d | 2027-01-16 | 2027-02-15 | 874 | 2027-01-16 | 2027-02-15 | 26d | 12d | 0d | finish no earlier than 2026-07-10 |
| 876 | 1.4.3.1.2.2.6.3 | Drawing Submission and manufacturing clearance | 26d | 2027-02-16 | 2027-03-17 | 875 | 2027-02-16 | 2027-03-17 | 26d | 12d | 0d | finish no earlier than 2026-09-25 |
| 877 | 1.4.3.1.2.2.6.4 | Manufacturing and inspection | 104d | 2027-03-18 | 2027-07-15 | 876 | 2027-03-18 | 2027-07-15 | 104d | 12d | 0d | finish no earlier than 2027-02-08 |
| 878 | 1.4.3.1.2.2.6.5 | Dispatch and delivery at site | 13d | 2027-07-16 | 2027-07-30 | 877 | 2027-07-16 | 2027-07-30 | 13d | 12d | 0d | finish no earlier than 2027-03-02 |
| 879 | 1.4.3.1.2.2.7 | **PA/ Telephone System** | 195d | 2027-01-01 | 2027-08-14 |  | 2027-01-01 | 2027-08-14 | 195d | 25d |  |  |
| 880 | 1.4.3.1.2.2.7.1 | Release of Purchase Specification | 13d | 2027-01-01 | 2027-01-15 | 739SS | 2027-01-01 | 2027-01-15 | 13d | 25d | 0d |  |
| 881 | 1.4.3.1.2.2.7.2 | Evaluation of offer & placement of purchase order | 39d | 2027-01-16 | 2027-03-02 | 880 | 2027-01-16 | 2027-03-02 | 39d | 25d | 0d | finish no earlier than 2026-07-10 |
| 882 | 1.4.3.1.2.2.7.3 | Drawing Submission and manufacturing clearance | 30d | 2027-03-03 | 2027-04-06 | 881 | 2027-03-03 | 2027-04-06 | 30d | 25d | 0d | finish no earlier than 2026-09-25 |
| 883 | 1.4.3.1.2.2.7.4 | Manufacturing and inspection | 100d | 2027-04-07 | 2027-07-30 | 882 | 2027-04-07 | 2027-07-30 | 100d | 25d | 0d | finish no earlier than 2027-02-08 |
| 884 | 1.4.3.1.2.2.7.5 | Dispatch and delivery at site | 13d | 2027-07-31 | 2027-08-14 | 883 | 2027-07-31 | 2027-08-14 | 13d | 25d | 0d | finish no earlier than 2025-07-29 |

| ID | WBS | Task | Duration | Start | Finish | Predecessors | Complete | Remaining | Baseline start | Baseline finish | Baseline duration | Total slack | Free slack | Constraint | Text11 | Text1 |
| --- | --- | --- | --- | --- | --- | --- | --- | --- | --- | --- | --- | --- | --- | --- | --- | --- |
| 885 | 1.4.3.1.2.2.8 | **Fire Detection & Alarm System** | 204d | 2026-11-14 | 2027-07-08 |  |  |  | 2026-11-14 | 2027-07-08 | 204d | 5d |  |  |  |  |
| 886 | 1.4.3.1.2.2.8.1 | Release of Purchase Specification | 13d | 2026-11-14 | 2026-11-28 | 745SS |  |  | 2026-11-14 | 2026-11-28 | 13d | 5d | 0d | finish no earlier than 2026-05-29 |  |  |
| 887 | 1.4.3.1.2.2.8.2 | Evaluation of offer & placement of purchase order | 30d | 2026-11-30 | 2027-01-02 | 886 |  |  | 2026-11-30 | 2027-01-02 | 30d | 5d | 0d | finish no earlier than 2026-07-10 |  |  |
| 888 | 1.4.3.1.2.2.8.3 | Drawing Submission and manufacturing clearance | 30d | 2027-01-04 | 2027-02-06 | 887 |  |  | 2027-01-04 | 2027-02-06 | 30d | 5d | 0d | finish no earlier than 2026-09-25 |  |  |
| 889 | 1.4.3.1.2.2.8.4 | Manufacturing and inspection | 116d | 2027-02-08 | 2027-06-21 | 888 |  |  | 2027-02-08 | 2027-06-21 | 116d | 5d | 0d | finish no earlier than 2027-02-08 |  |  |
| 890 | 1.4.3.1.2.2.8.5 | Dispatch and delivery at site | 15d | 2027-06-22 | 2027-07-08 | 889 |  |  | 2027-06-22 | 2027-07-08 | 15d | 5d | 0d | finish no earlier than 2027-03-02 |  |  |
| 891 | 1.5 | **Construction work** | 738d | 2025-08-18 A | 2027-12-22 |  | 4% | 709.9d | 2025-08-18 | 2027-12-22 | 738d | 83d |  |  |  |  |
| 892 | 1.5.1 | **Civil, Structural and Equipment Erection work** | 738d | 2025-08-18 A | 2027-12-22 |  | 4% | 707.82d | 2025-08-18 | 2027-12-22 | 738d | 83d |  |  |  |  |
| 893 | 1.5.1.1 | **Deposit 14** | 716d | 2025-08-18 A | 2027-11-27 |  | 5% | 676.88d | 2025-08-18 | 2027-11-27 | 716d | 27d |  |  |  |  |
| 894 | 1.5.1.1.1 | **ROM Stock Pile** | 313d | 2025-08-18 A | 2026-08-15 |  | 77% | 72.23d | 2025-08-18 | 2026-08-15 | 313d | 152d |  |  |  |  |
| 895 | 1.5.1.1.1.1 | Excavation work of 80% of scope | 110d | 2025-08-18 A | 2025-12-23 A | 3FS+120d | 100% |  | 2025-08-18 | 2025-12-23 | 110d |  |  |  |  |  |
| 896 | 1.5.1.1.1.2 | Availability of clearence from NMDC for balance excavation Balance excavation on the right hand side | 19d | 2026-07-09 | 2026-07-30 | 3FS+400d |  |  | 2026-07-09 | 2026-07-30 | 19d | 152d | 0d |  |  |  |
| 897 | 1.5.1.1.1.3 | Balance 20% excavation on the right hand side | 14d | 2026-07-31 | 2026-08-15 | 896, 51 |  |  | 2026-07-31 | 2026-08-15 | 14d | 152d |  |  |  |  |
| 898 | 1.5.1.1.2 | **Primary Crusher** | 696d | 2025-09-10 A | 2027-11-27 |  | 12% | 610.43d | 2025-09-10 | 2027-11-27 | 696d | 0d |  |  |  |  |
| 899 | 1.5.1.1.2.1 | **Civil Work** | 445d | 2025-09-10 A | 2027-02-09 |  | 33% | 297.74d | 2025-09-10 | 2027-02-09 | 445d | 0d |  |  |  |  |
| 900 | 1.5.1.1.2.1.1 | E/W in excavation | 209d | 2025-09-10 A | 2026-05-09 | 4FS+20d, 51, 895FF | 95% | 10.45d | 2025-09-10 | 2026-05-09 | 209d | 1d | 0d |  | In Progress |  |
| 901 | 1.5.1.1.2.1.2 | RCC work for Retaining Wall and Equipment Foundation | 208d | 2026-05-12 | 2027-01-08 | 900, 70FS-14d |  |  | 2026-05-12 | 2027-01-08 | 208d | 0d |  |  |  | cu.m |
| 902 | 1.5.1.1.2.1.3 | RCC work for Building Shed | 183d | 2026-07-11 | 2027-02-09 | 901SS+52d, 897FF |  |  | 2026-07-11 | 2027-02-09 | 183d | 0d |  |  |  | cu.m |
| 903 | 1.5.1.1.2.2 | **Structural and Sheeting Work** | 202d | 2026-09-08 | 2027-04-30 |  |  |  | 2026-09-08 | 2027-04-30 | 202d | 15d |  |  |  |  |
| 904 | 1.5.1.1.2.2.1 | Supply of Fabricated Structure at site | 99d | 2026-09-08 | 2026-12-31 | 305SS+45d |  |  | 2026-09-08 | 2026-12-31 | 99d | 15d |  |  |  |  |
| 905 | 1.5.1.1.2.2.2 | Erection of Structural Steel | 156d | 2026-10-10 | 2027-04-09 | 902SS+78d, 904SS+13d |  |  | 2026-10-10 | 2027-04-09 | 156d | 0d |  |  |  | mt. |
| 906 | 1.5.1.1.2.2.3 | Supply of Sheeting Material | 44d | 2026-11-18 | 2027-01-07 | 300SS+120d |  |  | 2026-11-18 | 2027-01-07 | 44d | 129d | 37d |  |  |  |
| 907 | 1.5.1.1.2.2.4 | Sheeting and painting | 104d | 2026-12-31 | 2027-04-30 | 905SS+70d, 906SS, 312SS+40d |  |  | 2026-12-31 | 2027-04-30 | 104d | 92d | 28d |  |  |  |
| 908 | 1.5.1.1.2.3 | **Mechanical Erection** | 220d | 2027-03-02 | 2027-11-11 |  |  |  | 2027-03-02 | 2027-11-11 | 220d | 0d |  |  |  |  |
| 909 | 1.5.1.1.2.3.1 | Erection of Gyratory Crusher | 100d | 2027-03-06 | 2027-06-29 | 905FS-30d, 317FS+41d, 910FF+54d |  |  | 2027-03-06 | 2027-06-29 | 100d | 0d |  |  |  | no |
| 910 | 1.5.1.1.2.3.2 | Erection of EOT Cranes (160/30T) | 50d | 2027-03-02 | 2027-04-28 | 905FS-34d, 341FS+52d |  |  | 2027-03-02 | 2027-04-28 | 50d | 0d |  |  |  |  |
| 911 | 1.5.1.1.2.3.3 | Erection of Apron Feeder (3000 TPH ) | 90d | 2027-06-02 | 2027-09-14 | 910FS+30d, 329FS+100d, 907 |  |  | 2027-06-02 | 2027-09-14 | 90d | 64d |  |  |  |  |
| 912 | 1.5.1.1.2.3.4 | Erection of Hydraulic Gripper | 52d | 2027-07-29 | 2027-09-27 | 909FS+25d, 431FS+26d |  |  | 2027-07-29 | 2027-09-27 | 52d | 53d |  |  |  |  |
| 913 | 1.5.1.1.2.3.5 | Erection of Rock Breaker | 50d | 2027-07-29 | 2027-09-24 | 909FS+25d, 425 |  |  | 2027-07-29 | 2027-09-24 | 50d | 55d |  |  |  |  |
| 914 | 1.5.1.1.2.3.6 | Erection of Utility equipment like Fire Fighting, Dust Suppression System etc | 130d | 2027-06-14 | 2027-11-11 | 73FS+13d, 449FS+26d, 455FS+13d, 461FS+13d |  |  | 2027-06-14 | 2027-11-11 | 130d | 14d |  |  |  |  |

| ID | WBS | Task | Duration | Start | Finish | Predecessors | Complete | Remaining | Baseline start | Baseline finish | Baseline duration | Total slack | Free slack | Text1 |
| --- | --- | --- | --- | --- | --- | --- | --- | --- | --- | --- | --- | --- | --- | --- |
| 915 | 1.5.1.1.2.4 | **Electrical Erection** | 140d | 2027-06-18 | 2027-11-27 |  |  |  | 2027-06-18 | 2027-11-27 | 140d | 0d |  |  |
| 916 | 1.5.1.1.2.4.1 | Erection of Gyratory Motor | 20d | 2027-06-18 | 2027-07-10 | 909SS+90d |  |  | 2027-06-18 | 2027-07-10 | 20d | 0d |  |  |
| 917 | 1.5.1.1.2.4.2 | Erection of Electrical Equipments | 120d | 2027-07-12 | 2027-11-27 | 909FS+10d, 911FF, 912FF, 916, 664FS+7d, 58FS+150d, 72FS+104d |  |  | 2027-07-12 | 2027-11-27 | 120d | 0d |  | lot |
| 918 | 1.5.1.1.3 | **Conveyor 2005** | 609d | 2025-12-10 A | 2027-11-17 |  | 19% | 495.82d | 2025-12-10 | 2027-11-17 | 609d | 31d |  |  |
| 919 | 1.5.1.1.3.1 | **Civil Work** | 293d | 2025-12-10 A | 2026-11-14 |  | 43% | 167d | 2025-12-10 | 2026-11-14 | 293d | 109d |  |  |
| 920 | 1.5.1.1.3.1.1 | E/W in excavation | 140d | 2025-12-10 A | 2026-05-20 | 900SS+104d | 90% | 14d | 2025-12-10 | 2026-05-20 | 140d | 109d | 0d |  |
| 921 | 1.5.1.1.3.1.2 | Dressing, Levelling and P.C.C. | 10d | 2026-05-21 | 2026-06-01 | 920, 76 |  |  | 2026-05-21 | 2026-06-01 | 10d | 109d | 0d |  |
| 922 | 1.5.1.1.3.1.3 | RCC work in Foundation | 83d | 2026-06-02 | 2026-09-05 | 921 |  |  | 2026-06-02 | 2026-09-05 | 83d | 109d | 0d |  |
| 923 | 1.5.1.1.3.1.4 | RCC work in Pedestal | 30d | 2026-09-07 | 2026-10-10 | 922 |  |  | 2026-09-07 | 2026-10-10 | 30d | 109d | 0d |  |
| 924 | 1.5.1.1.3.1.5 | Bolt Lift | 30d | 2026-10-12 | 2026-11-14 | 923 |  |  | 2026-10-12 | 2026-11-14 | 30d | 109d | 0d |  |
| 925 | 1.5.1.1.3.2 | **Structural and Sheeting Work** | 161d | 2026-09-02 | 2027-03-08 |  |  |  | 2026-09-02 | 2027-03-08 | 161d | 168d |  |  |
| 926 | 1.5.1.1.3.2.1 | Supply of Fabricated Structure | 28d | 2026-09-02 | 2026-10-03 | 297SS+40d, 77FS+39d |  |  | 2026-09-02 | 2026-10-03 | 28d | 173d | 64d |  |
| 927 | 1.5.1.1.3.2.2 | Supply of Sheeting Material | 34d | 2026-12-23 | 2027-01-30 | 300SS+150d |  |  | 2026-12-23 | 2027-01-30 | 34d | 168d | 0d |  |
| 928 | 1.5.1.1.3.2.3 | Erection of Structural Steel | 52d | 2026-11-16 | 2027-01-14 | 924, 926SS |  |  | 2026-11-16 | 2027-01-14 | 52d | 109d | 19d |  |
| 929 | 1.5.1.1.3.2.4 | Sheeting and painting | 39d | 2027-01-22 | 2027-03-08 | 928FS-13d, 927SS+26d |  |  | 2027-01-22 | 2027-03-08 | 39d | 168d | 36d |  |
| 930 | 1.5.1.1.3.3 | **Mechanical Erection** | 138d | 2027-04-14 | 2027-09-20 |  |  |  | 2027-04-14 | 2027-09-20 | 138d | 48d |  |  |
| 931 | 1.5.1.1.3.3.1 | Erection of Technological Structure | 25d | 2027-05-04 | 2027-05-31 | 928FS+15d, 437FS+13d, 1719 |  |  | 2027-05-04 | 2027-05-31 | 25d | 31d | 0d |  |
| 932 | 1.5.1.1.3.3.2 | Erection of Idler Assly | 30d | 2027-06-18 | 2027-07-22 | 931FS+15d, 353FS+100d, 929FS+52d |  |  | 2027-06-18 | 2027-07-22 | 30d | 132d | 101d |  |
| 933 | 1.5.1.1.3.3.3 | Erection of Pulleys | 26d | 2027-07-06 | 2027-08-04 | 931FS+30d, 365FS+26d |  |  | 2027-07-06 | 2027-08-04 | 26d | 31d | 0d |  |
| 934 | 1.5.1.1.3.3.4 | Erection of Gear Box & Coupling | 15d | 2027-08-05 | 2027-08-21 | 933, 359FS+60d, 377FS+26d |  |  | 2027-08-05 | 2027-08-21 | 15d | 31d | 0d |  |
| 935 | 1.5.1.1.3.3.5 | Erection of Metal Detector | 20d | 2027-06-26 | 2027-07-19 | 395FS+26d |  |  | 2027-06-26 | 2027-07-19 | 20d | 135d | 104d |  |
| 936 | 1.5.1.1.3.3.6 | Erection of ILMS/CBMS | 26d | 2027-04-14 | 2027-05-13 | 401FS+26d |  |  | 2027-04-14 | 2027-05-13 | 26d | 167d | 136d |  |
| 937 | 1.5.1.1.3.3.7 | Erection of Belting | 15d | 2027-09-03 | 2027-09-20 | 934FS+10d, 371FS+160d |  |  | 2027-09-03 | 2027-09-20 | 15d | 81d | 50d |  |
| 938 | 1.5.1.1.3.4 | **Electrical Erection** | 75d | 2027-08-23 | 2027-11-17 |  |  |  | 2027-08-23 | 2027-11-17 | 75d | 31d |  |  |
| 939 | 1.5.1.1.3.4.1 | Erection of Motor | 15d | 2027-08-23 | 2027-09-08 | 646FS+26d, 931, 934 |  |  | 2027-08-23 | 2027-09-08 | 15d | 31d | 0d |  |
| 940 | 1.5.1.1.3.4.2 | Erection of Electrical Equipments | 60d | 2027-09-09 | 2027-11-17 | 939, 700FF+78d, 932FF, 664FS+7d, 931 |  |  | 2027-09-09 | 2027-11-17 | 60d | 31d | 0d |  |

| ID | WBS | Task | Duration | Start | Finish | Predecessors | Complete | Remaining | Baseline start | Baseline finish | Baseline duration | Total slack | Free slack | Text1 |
| --- | --- | --- | --- | --- | --- | --- | --- | --- | --- | --- | --- | --- | --- | --- |
| 941 | 1.5.1.1.4 | **Secondary Crusher** | 696d | 2025-09-10 A | 2027-11-27 |  | 15% | 592.07d | 2025-09-10 | 2027-11-27 | 696d | 0d |  |  |
| 942 | 1.5.1.1.4.1 | **Civil Work** | 448d | 2025-09-10 A | 2027-02-12 |  | 37% | 283.89d | 2025-09-10 | 2027-02-12 | 448d | 0d |  |  |
| 943 | 1.5.1.1.4.1.1 | E/W in excavation | 193d | 2025-09-10 A | 2026-04-21 | 4FS+20d, 51 | 93% | 13.51d | 2025-09-10 | 2026-04-21 | 193d | 6d | 0d |  |
| 944 | 1.5.1.1.4.1.2 | Dressing, Levelling and P.C.C. | 14d | 2026-04-29 | 2026-05-14 | 943, 80SS+50d |  |  | 2026-04-29 | 2026-05-14 | 14d | 0d |  | cu.m. |
| 945 | 1.5.1.1.4.1.3 | RCC work for Equipment foundation | 145d | 2026-05-15 | 2026-10-30 | 944 |  |  | 2026-05-15 | 2026-10-30 | 145d | 0d |  | cu.m. |
| 946 | 1.5.1.1.4.1.4 | RCC work for Building Shed | 138d | 2026-09-05 | 2027-02-12 | 945SS+97d |  |  | 2026-09-05 | 2027-02-12 | 138d | 0d |  | cu.m. |
| 947 | 1.5.1.1.4.2 | **Structural and Sheeting Work** | 169d | 2026-10-01 | 2027-04-15 |  |  |  | 2026-10-01 | 2027-04-15 | 169d | 17d |  |  |
| 948 | 1.5.1.1.4.2.1 | Supply of Fabricated Structure | 17d | 2026-10-01 | 2026-10-20 | 305SS+65d |  |  | 2026-10-01 | 2026-10-20 | 17d | 17d |  |  |
| 949 | 1.5.1.1.4.2.2 | Erection of Structural Steel | 104d | 2026-11-05 | 2027-03-05 | 946SS+52d, 948SS+13d, 206FS+138d |  |  | 2026-11-05 | 2027-03-05 | 104d | 0d |  | mt. |
| 950 | 1.5.1.1.4.2.3 | Supply of Sheeting material | 27d | 2026-12-30 | 2027-01-29 | 300SS+156d |  |  | 2026-12-30 | 2027-01-29 | 27d | 49d | 23d |  |
| 951 | 1.5.1.1.4.2.4 | Sheeting and painting | 69d | 2027-01-26 | 2027-04-15 | 950SS, 949SS+70d |  |  | 2027-01-26 | 2027-04-15 | 69d | 26d | 0d |  |
| 952 | 1.5.1.1.4.3 | **Mechanical Erection** | 185d | 2027-03-27 | 2027-10-27 |  |  |  | 2027-03-27 | 2027-10-27 | 185d | 0d |  |  |
| 953 | 1.5.1.1.4.3.1 | Erection of Cone Crusher | 119d | 2027-03-27 | 2027-08-11 | 323, 951SS+26d, 954FF+7d, 949FS+18d |  |  | 2027-03-27 | 2027-08-12 | 120d | 0d |  | no |
| 954 | 1.5.1.1.4.3.2 | Erection of EOT Cranes (40/5T) | 45d | 2027-04-01 | 2027-05-21 | 341FS+52d, 951FS-13d |  |  | 2027-04-01 | 2027-05-21 | 45d | 62d |  |  |
| 955 | 1.5.1.1.4.3.3 | Scalping Screen | 55d | 2027-07-26 | 2027-09-27 | 953SS+104d, 335FS+160d |  |  | 2027-07-26 | 2027-09-27 | 55d | 53d |  |  |
| 956 | 1.5.1.1.4.3.4 | Erection of Utility equipment like Fire Fighting, Dust Suppression System etc | 130d | 2027-05-29 | 2027-10-27 | 449FS+13d, 455FS+13d, 461FS+13d, 83FS+13d |  |  | 2027-05-29 | 2027-10-27 | 130d | 27d |  |  |
| 957 | 1.5.1.1.4.4 | **Electrical Erection** | 121d | 2027-07-10 | 2027-11-27 |  |  |  | 2027-07-12 | 2027-11-27 | 120d | 0d |  |  |
| 958 | 1.5.1.1.4.4.1 | Erection of Cone Crusher Motor | 45d | 2027-07-10 | 2027-08-31 | 953FS-28d, 323 |  |  | 2027-07-12 | 2027-09-01 | 45d | 0d |  | no |
| 959 | 1.5.1.1.4.4.2 | Erection of Electrical Equipments | 101d | 2027-08-03 | 2027-11-27 | 954, 958SS+20d, 700FF+78d, 664FS+7d, 58FS+150d, 82FS+90d |  |  | 2027-08-04 | 2027-11-27 | 100d | 0d |  | lot |
| 960 | 1.5.1.1.5 | **Conveyor 2009** | 598d | 2025-12-10 A | 2027-11-04 |  | 22% | 469.42d | 2025-12-10 | 2027-11-04 | 598d | 47d |  |  |
| 961 | 1.5.1.1.5.1 | **Civil Work** | 261d | 2025-12-10 A | 2026-10-08 |  | 49% | 132.04d | 2025-12-10 | 2026-10-01 | 255d | 149d |  |  |
| 962 | 1.5.1.1.5.1.1 | E/W in excavation | 140d | 2025-12-10 A | 2026-05-20 | 943SS+78d | 90% | 14d | 2025-12-10 | 2026-05-20 | 140d | 9d | 0d |  |
| 963 | 1.5.1.1.5.1.2 | Dressing, Levelling and P.C.C. | 39d | 2026-05-28 | 2026-07-11 | 962, 86 |  |  | 2026-05-21 | 2026-07-04 | 39d | 149d | 0d |  |
| 964 | 1.5.1.1.5.1.3 | RCC work in Foundation | 36d | 2026-07-13 | 2026-08-22 | 963 |  |  | 2026-07-06 | 2026-08-15 | 36d | 149d | 0d |  |
| 965 | 1.5.1.1.5.1.4 | RCC work in Pedestal | 20d | 2026-08-24 | 2026-09-15 | 964 |  |  | 2026-08-17 | 2026-09-08 | 20d | 149d | 0d |  |
| 966 | 1.5.1.1.5.1.5 | Bolt Lift | 20d | 2026-09-16 | 2026-10-08 | 965 |  |  | 2026-09-09 | 2026-10-01 | 20d | 149d | 0d |  |

| ID | WBS | Task | Duration | Start | Finish | Predecessors | Complete | Remaining | Baseline start | Baseline finish | Baseline duration | Total slack | Free slack |
| --- | --- | --- | --- | --- | --- | --- | --- | --- | --- | --- | --- | --- | --- |
| 967 | 1.5.1.1.5.2 | **Structural and Sheeting Work** | 134d | 2026-08-27 | 2027-01-29 |  |  |  | 2026-08-27 | 2027-01-26 | 131d | 167d |  |
| 968 | 1.5.1.1.5.2.1 | Supply of Fabricated Structure | 28d | 2026-08-27 | 2026-09-28 | 297SS+35d, 87FS+26d |  |  | 2026-08-27 | 2026-09-28 | 28d | 186d | 37d |
| 969 | 1.5.1.1.5.2.2 | Supply of Sheeting Material | 30d | 2026-10-26 | 2026-11-28 | 300SS+100d |  |  | 2026-10-26 | 2026-11-28 | 30d | 170d | 3d |
| 970 | 1.5.1.1.5.2.3 | Erection of Structural Steel | 60d | 2026-10-09 | 2026-12-17 | 966, 968SS |  |  | 2026-10-02 | 2026-12-10 | 60d | 149d | 0d |
| 971 | 1.5.1.1.5.2.4 | Sheeting and painting | 37d | 2026-12-18 | 2027-01-29 | 970, 969FS+13d |  |  | 2026-12-15 | 2027-01-26 | 37d | 167d | 120d |
| 972 | 1.5.1.1.5.3 | **Mechanical Erection** | 110d | 2027-05-04 | 2027-09-07 |  |  |  | 2027-05-04 | 2027-09-07 | 110d | 47d |  |
| 973 | 1.5.1.1.5.3.1 | Erection of Technological Structure | 25d | 2027-05-04 | 2027-05-31 | 970FS+15d, 437FS+13d |  |  | 2027-05-04 | 2027-05-31 | 25d | 47d | 0d |
| 974 | 1.5.1.1.5.3.2 | Erection of Idler Assly | 20d | 2027-06-18 | 2027-07-10 | 973FS+15d, 353FS+100d, 971 |  |  | 2027-06-18 | 2027-07-10 | 20d | 47d | 0d |
| 975 | 1.5.1.1.5.3.3 | Erection of Pulleys | 10d | 2027-07-17 | 2027-07-28 | 974FS+5d, 365FS+26d |  |  | 2027-07-17 | 2027-07-28 | 10d | 47d | 0d |
| 976 | 1.5.1.1.5.3.4 | Erection of Gear Box & Coupling | 10d | 2027-07-29 | 2027-08-09 | 975, 359FS+60d, 377FS+26d |  |  | 2027-07-29 | 2027-08-09 | 10d | 47d | 0d |
| 977 | 1.5.1.1.5.3.5 | Erection of Belt Weigher | 26d | 2027-08-07 | 2027-09-06 | 407FS+26d, 973 |  |  | 2027-08-07 | 2027-09-06 | 26d | 98d | 51d |
| 978 | 1.5.1.1.5.3.6 | Erection of Belting | 10d | 2027-08-27 | 2027-09-07 | 976FS+15d, 371FS+160d |  |  | 2027-08-27 | 2027-09-07 | 10d | 97d | 50d |
| 979 | 1.5.1.1.5.4 | **Electrical Erection** | 75d | 2027-08-10 | 2027-11-04 |  |  |  | 2027-08-10 | 2027-11-04 | 75d | 47d |  |
| 980 | 1.5.1.1.5.4.1 | Erection of Motor | 15d | 2027-08-10 | 2027-08-26 | 646FS+26d, 973, 975, 976 |  |  | 2027-08-10 | 2027-08-26 | 15d | 47d | 0d |
| 981 | 1.5.1.1.5.4.2 | Erection of Electrical Equipment | 60d | 2027-08-27 | 2027-11-04 | 980, 700FF+78d, 664 |  |  | 2027-08-27 | 2027-11-04 | 60d | 47d | 0d |
| 982 | 1.5.1.1.6 | **Transfer House TH1** | 603d | 2025-12-10 A | 2027-11-10 |  | 23% | 464d | 2025-12-10 | 2027-11-10 | 603d | 37d |  |
| 983 | 1.5.1.1.6.1 | **Civil Work** | 265d | 2025-12-10 A | 2026-10-13 |  | 48% | 137.8d | 2025-12-10 | 2026-10-08 | 261d | 141d |  |
| 984 | 1.5.1.1.6.1.1 | E/W in excavation | 136d | 2025-12-10 A | 2026-05-15 | 962SS | 90% | 13.6d | 2025-12-10 | 2026-05-15 | 136d | 151d | 0d |
| 985 | 1.5.1.1.6.1.2 | Dressing, Levelling and P.C.C. | 7d | 2026-05-28 | 2026-06-04 | 984, 90 |  |  | 2026-05-23 | 2026-05-30 | 7d | 141d | 0d |
| 986 | 1.5.1.1.6.1.3 | RCC work in Foundation | 52d | 2026-06-05 | 2026-08-04 | 985 |  |  | 2026-06-01 | 2026-07-30 | 52d | 141d | 0d |
| 987 | 1.5.1.1.6.1.4 | RCC work in Pedestal | 30d | 2026-08-05 | 2026-09-08 | 986 |  |  | 2026-07-31 | 2026-09-03 | 30d | 141d | 0d |
| 988 | 1.5.1.1.6.1.5 | Bolt Lift | 30d | 2026-09-09 | 2026-10-13 | 987 |  |  | 2026-09-04 | 2026-10-08 | 30d | 141d | 0d |
| 989 | 1.5.1.1.6.2 | **Structural and Sheeting Work** | 93d | 2026-09-16 | 2027-01-01 |  |  |  | 2026-09-16 | 2026-12-28 | 89d | 149d |  |
| 990 | 1.5.1.1.6.2.1 | Supply of Sheeting Material | 22d | 2026-10-30 | 2026-11-24 | 300SS+104d |  |  | 2026-10-30 | 2026-11-24 | 22d | 174d | 25d |
| 991 | 1.5.1.1.6.2.2 | Supply of Fabricated Structure | 20d | 2026-09-16 | 2026-10-08 | 297SS+52d, 91FS+39d |  |  | 2026-09-16 | 2026-10-08 | 20d | 152d | 11d |
| 992 | 1.5.1.1.6.2.3 | Erection of Structural Steel | 39d | 2026-10-14 | 2026-11-27 | 988, 991SS+13d |  |  | 2026-10-09 | 2026-11-23 | 39d | 141d | 0d |
| 993 | 1.5.1.1.6.2.4 | Sheeting and painting | 30d | 2026-11-28 | 2027-01-01 | 992, 990SS |  |  | 2026-11-24 | 2026-12-28 | 30d | 149d | 112d |

| ID | WBS | Task | Duration | Start | Finish | Predecessors | Complete | Remaining | Baseline start | Baseline finish | Baseline duration | Total slack | Free slack |
| --- | --- | --- | --- | --- | --- | --- | --- | --- | --- | --- | --- | --- | --- |
| 994 | 1.5.1.1.6.3 | **Mechanical Erection** | 120d | 2027-05-04 | 2027-09-18 |  |  |  | 2027-05-04 | 2027-09-18 | 120d | 37d |  |
| 995 | 1.5.1.1.6.3.1 | Erection of Technological Structure | 60d | 2027-05-04 | 2027-07-10 | 992FS+30d, 437FS+13d |  |  | 2027-05-04 | 2027-07-10 | 60d | 37d | 0d |
| 996 | 1.5.1.1.6.3.2 | Erection of Mechanical Equipment | 60d | 2027-07-12 | 2027-09-18 | 995, 993FS+52d, 413FS+13d |  |  | 2027-07-12 | 2027-09-18 | 60d | 37d | 0d |
| 997 | 1.5.1.1.6.4 | **Electrical Erection** | 45d | 2027-09-20 | 2027-11-10 |  |  |  | 2027-09-20 | 2027-11-10 | 45d | 37d |  |
| 998 | 1.5.1.1.6.4.1 | Erection of Electrical Equipment | 45d | 2027-09-20 | 2027-11-10 | 992FS+45d, 700FF+78d, 996, 664 |  |  | 2027-09-20 | 2027-11-10 | 45d | 37d | 0d |
| 999 | 1.5.1.1.7 | **Conveyor 2010** | 527d | 2025-12-23 A | 2027-08-26 |  | 21% | 416.03d | 2025-12-23 | 2027-08-26 | 527d | 92d |  |
| 1000 | 1.5.1.1.7.1 | **Civil Work** | 288d | 2025-12-23 A | 2026-11-21 |  | 41% | 169.94d | 2025-12-23 | 2026-11-14 | 282d | 102d |  |
| 1001 | 1.5.1.1.7.1.1 | E/W in excavation | 136d | 2025-12-23 A | 2026-05-28 | 984SS+13d | 85% | 20.4d | 2025-12-23 | 2026-05-28 | 136d | 108d | 6d |
| 1002 | 1.5.1.1.7.1.2 | Dressing, Levelling and P.C.C. | 20d | 2026-06-05 | 2026-06-27 | 1001, 94FS+7d |  |  | 2026-05-29 | 2026-06-20 | 20d | 102d | 0d |
| 1003 | 1.5.1.1.7.1.3 | RCC work in Foundation | 52d | 2026-06-29 | 2026-08-27 | 1002 |  |  | 2026-06-22 | 2026-08-20 | 52d | 102d | 0d |
| 1004 | 1.5.1.1.7.1.4 | RCC work in Pedestal | 39d | 2026-08-28 | 2026-10-12 | 1003 |  |  | 2026-08-21 | 2026-10-05 | 39d | 102d | 0d |
| 1005 | 1.5.1.1.7.1.5 | Bolt Lift | 35d | 2026-10-13 | 2026-11-21 | 1004 |  |  | 2026-10-06 | 2026-11-14 | 35d | 102d | 10d |
| 1006 | 1.5.1.1.7.2 | **Structural and Sheeting Work** | 70d | 2026-12-04 | 2027-02-23 |  |  |  | 2026-12-04 | 2027-02-23 | 70d | 92d |  |
| 1007 | 1.5.1.1.7.2.1 | Supply of Sheeting Material | 17d | 2026-12-23 | 2027-01-11 | 300SS+150d |  |  | 2026-12-23 | 2027-01-11 | 17d | 154d | 23d |
| 1008 | 1.5.1.1.7.2.2 | Supply of Fabricated Structure | 10d | 2026-12-04 | 2026-12-15 | 297SS+120d, 95FS+52d |  |  | 2026-12-04 | 2026-12-15 | 10d | 92d | 0d |
| 1009 | 1.5.1.1.7.2.3 | Erection of Structural Steel | 39d | 2026-12-04 | 2027-01-18 | 1005, 1008SS |  |  | 2026-12-04 | 2027-01-18 | 39d | 92d | 0d |
| 1010 | 1.5.1.1.7.2.4 | Sheeting and painting | 31d | 2027-01-19 | 2027-02-23 | 1009, 1007SS |  |  | 2027-01-19 | 2027-02-23 | 31d | 131d | 39d |
| 1011 | 1.5.1.1.7.3 | **Mechanical Erection** | 100d | 2027-02-23 | 2027-06-17 |  |  |  | 2027-02-23 | 2027-06-17 | 100d | 92d |  |
| 1012 | 1.5.1.1.7.3.1 | Erection of Technological Structure | 30d | 2027-02-23 | 2027-03-29 | 1009FS+30d |  |  | 2027-02-23 | 2027-03-29 | 30d | 92d | 0d |
| 1013 | 1.5.1.1.7.3.2 | Erection of Idler Assly | 20d | 2027-04-10 | 2027-05-03 | 1012FS+10d, 1010 |  |  | 2027-04-10 | 2027-05-03 | 20d | 92d | 0d |
| 1014 | 1.5.1.1.7.3.3 | Erection of Pulleys | 10d | 2027-05-04 | 2027-05-14 | 1013 |  |  | 2027-05-04 | 2027-05-14 | 10d | 92d | 0d |
| 1015 | 1.5.1.1.7.3.4 | Erection of GearBox & Coupling | 15d | 2027-05-15 | 2027-05-31 | 1014, 377FS+26d |  |  | 2027-05-15 | 2027-05-31 | 15d | 92d | 0d |
| 1016 | 1.5.1.1.7.3.5 | Erection of Belting | 20d | 2027-05-26 | 2027-06-17 | 1013FS+20d |  |  | 2027-05-26 | 2027-06-17 | 20d | 152d | 60d |
| 1017 | 1.5.1.1.7.4 | **Electrical Erection** | 75d | 2027-06-01 | 2027-08-26 |  |  |  | 2027-06-01 | 2027-08-26 | 75d | 92d |  |
| 1018 | 1.5.1.1.7.4.1 | Erection of Conv. Motors | 15d | 2027-06-01 | 2027-06-17 | 1015 |  |  | 2027-06-01 | 2027-06-17 | 15d | 92d | 0d |
| 1019 | 1.5.1.1.7.4.2 | Erection of Electrical Equipments | 60d | 2027-06-18 | 2027-08-26 | 1018, 664 |  |  | 2027-06-18 | 2027-08-26 | 60d | 92d | 0d |

| ID | WBS | Task | Duration | Start | Finish | Predecessors | Complete | Remaining | Baseline start | Baseline finish | Baseline duration | Total slack | Free slack | Text1 |
| --- | --- | --- | --- | --- | --- | --- | --- | --- | --- | --- | --- | --- | --- | --- |
| 1020 | 1.5.1.1.8 | **Transfer House TH2** | 474d | 2026-04-01 A | 2027-10-04 |  | 1% | 468.5d | 2026-04-01 | 2027-10-04 | 474d | 69d |  |  |
| 1021 | 1.5.1.1.8.1 | **Civil Work** | 233d | 2026-04-01 A | 2026-12-28 |  | 3% | 226.93d | 2026-04-01 | 2026-12-28 | 233d | 69d |  |  |
| 1022 | 1.5.1.1.8.1.1 | Availability of clearence from NMDC | 12d | 2026-04-01 | 2026-04-14 | 3FS+315d |  |  | 2026-04-01 | 2026-04-14 | 12d | 5.6d | 0d |  |
| 1023 | 1.5.1.1.8.1.2 | Preparation of Approach Road | 14d | 2026-04-15 A | 2026-04-30 | 1022 | 40% | 8.4d | 2026-04-15 | 2026-04-30 | 14d | 26d | 17d |  |
| 1024 | 1.5.1.1.8.1.3 | E/W in excavation | 26d | 2026-05-21 | 2026-06-19 | 962, 1023 |  |  | 2026-05-21 | 2026-06-19 | 26d | 9d | 0d |  |
| 1025 | 1.5.1.1.8.1.4 | Dressing, Levelling and P.C.C. | 7d | 2026-06-22 | 2026-06-29 | 1024FS+1d, 98FS+7d |  |  | 2026-06-22 | 2026-06-29 | 7d | 69d | 0d |  |
| 1026 | 1.5.1.1.8.1.5 | RCC work in Foundation | 52d | 2026-06-30 | 2026-08-28 | 1025 |  |  | 2026-06-30 | 2026-08-28 | 52d | 69d | 0d |  |
| 1027 | 1.5.1.1.8.1.6 | RCC work in Pedestal | 52d | 2026-08-29 | 2026-10-28 | 1026 |  |  | 2026-08-29 | 2026-10-28 | 52d | 69d | 0d |  |
| 1028 | 1.5.1.1.8.1.7 | Bolt Lift | 52d | 2026-10-29 | 2026-12-28 | 1027 |  |  | 2026-10-29 | 2026-12-28 | 52d | 69d | 0d |  |
| 1029 | 1.5.1.1.8.2 | **Structural and Sheeting Work** | 72d | 2026-12-16 | 2027-03-09 |  |  |  | 2026-12-16 | 2027-03-09 | 72d | 73d |  |  |
| 1030 | 1.5.1.1.8.2.1 | Supply of Sheeting Material | 22d | 2026-12-17 | 2027-01-11 | 300SS+145d |  |  | 2026-12-17 | 2027-01-11 | 22d | 168d | 29d |  |
| 1031 | 1.5.1.1.8.2.2 | Supply of Fabricated Structure | 20d | 2026-12-16 | 2027-01-07 | 297SS+130d, 99FS+52d |  |  | 2026-12-16 | 2027-01-07 | 20d | 73d | 4d |  |
| 1032 | 1.5.1.1.8.2.3 | Erection of Structural Steel | 41d | 2026-12-29 | 2027-02-13 | 1028, 1031SS+7d |  |  | 2026-12-29 | 2027-02-13 | 41d | 69d | 0d |  |
| 1033 | 1.5.1.1.8.2.4 | Sheeting and painting | 35d | 2027-01-28 | 2027-03-09 | 1032SS+26d, 1030SS+7d |  |  | 2027-01-28 | 2027-03-09 | 35d | 139d | 70d |  |
| 1034 | 1.5.1.1.8.3 | **Mechanical Erection** | 125d | 2027-02-26 | 2027-07-20 |  |  |  | 2027-02-26 | 2027-07-20 | 125d | 69d |  |  |
| 1035 | 1.5.1.1.8.3.1 | Erection of Technological Structure | 60d | 2027-02-26 | 2027-05-06 | 1032FS+10d |  |  | 2027-02-26 | 2027-05-06 | 60d | 69d | 0d |  |
| 1036 | 1.5.1.1.8.3.2 | Erection of Mechanical Equipment | 45d | 2027-05-29 | 2027-07-20 | 1035FS+20d, 413FS+13d, 1033 |  |  | 2027-05-29 | 2027-07-20 | 45d | 69d | 0d |  |
| 1037 | 1.5.1.1.8.4 | **Electrical Erection** | 45d | 2027-08-13 | 2027-10-04 |  |  |  | 2027-08-13 | 2027-10-04 | 45d | 69d |  |  |
| 1038 | 1.5.1.1.8.4.1 | Erection of Electrical Equipments | 45d | 2027-08-13 | 2027-10-04 | 1036FS+20d |  |  | 2027-08-13 | 2027-10-04 | 45d | 69d | 0d |  |
| 1039 | 1.5.1.1.9 | **Primary Stock Pile and Tripper Conveyor 2011** | 521d | 2026-04-01 A | 2027-11-27 |  |  | 519.1d | 2026-04-01 | 2027-11-27 | 521d | 0d |  |  |
| 1040 | 1.5.1.1.9.1 | **Civil Work** | 291d | 2026-04-01 A | 2027-03-05 |  | 1% | 287.82d | 2026-04-01 | 2027-03-05 | 291d | 2d |  |  |
| 1041 | 1.5.1.1.9.1.1 | Tree cutting by Forest Department | 16d | 2026-04-01 | 2026-04-18 | 2SS+316d |  |  | 2026-04-01 | 2026-04-18 | 16d | 5d | 0d |  |
| 1042 | 1.5.1.1.9.1.2 | Preparation of Approach Road | 10d | 2026-04-20 A | 2026-04-30 | 1041 | 50% | 5d | 2026-04-20 | 2026-04-30 | 10d | 2d |  |  |
| 1043 | 1.5.1.1.9.1.3 | Construction of Conveyor Tunnel and Retaining Wall | 100d | 2026-05-04 | 2026-08-27 | 1042, 102SS+26d |  |  | 2026-05-04 | 2026-08-27 | 100d | 0d |  |  |
| 1044 | 1.5.1.1.9.1.4 | Earth work in excavation and filling beyond NGL | 20d | 2026-07-29 | 2026-08-20 | 1043FS-26d |  |  | 2026-07-29 | 2026-08-20 | 20d | 0d |  | cu.m. |
| 1045 | 1.5.1.1.9.1.5 | Tipper Car raft of Tunnel, Apron Feeder foundations and Deck Slab for the Tipper rails | 155d | 2026-09-07 | 2027-03-05 | 1044FS+14d |  |  | 2026-09-07 | 2027-03-05 | 155d | 2d |  |  |
| 1046 | 1.5.1.1.9.1.6 | RCC work for Structural Shed | 90d | 2026-08-21 | 2026-12-03 | 1044 |  |  | 2026-08-21 | 2026-12-03 | 90d | 0d |  | cu.m. |
| 1047 | 1.5.1.1.9.1.7 | Bolt Lift for Structural Shed | 67d | 2026-10-21 | 2027-01-06 | 1046SS+52d |  |  | 2026-10-21 | 2027-01-06 | 67d | 0d |  | cu.m. |

| ID | WBS | Task | Duration | Start | Finish | Predecessors | Complete | Remaining | Baseline start | Baseline finish | Baseline duration | Total slack | Free slack | Text1 |
| --- | --- | --- | --- | --- | --- | --- | --- | --- | --- | --- | --- | --- | --- | --- |
| 1048 | 1.5.1.1.9.2 | **Structural Steel and Sheeting Work** | 161d | 2026-12-04 | 2027-06-08 |  |  |  | 2026-12-04 | 2027-06-08 | 161d | 16d |  |  |
| 1049 | 1.5.1.1.9.2.1 | Supply of Fabricated Structure | 37d | 2026-12-04 | 2027-01-15 | 297SS+120d |  |  | 2026-12-04 | 2027-01-15 | 37d | 16d |  |  |
| 1050 | 1.5.1.1.9.2.2 | Erection of Structural Platform | 86d | 2027-01-07 | 2027-04-16 | 1047, 1049SS+13d |  |  | 2027-01-07 | 2027-04-16 | 86d | 0d |  | mt. |
| 1051 | 1.5.1.1.9.2.3 | Supply of Sheeting Material | 28d | 2027-02-02 | 2027-03-05 | 300SS+185d |  |  | 2027-02-02 | 2027-03-05 | 28d | 122d | 0d |  |
| 1052 | 1.5.1.1.9.2.4 | Sheeting and painting | 82d | 2027-03-06 | 2027-06-08 | 1050SS+45d, 1051 |  |  | 2027-03-06 | 2027-06-08 | 82d | 122d | 41d |  |
| 1053 | 1.5.1.1.9.2.5 | Supply and Erection of Space Frame Structure | 100d | 2027-01-07 | 2027-05-03 | 1047 |  |  | 2027-01-07 | 2027-05-03 | 100d | 4d |  |  |
| 1054 | 1.5.1.1.9.3 | **Mechanical Erection** | 201d | 2027-03-09 | 2027-10-27 |  |  |  | 2027-03-09 | 2027-10-27 | 201d | 0d |  |  |
| 1055 | 1.5.1.1.9.3.1 | Erection Technological Structure | 52d | 2027-03-09 | 2027-05-07 | 1050SS+52d, 1045, 1053FF |  |  | 2027-03-09 | 2027-05-07 | 52d | 0d |  | mt. |
| 1056 | 1.5.1.1.9.3.2 | Erection of Apron Feeder (1250TPH) | 65d | 2027-05-08 | 2027-07-21 | 1055, 1045 |  |  | 2027-05-08 | 2027-07-21 | 65d | 0d |  | no |
| 1057 | 1.5.1.1.9.3.3 | Erection of Hydraulic Gates | 30d | 2027-05-22 | 2027-06-25 | 1056SS+13d, 383FS+26d |  |  | 2027-05-22 | 2027-06-25 | 30d | 0d |  | no |
| 1058 | 1.5.1.1.9.3.4 | Erection of Motorised Tripper | 52d | 2027-06-11 | 2027-08-10 | 1056SS+26d, 1057FS-13d, 1047, 347FS+52d, 1045 |  |  | 2027-06-11 | 2027-08-10 | 52d | 0d |  | no |
| 1059 | 1.5.1.1.9.3.5 | Erection of Idler Assly of Conveyor 2011 | 26d | 2027-05-15 | 2027-06-12 | 1055FS+6d |  |  | 2027-05-15 | 2027-06-12 | 26d | 48d | 0d |  |
| 1060 | 1.5.1.1.9.3.6 | Erection of Pulleys of Conveyor 2011 | 26d | 2027-06-14 | 2027-07-13 | 1059 |  |  | 2027-06-14 | 2027-07-13 | 26d | 48d | 0d |  |
| 1061 | 1.5.1.1.9.3.7 | Erection of GearBox & Coupling of Conveyor 2011 | 20d | 2027-07-14 | 2027-08-05 | 1060 |  |  | 2027-07-14 | 2027-08-05 | 20d | 48d | 0d |  |
| 1062 | 1.5.1.1.9.3.8 | Erection of Belting of Conveyor 2011 | 30d | 2027-08-30 | 2027-10-02 | 1061FS+20d |  |  | 2027-08-30 | 2027-10-02 | 30d | 48d |  |  |
| 1063 | 1.5.1.1.9.3.9 | Erection of Elevator | 26d | 2027-07-27 | 2027-08-25 | 419FS+26d, 1052 |  |  | 2027-07-27 | 2027-08-25 | 26d | 81d |  |  |
| 1064 | 1.5.1.1.9.3.10 | Erection of Utility equipment like Fire Fighting, Dust Suppression System etc | 130d | 2027-05-29 | 2027-10-27 | 449FS+13d, 455FS+13d, 461FS+13d, 105FS+13d |  |  | 2027-05-29 | 2027-10-27 | 130d | 27d |  |  |
| 1065 | 1.5.1.1.9.4 | **Electrical Erection** | 120d | 2027-07-12 | 2027-11-27 |  |  |  | 2027-07-12 | 2027-11-27 | 120d | 0d |  |  |
| 1066 | 1.5.1.1.9.4.1 | Erection of Electrical Equipments | 120d | 2027-07-12 | 2027-11-27 | 1058FS-26d, 664, 104FS+78d |  |  | 2027-07-12 | 2027-11-27 | 120d | 0d |  | lot |
| 1067 | 1.5.1.1.10 | **Conveyor 2015** | 407d | 2026-04-01 A | 2027-07-17 |  | 2% | 400.34d | 2026-04-01 | 2027-07-17 | 407d | 126d |  |  |
| 1068 | 1.5.1.1.10.1 | **Civil Work** | 283d | 2026-04-01 A | 2027-02-24 |  | 3% | 274.9d | 2026-04-01 | 2027-02-24 | 283d | 140d |  |  |
| 1069 | 1.5.1.1.10.1.1 | Availability of clearence from NMDC | 16d | 2026-04-01 | 2026-04-18 | 1041SS |  |  | 2026-04-01 | 2026-04-18 | 16d | 6.5d | 0d |  |
| 1070 | 1.5.1.1.10.1.2 | Preparation of Approach Road | 13d | 2026-04-20 A | 2026-05-04 | 1069 | 50% | 6.5d | 2026-04-20 | 2026-05-04 | 13d | 49d | 40d |  |
| 1071 | 1.5.1.1.10.1.3 | Earth work in excavation and filling | 40d | 2026-06-20 | 2026-08-05 | 1024, 1070 |  |  | 2026-06-20 | 2026-08-05 | 40d | 9d | 0d |  |
| 1072 | 1.5.1.1.10.1.4 | Dressing, Levelling and PCC for Tunnel | 13d | 2026-08-25 | 2026-09-08 | 1071, 108FS+78d |  |  | 2026-08-25 | 2026-09-08 | 13d | 140d | 0d |  |
| 1073 | 1.5.1.1.10.1.5 | Civil work for Tunnel | 145d | 2026-09-09 | 2027-02-24 | 1072 |  |  | 2026-09-09 | 2027-02-24 | 145d | 140d | 0d |  |

| ID | WBS | Task | Duration | Start | Finish | Predecessors | Baseline start | Baseline finish | Baseline duration | Total slack | Free slack | Text11 |
| --- | --- | --- | --- | --- | --- | --- | --- | --- | --- | --- | --- | --- |
| 1074 | 1.5.1.1.10.2 | **Mechanical Erection** | 98d | 2027-02-25 | 2027-06-17 |  | 2027-02-25 | 2027-06-17 | 98d | 140d |  |  |
| 1075 | 1.5.1.1.10.2.1 | Erection of Technological Structure | 30d | 2027-02-25 | 2027-03-31 | 1073 | 2027-02-25 | 2027-03-31 | 30d | 140d | 0d |  |
| 1076 | 1.5.1.1.10.2.2 | Erection of Idler Assly | 20d | 2027-04-01 | 2027-04-23 | 1075 | 2027-04-01 | 2027-04-23 | 20d | 155d | 0d |  |
| 1077 | 1.5.1.1.10.2.3 | Erection of Pulleys | 10d | 2027-04-24 | 2027-05-05 | 1076 | 2027-04-24 | 2027-05-05 | 10d | 155d | 3d |  |
| 1078 | 1.5.1.1.10.2.4 | Erection of Gear Box & Coupling | 15d | 2027-05-10 | 2027-05-25 | 1077, 377FS+26d | 2027-05-10 | 2027-05-25 | 15d | 152d | 0d |  |
| 1079 | 1.5.1.1.10.2.5 | Erection of Belting | 20d | 2027-05-26 | 2027-06-17 | 1078 | 2027-05-26 | 2027-06-17 | 20d | 152d | 26d |  |
| 1080 | 1.5.1.1.10.3 | **Electrical Erection** | 60d | 2027-05-11 | 2027-07-17 |  | 2027-05-11 | 2027-07-17 | 60d | 126d |  |  |
| 1081 | 1.5.1.1.10.3.1 | Erection of Conv. Motors | 15d | 2027-05-26 | 2027-06-11 | 1078 | 2027-05-26 | 2027-06-11 | 15d | 157d | 31d |  |
| 1082 | 1.5.1.1.10.3.2 | Erection of Electrical Equipments | 60d | 2027-05-11 | 2027-07-17 | 664, 1075FS+20d | 2027-05-11 | 2027-07-17 | 60d | 126d | 0d |  |
| 1083 | 1.5.1.1.11 | **Transfer House TH3** | 365d | 2026-06-15 | 2027-08-12 |  | 2026-06-15 | 2027-08-12 | 365d | 39d |  |  |
| 1084 | 1.5.1.1.11.1 | **Civil Work** | 181d | 2026-06-15 | 2027-01-11 |  | 2026-06-15 | 2027-01-11 | 181d | 39d |  |  |
| 1085 | 1.5.1.1.11.1.1 | E/W in excavation | 15d | 2026-06-15 | 2026-07-01 | 1071SS-5d | 2026-06-15 | 2026-07-01 | 15d | 39d | 0d | 4fs+400 |
| 1086 | 1.5.1.1.11.1.2 | Dressing, Levelling and P.C.C. | 10d | 2026-07-02 | 2026-07-13 | 1085, 111FS+13d | 2026-07-02 | 2026-07-13 | 10d | 118d | 0d |  |
| 1087 | 1.5.1.1.11.1.3 | RCC work in Foundation | 52d | 2026-07-14 | 2026-09-11 | 1086 | 2026-07-14 | 2026-09-11 | 52d | 118d | 0d |  |
| 1088 | 1.5.1.1.11.1.4 | RCC work in Pedestal | 52d | 2026-09-12 | 2026-11-11 | 1087 | 2026-09-12 | 2026-11-11 | 52d | 118d | 0d |  |
| 1089 | 1.5.1.1.11.1.5 | Bolt Lift | 52d | 2026-11-12 | 2027-01-11 | 1088 | 2026-11-12 | 2027-01-11 | 52d | 118d | 0d |  |
| 1090 | 1.5.1.1.11.2 | **Structural and Sheeting Work** | 80d | 2026-12-16 | 2027-03-18 |  | 2026-12-16 | 2027-03-18 | 80d | 121d |  |  |
| 1091 | 1.5.1.1.11.2.1 | Supply of Sheeting Material | 22d | 2027-01-21 | 2027-02-15 | 300SS+175d | 2027-01-21 | 2027-02-15 | 22d | 151d | 0d |  |
| 1092 | 1.5.1.1.11.2.2 | Supply of Fabricated Structure | 20d | 2026-12-16 | 2027-01-07 | 297SS+130d, 112FS+52d | 2026-12-16 | 2027-01-07 | 20d | 121d | 3d |  |
| 1093 | 1.5.1.1.11.2.3 | Erection of Structural Steel | 30d | 2027-01-12 | 2027-02-15 | 1089, 1092 | 2027-01-12 | 2027-02-15 | 30d | 118d | 0d |  |
| 1094 | 1.5.1.1.11.2.4 | Sheeting and painting | 27d | 2027-02-16 | 2027-03-18 | 1091, 1093 | 2027-02-16 | 2027-03-18 | 27d | 151d | 37d |  |
| 1095 | 1.5.1.1.11.3 | **Mechanical Erection** | 109d | 2027-02-16 | 2027-06-21 |  | 2027-02-16 | 2027-06-21 | 109d | 114d |  |  |
| 1096 | 1.5.1.1.11.3.1 | Erection of Technological Structure | 60d | 2027-02-16 | 2027-04-26 | 1093 | 2027-02-16 | 2027-04-26 | 60d | 118d | 4d |  |
| 1097 | 1.5.1.1.11.3.2 | Erection of Mechanical Equipment | 45d | 2027-05-01 | 2027-06-21 | 1096, 413FS+13d, 1094 | 2027-05-01 | 2027-06-21 | 45d | 114d | 0d |  |

| ID | WBS | Task | Duration | Start | Finish | Predecessors | Complete | Remaining | Baseline start | Baseline finish | Baseline duration | Total slack | Free slack |
| --- | --- | --- | --- | --- | --- | --- | --- | --- | --- | --- | --- | --- | --- |
| 1098 | 1.5.1.1.11.4 | **Electrical Erection** | 45d | 2027-06-22 | 2027-08-12 |  |  |  | 2027-06-22 | 2027-08-12 | 45d | 114d |  |
| 1099 | 1.5.1.1.11.4.1 | Erection of Electrical Equipments | 45d | 2027-06-22 | 2027-08-12 | 1097, 664 |  |  | 2027-06-22 | 2027-08-12 | 45d | 114d | 0d |
| 1100 | 1.5.1.1.12 | **Transfer House TH4** | 425d | 2026-07-02 | 2027-11-08 |  |  |  | 2026-07-02 | 2027-11-08 | 425d | 39d |  |
| 1101 | 1.5.1.1.12.1 | **Civil Work** | 206d | 2026-07-02 | 2027-02-26 |  |  |  | 2026-07-02 | 2027-02-26 | 206d | 39d |  |
| 1102 | 1.5.1.1.12.1.1 | E/W in excavation | 20d | 2026-07-02 | 2026-07-24 | 1085 |  |  | 2026-07-02 | 2026-07-24 | 20d | 39d | 0d |
| 1103 | 1.5.1.1.12.1.2 | Dressing, Levelling and P.C.C. | 14d | 2026-07-25 | 2026-08-10 | 1102, 115FS+13d |  |  | 2026-07-25 | 2026-08-10 | 14d | 39d | 0d |
| 1104 | 1.5.1.1.12.1.3 | RCC work in Foundation | 78d | 2026-08-11 | 2026-11-09 | 1103 |  |  | 2026-08-11 | 2026-11-09 | 78d | 39d | 0d |
| 1105 | 1.5.1.1.12.1.4 | RCC work in Super Structure | 78d | 2026-10-20 | 2027-01-18 | 1104FS-18d |  |  | 2026-10-20 | 2027-01-18 | 78d | 39d | 0d |
| 1106 | 1.5.1.1.12.1.5 | Bolt Lift | 52d | 2026-12-29 | 2027-02-26 | 1105FS-18d |  |  | 2026-12-29 | 2027-02-26 | 52d | 39d | 0d |
| 1107 | 1.5.1.1.12.2 | **Structural and Sheeting Work** | 69d | 2027-02-27 | 2027-05-17 |  |  |  | 2027-02-27 | 2027-05-17 | 69d | 39d |  |
| 1108 | 1.5.1.1.12.2.1 | Supply and Erection of Roof Structure | 9d | 2027-02-27 | 2027-03-09 | 297SS+26d, 300SS+22d, 1106, 116FS+52d |  |  | 2027-02-27 | 2027-03-09 | 9d | 39d | 0d |
| 1109 | 1.5.1.1.12.2.2 | Erection of Roof Sheeting | 60d | 2027-03-10 | 2027-05-17 | 1108 |  |  | 2027-03-10 | 2027-05-17 | 60d | 39d | 0d |
| 1110 | 1.5.1.1.12.3 | **Mechanical Erection** | 105d | 2027-05-18 | 2027-09-16 |  |  |  | 2027-05-18 | 2027-09-16 | 105d | 39d |  |
| 1111 | 1.5.1.1.12.3.1 | Erection of Technological Structure | 60d | 2027-05-18 | 2027-07-26 | 1109 |  |  | 2027-05-18 | 2027-07-26 | 60d | 39d | 0d |
| 1112 | 1.5.1.1.12.3.2 | Erection of Mechanical Equipment | 45d | 2027-07-27 | 2027-09-16 | 1111, 413 |  |  | 2027-07-27 | 2027-09-16 | 45d | 39d | 0d |
| 1113 | 1.5.1.1.12.4 | **Electrical Erection** | 45d | 2027-09-17 | 2027-11-08 |  |  |  | 2027-09-17 | 2027-11-08 | 45d | 39d |  |
| 1114 | 1.5.1.1.12.4.1 | Erection of Electrical Equipment | 45d | 2027-09-17 | 2027-11-08 | 1112, 664 |  |  | 2027-09-17 | 2027-11-08 | 45d | 39d | 0d |
| 1115 | 1.5.1.1.13 | **Conveyor 2016A** | 500d | 2026-04-01 A | 2027-11-03 |  | 9% | 454.11d | 2026-04-01 | 2027-11-03 | 500d | 13d |  |
| 1116 | 1.5.1.1.13.1 | **Civil Work** | 232d | 2026-04-01 A | 2026-12-26 |  | 28% | 167.2d | 2026-04-01 | 2026-12-26 | 232d | 16d |  |
| 1117 | 1.5.1.1.13.1.1 | Diversion of Pipe Line and Over Head Line | 13d | 2026-04-01 | 2026-04-15 | 3FS+315d |  |  | 2026-04-01 | 2026-04-15 | 13d | 64.8d | 0d |
| 1118 | 1.5.1.1.13.1.2 | E/W in excavation | 72d | 2026-04-16 A | 2026-07-08 | 1117 | 90% | 7.2d | 2026-04-16 | 2026-07-08 | 72d | 16d | 0d |
| 1119 | 1.5.1.1.13.1.3 | Dressing, Levelling and P.C.C. | 12d | 2026-07-09 | 2026-07-22 | 1118, 119FS+7d |  |  | 2026-07-09 | 2026-07-22 | 12d | 16d | 0d |
| 1120 | 1.5.1.1.13.1.4 | RCC work in Foundation | 45d | 2026-07-23 | 2026-09-12 | 1119 |  |  | 2026-07-23 | 2026-09-12 | 45d | 16d | 0d |
| 1121 | 1.5.1.1.13.1.5 | RCC work in Pedestal | 45d | 2026-09-14 | 2026-11-04 | 1120 |  |  | 2026-09-14 | 2026-11-04 | 45d | 16d | 0d |
| 1122 | 1.5.1.1.13.1.6 | Bolt Lift | 45d | 2026-11-05 | 2026-12-26 | 1121 |  |  | 2026-11-05 | 2026-12-26 | 45d | 16d | 0d |

| ID | WBS | Task | Duration | Start | Finish | Predecessors | Baseline start | Baseline finish | Baseline duration | Total slack | Free slack |
| --- | --- | --- | --- | --- | --- | --- | --- | --- | --- | --- | --- |
| 1123 | 1.5.1.1.13.2 | **Structural and Sheeting Work** | 91d | 2026-11-11 | 2027-02-24 |  | 2026-11-11 | 2027-02-24 | 91d | 37d |  |
| 1124 | 1.5.1.1.13.2.1 | Supply of Sheeting Material | 17d | 2026-12-26 | 2027-01-14 | 300SS+153d | 2026-12-26 | 2027-01-14 | 17d | 131d | 21d |
| 1125 | 1.5.1.1.13.2.2 | Supply of Fabricated Structure | 26d | 2026-11-11 | 2026-12-10 | 297SS+100d, 120FS+78d | 2026-11-11 | 2026-12-10 | 26d | 37d | 21d |
| 1126 | 1.5.1.1.13.2.3 | Erection of Structural Steel | 39d | 2026-12-05 | 2027-01-19 | 1122SS+26d, 1125SS | 2026-12-05 | 2027-01-19 | 39d | 16d | 0d |
| 1127 | 1.5.1.1.13.2.4 | Sheeting and painting | 31d | 2027-01-20 | 2027-02-24 | 1126, 1124SS | 2027-01-20 | 2027-02-24 | 31d | 110d | 44d |
| 1128 | 1.5.1.1.13.3 | **Mechanical Erection** | 195d | 2027-01-20 | 2027-09-02 |  | 2027-01-20 | 2027-09-02 | 195d | 16d |  |
| 1129 | 1.5.1.1.13.3.1 | Erection of Technological Structure | 75d | 2027-01-20 | 2027-04-16 | 1126 | 2027-01-20 | 2027-04-16 | 75d | 16d | 0d |
| 1130 | 1.5.1.1.13.3.2 | Erection of Idler Assly | 45d | 2027-04-17 | 2027-06-07 | 1129, 1127 | 2027-04-17 | 2027-06-07 | 45d | 66d | 0d |
| 1131 | 1.5.1.1.13.3.3 | Erection of Pulleys | 25d | 2027-06-08 | 2027-07-06 | 1130 | 2027-06-08 | 2027-07-06 | 25d | 66d | 0d |
| 1132 | 1.5.1.1.13.3.4 | Erection of GearBox & Coupling | 20d | 2027-07-07 | 2027-07-29 | 1131, 377FS+26d | 2027-07-07 | 2027-07-29 | 20d | 66d | 0d |
| 1133 | 1.5.1.1.13.3.5 | Erection of Belting | 30d | 2027-07-30 | 2027-09-02 | 1132 | 2027-07-30 | 2027-09-02 | 30d | 66d | 53d |
| 1134 | 1.5.1.1.13.4 | **Electrical Erection** | 143d | 2027-05-21 | 2027-11-03 |  | 2027-05-21 | 2027-11-03 | 143d | 13d |  |
| 1135 | 1.5.1.1.13.4.1 | Erection of Conv. Motors | 26d | 2027-05-21 | 2027-06-19 | 1129FS+30d | 2027-05-21 | 2027-06-19 | 26d | 130d | 117d |
| 1136 | 1.5.1.1.13.4.2 | Erection of Electrical Equipments | 140d | 2027-05-25 | 2027-11-03 | 664FS+13d, 1129FS+30d | 2027-05-25 | 2027-11-03 | 140d | 13d | 0d |
| 1137 | 1.5.1.1.14 | **Transfer House TH4A** | 372d | 2026-05-22 | 2027-07-28 |  | 2026-05-22 | 2027-07-28 | 372d | 32d |  |
| 1138 | 1.5.1.1.14.1 | **Civil Work** | 157d | 2026-05-22 | 2026-11-20 |  | 2026-05-22 | 2026-11-20 | 157d | 32d |  |
| 1139 | 1.5.1.1.14.1.1 | E/W in excavation | 13d | 2026-05-22 | 2026-06-05 | 51FS+230d | 2026-05-22 | 2026-06-05 | 13d | 32d | 0d |
| 1140 | 1.5.1.1.14.1.2 | RCC work in Foundation | 60d | 2026-06-11 | 2026-08-19 | 1139, 123FS+13d | 2026-06-11 | 2026-08-19 | 60d | 146d | 0d |
| 1141 | 1.5.1.1.14.1.3 | RCC work in Pedestal | 40d | 2026-08-20 | 2026-10-05 | 1140 | 2026-08-20 | 2026-10-05 | 40d | 146d | 0d |
| 1142 | 1.5.1.1.14.1.4 | Bolt Lift | 40d | 2026-10-06 | 2026-11-20 | 1141 | 2026-10-06 | 2026-11-20 | 40d | 146d | 0d |
| 1143 | 1.5.1.1.14.2 | **Structural and Sheeting Work** | 70d | 2026-11-02 | 2027-01-21 |  | 2026-11-02 | 2027-01-21 | 70d | 147d |  |
| 1144 | 1.5.1.1.14.2.1 | Supply of Sheeting | 25d | 2026-11-02 | 2026-11-30 | 300SS+106d | 2026-11-02 | 2026-11-30 | 25d | 164d | 17d |
| 1145 | 1.5.1.1.14.2.2 | Supply of Fabricated Structure | 13d | 2026-11-13 | 2026-11-28 | 297SS+26d, 124FS+156d | 2026-11-13 | 2026-11-28 | 13d | 152.25d | 6.25d |
| 1146 | 1.5.1.1.14.2.3 | Erection of Structural Steel | 26d | 2026-11-21 | 2026-12-21 | 1142, 1145SS | 2026-11-21 | 2026-12-21 | 26d | 146d | 0d |
| 1147 | 1.5.1.1.14.2.4 | Sheeting and painting | 27d | 2026-12-22 | 2027-01-21 | 1146, 1144SS+26d | 2026-12-22 | 2027-01-21 | 27d | 147d | 20d |

| ID | WBS | Task | Duration | Start | Finish | Predecessors | Baseline start | Baseline finish | Baseline duration | Total slack | Free slack |
| --- | --- | --- | --- | --- | --- | --- | --- | --- | --- | --- | --- |
| 1148 | 1.5.1.1.14.3 | **Mechanical Erection** | 144d | 2026-12-22 | 2027-06-05 |  | 2026-12-22 | 2027-06-05 | 144d | 127d |  |
| 1149 | 1.5.1.1.14.3.1 | Erection of Technological Structure | 60d | 2026-12-22 | 2027-03-01 | 1146 | 2026-12-22 | 2027-03-01 | 60d | 146d | 19d |
| 1150 | 1.5.1.1.14.3.2 | Erection of Mechanical Equipment | 45d | 2027-04-16 | 2027-06-05 | 1149FS+20d, 413, 1147FS+52d | 2027-04-16 | 2027-06-05 | 45d | 127d | 0d |
| 1151 | 1.5.1.1.14.4 | **Electrical Erection** | 45d | 2027-06-07 | 2027-07-28 |  | 2027-06-07 | 2027-07-28 | 45d | 127d |  |
| 1152 | 1.5.1.1.14.4.1 | Erection of Electrical Equipments | 45d | 2027-06-07 | 2027-07-28 | 1150, 664 | 2027-06-07 | 2027-07-28 | 45d | 127d | 0d |
| 1153 | 1.5.1.1.15 | **Conveyor 2016B** | 410d | 2026-07-22 | 2027-11-10 |  | 2026-07-22 | 2027-11-10 | 410d | 32d |  |
| 1154 | 1.5.1.1.15.1 | **Civil Work** | 166d | 2026-07-22 | 2027-01-30 |  | 2026-07-22 | 2027-01-30 | 166d | 32d |  |
| 1155 | 1.5.1.1.15.1.1 | E/W in excavation | 39d | 2026-07-22 | 2026-09-04 | 1139SS+52d | 2026-07-22 | 2026-09-04 | 39d | 32d | 0d |
| 1156 | 1.5.1.1.15.1.2 | Dressing, Levelling and P.C.C. | 15d | 2026-09-05 | 2026-09-22 | 1155, 127FS+26d | 2026-09-05 | 2026-09-22 | 15d | 32d | 0d |
| 1157 | 1.5.1.1.15.1.3 | RCC work in Foundation | 52d | 2026-09-23 | 2026-11-21 | 1156 | 2026-09-23 | 2026-11-21 | 52d | 32d | 0d |
| 1158 | 1.5.1.1.15.1.4 | RCC work in Pedestal | 30d | 2026-11-23 | 2026-12-26 | 1157 | 2026-11-23 | 2026-12-26 | 30d | 32d | 0d |
| 1159 | 1.5.1.1.15.1.5 | Bolt Lift | 30d | 2026-12-28 | 2027-01-30 | 1158 | 2026-12-28 | 2027-01-30 | 30d | 32d | 0d |
| 1160 | 1.5.1.1.15.2 | **Structural and Sheeting Work** | 141d | 2026-11-16 | 2027-04-28 |  | 2026-11-16 | 2027-04-28 | 141d | 46d |  |
| 1161 | 1.5.1.1.15.2.1 | Supply of Sheeting Material | 17d | 2027-02-22 | 2027-03-12 | 300SS+202d | 2027-02-22 | 2027-03-12 | 17d | 93d | 0d |
| 1162 | 1.5.1.1.15.2.2 | Supply of Fabricated Structure | 24d | 2026-11-16 | 2026-12-12 | 297SS+104d, 128FS+52d | 2026-11-16 | 2026-12-12 | 24d | 46d | 14d |
| 1163 | 1.5.1.1.15.2.3 | Erection of Structural Steel | 39d | 2027-02-01 | 2027-03-17 | 1159, 1162SS+52d | 2027-02-01 | 2027-03-17 | 39d | 32d | 0d |
| 1164 | 1.5.1.1.15.2.4 | Sheeting and painting | 31d | 2027-03-24 | 2027-04-28 | 1163, 1161SS+26d | 2027-03-24 | 2027-04-28 | 31d | 93d | 21d |
| 1165 | 1.5.1.1.15.3 | **Mechanical Erection** | 165d | 2027-03-18 | 2027-09-24 |  | 2027-03-18 | 2027-09-24 | 165d | 32d |  |
| 1166 | 1.5.1.1.15.3.1 | Erection of Technological Structure | 45d | 2027-03-18 | 2027-05-08 | 1163 | 2027-03-18 | 2027-05-08 | 45d | 32d | 0d |
| 1167 | 1.5.1.1.15.3.2 | Erection of Idler Assly | 45d | 2027-05-10 | 2027-06-29 | 1166 | 2027-05-10 | 2027-06-29 | 45d | 87d | 15d |
| 1168 | 1.5.1.1.15.3.3 | Erection of Pulleys | 25d | 2027-06-12 | 2027-07-10 | 1166FS+30d | 2027-06-12 | 2027-07-10 | 25d | 32d | 0d |
| 1169 | 1.5.1.1.15.3.4 | Erection of GearBox & Coupling | 20d | 2027-07-12 | 2027-08-03 | 1168, 377FS+26d | 2027-07-12 | 2027-08-03 | 20d | 72d | 0d |
| 1170 | 1.5.1.1.15.3.5 | Erection of Belting | 30d | 2027-08-21 | 2027-09-24 | 1169FS+15d, 1164FS+78d, 1167FS+30d | 2027-08-21 | 2027-09-24 | 30d | 72d | 40d |
| 1171 | 1.5.1.1.15.4 | **Electrical Erection** | 75d | 2027-08-16 | 2027-11-10 |  | 2027-08-16 | 2027-11-10 | 75d | 32d |  |
| 1172 | 1.5.1.1.15.4.1 | Erection of Conv. Motors | 15d | 2027-08-16 | 2027-09-01 | 1168FS+30d | 2027-08-16 | 2027-09-01 | 15d | 32d | 0d |
| 1173 | 1.5.1.1.15.4.2 | Erection of Electrical Equipments | 60d | 2027-09-02 | 2027-11-10 | 1172 | 2027-09-02 | 2027-11-10 | 60d | 32d | 0d |

| ID | WBS | Task | Duration | Start | Finish | Predecessors | Baseline start | Baseline finish | Baseline duration | Total slack | Free slack | Constraint |
| --- | --- | --- | --- | --- | --- | --- | --- | --- | --- | --- | --- | --- |
| 1174 | 1.5.1.1.16 | **Transfer House TH5** | 356d | 2026-06-22 | 2027-08-09 |  | 2026-06-22 | 2027-08-09 | 356d | 14d |  |  |
| 1175 | 1.5.1.1.16.1 | **Civil Work** | 127d | 2026-06-22 | 2026-11-16 |  | 2026-06-22 | 2026-11-16 | 127d | 14d |  |  |
| 1176 | 1.5.1.1.16.1.1 | E/W in excavation | 15d | 2026-06-22 | 2026-07-08 | 51FS+256d | 2026-06-22 | 2026-07-08 | 15d | 14d | 0d |  |
| 1177 | 1.5.1.1.16.1.2 | RCC work in Foundation | 52d | 2026-07-09 | 2026-09-07 | 1176, 131FS+26d | 2026-07-09 | 2026-09-07 | 52d | 140d | 0d |  |
| 1178 | 1.5.1.1.16.1.3 | RCC work in Pedestal | 30d | 2026-09-08 | 2026-10-12 | 1177 | 2026-09-08 | 2026-10-12 | 30d | 140d | 0d |  |
| 1179 | 1.5.1.1.16.1.4 | Bolt Lift | 30d | 2026-10-13 | 2026-11-16 | 1178 | 2026-10-13 | 2026-11-16 | 30d | 140d | 0d |  |
| 1180 | 1.5.1.1.16.2 | **Structural and Sheeting Work** | 80d | 2026-10-16 | 2027-01-16 |  | 2026-10-16 | 2027-01-16 | 80d | 167d |  |  |
| 1181 | 1.5.1.1.16.2.1 | Supply of Sheeting Material | 13d | 2026-11-10 | 2026-11-24 | 300SS+113d | 2026-11-10 | 2026-11-24 | 13d | 173d | 6d |  |
| 1182 | 1.5.1.1.16.2.2 | Supply of Fabricated Structure | 26d | 2026-10-16 | 2026-11-14 | 297SS+78d, 132FS+52d | 2026-10-16 | 2026-11-14 | 26d | 167d | 27d |  |
| 1183 | 1.5.1.1.16.2.3 | Erection of Structural Steel | 26d | 2026-11-17 | 2026-12-16 | 1179, 1182SS | 2026-11-17 | 2026-12-16 | 26d | 140d | 0d |  |
| 1184 | 1.5.1.1.16.2.4 | Sheeting and painting | 27d | 2026-12-17 | 2027-01-16 | 1183, 1181SS+26d | 2026-12-17 | 2027-01-16 | 27d | 167d | 50d |  |
| 1185 | 1.5.1.1.16.3 | **Mechanical Erection** | 123d | 2027-01-21 | 2027-06-11 |  | 2027-01-21 | 2027-06-11 | 123d | 117d |  |  |
| 1186 | 1.5.1.1.16.3.1 | Erection of Technological Structure | 50d | 2027-01-21 | 2027-03-19 | 1183FS+30d | 2027-01-21 | 2027-03-19 | 50d | 140d | 23d |  |
| 1187 | 1.5.1.1.16.3.2 | Erection of Mechanical Equipment | 50d | 2027-04-16 | 2027-06-11 | 1186, 413, 1184FS+26d | 2027-04-16 | 2027-06-11 | 50d | 117d | 0d |  |
| 1188 | 1.5.1.1.16.4 | **Electrical Erection** | 50d | 2027-06-12 | 2027-08-09 |  | 2027-06-12 | 2027-08-09 | 50d | 117d |  |  |
| 1189 | 1.5.1.1.16.4.1 | Erection of Electrical Equipments | 50d | 2027-06-12 | 2027-08-09 | 1187 | 2027-06-12 | 2027-08-09 | 50d | 117d | 0d |  |
| 1190 | 1.5.1.1.17 | **Conveyor 2017** | 463d | 2026-05-12 | 2027-11-01 |  | 2026-05-12 | 2027-11-01 | 463d | 25d |  |  |
| 1191 | 1.5.1.1.17.1 | **Civil Work** | 184d | 2026-05-22 | 2026-12-22 |  | 2026-05-22 | 2026-12-22 | 184d | 25d |  |  |
| 1192 | 1.5.1.1.17.1.1 | E/W in excavation | 30d | 2026-05-22 | 2026-06-25 | 1176SS-26d | 2026-05-22 | 2026-06-25 | 30d | 25d | 0d |  |
| 1193 | 1.5.1.1.17.1.2 | Dressing, Levelling and P.C.C. | 22d | 2026-06-26 | 2026-07-21 | 1192, 135FS+13d | 2026-06-26 | 2026-07-21 | 22d | 25d | 0d |  |
| 1194 | 1.5.1.1.17.1.3 | RCC work in Foundation | 52d | 2026-07-22 | 2026-09-19 | 1193 | 2026-07-22 | 2026-09-19 | 52d | 25d | 0d |  |
| 1195 | 1.5.1.1.17.1.4 | RCC work in Pedestal | 40d | 2026-09-21 | 2026-11-05 | 1194 | 2026-09-21 | 2026-11-05 | 40d | 25d | 0d |  |
| 1196 | 1.5.1.1.17.1.5 | Bolt Lift | 40d | 2026-11-06 | 2026-12-22 | 1195 | 2026-11-06 | 2026-12-22 | 40d | 25d | 0d |  |
| 1197 | 1.5.1.1.17.2 | **Structural and Sheeting Work** | 263d | 2026-05-12 | 2027-03-13 |  | 2026-05-12 | 2027-03-13 | 263d | 30d |  |  |
| 1198 | 1.5.1.1.17.2.1 | Supply of Sheeting Material | 17d | 2027-01-21 | 2027-02-09 | 300SS+175d | 2027-01-21 | 2027-02-09 | 17d | 155d | 1d |  |
| 1199 | 1.5.1.1.17.2.2 | Supply of Fabricated Structure | 26d | 2026-11-16 | 2026-12-15 | 297SS+104d, 136FS+104d | 2026-11-16 | 2026-12-15 | 26d | 57d | 32d |  |
| 1200 | 1.5.1.1.17.2.3 | Diversion of Over Head Line | 13d | 2026-05-12 | 2026-05-26 | 3FS+350d | 2026-05-12 | 2026-05-26 | 13d | 30d | 0d | finish no earlier than 2026-02-28 |
| 1201 | 1.5.1.1.17.2.4 | Erection of Structural Steel | 39d | 2026-12-23 | 2027-02-05 | 1196, 1199SS, 1200 | 2026-12-23 | 2027-02-05 | 39d | 25d | 0d |  |
| 1202 | 1.5.1.1.17.2.5 | Sheeting and painting | 31d | 2027-02-06 | 2027-03-13 | 1201, 1198SS+13d | 2027-02-06 | 2027-03-13 | 31d | 154d | 38d |  |

| ID | WBS | Task | Duration | Start | Finish | Predecessors | Baseline start | Baseline finish | Baseline duration | Total slack | Free slack |
| --- | --- | --- | --- | --- | --- | --- | --- | --- | --- | --- | --- |
| 1203 | 1.5.1.1.17.3 | **Mechanical Eretion** | 155d | 2027-03-08 | 2027-09-02 |  | 2027-03-08 | 2027-09-02 | 155d | 25d |  |
| 1204 | 1.5.1.1.17.3.1 | Erection of Technological Structure | 50d | 2027-03-08 | 2027-05-04 | 1201FS+25d | 2027-03-08 | 2027-05-04 | 50d | 25d | 0d |
| 1205 | 1.5.1.1.17.3.2 | Erection of Idler Assly | 45d | 2027-05-27 | 2027-07-17 | 1204FS+20d, 1202FS+26d | 2027-05-27 | 2027-07-17 | 45d | 116d | 91d |
| 1206 | 1.5.1.1.17.3.3 | Erection of Pulleys | 25d | 2027-05-05 | 2027-06-01 | 1204 | 2027-05-05 | 2027-06-01 | 25d | 25d | 0d |
| 1207 | 1.5.1.1.17.3.4 | Erection of GearBox & Coupling | 20d | 2027-06-14 | 2027-07-06 | 1206FS+10d, 377FS+26d | 2027-06-14 | 2027-07-06 | 20d | 25d | 0d |
| 1208 | 1.5.1.1.17.3.5 | Erection of Belting | 30d | 2027-07-30 | 2027-09-02 | 1207FS+20d | 2027-07-30 | 2027-09-02 | 30d | 76d | 51d |
| 1209 | 1.5.1.1.17.4 | **Electrical Erection** | 101d | 2027-07-07 | 2027-11-01 |  | 2027-07-07 | 2027-11-01 | 101d | 25d |  |
| 1210 | 1.5.1.1.17.4.1 | Erection of Conv. Motors | 15d | 2027-07-07 | 2027-07-23 | 1207 | 2027-07-07 | 2027-07-23 | 15d | 25d | 0d |
| 1211 | 1.5.1.1.17.4.2 | Erection of Electrical Equipments | 86d | 2027-07-24 | 2027-11-01 | 1210 | 2027-07-24 | 2027-11-01 | 86d | 25d | 0d |
| 1212 | 1.5.1.1.18 | **Transfer House TH6A** | 380d | 2026-06-12 | 2027-08-27 |  | 2026-06-12 | 2027-08-27 | 380d | 101d |  |
| 1213 | 1.5.1.1.18.1 | **Civil Work** | 124d | 2026-06-12 | 2026-11-03 |  | 2026-06-12 | 2026-11-03 | 124d | 120d |  |
| 1214 | 1.5.1.1.18.1.1 | E/W in excavation | 12d | 2026-06-12 | 2026-06-25 | 139FS+13d | 2026-06-12 | 2026-06-25 | 12d | 120d | 0d |
| 1215 | 1.5.1.1.18.1.2 | RCC work in Foundation | 52d | 2026-06-26 | 2026-08-25 | 1214 | 2026-06-26 | 2026-08-25 | 52d | 120d | 0d |
| 1216 | 1.5.1.1.18.1.3 | RCC work in Pedestal | 30d | 2026-08-26 | 2026-09-29 | 1215 | 2026-08-26 | 2026-09-29 | 30d | 120d | 0d |
| 1217 | 1.5.1.1.18.1.4 | Bolt Lift | 30d | 2026-09-30 | 2026-11-03 | 1216 | 2026-09-30 | 2026-11-03 | 30d | 120d | 0d |
| 1218 | 1.5.1.1.18.2 | **Structural and Sheeting Work** | 62d | 2026-10-24 | 2027-01-04 |  | 2026-10-24 | 2027-01-04 | 62d | 129d |  |
| 1219 | 1.5.1.1.18.2.1 | Supply of Sheeting Material | 13d | 2026-11-12 | 2026-11-26 | 300SS+115d | 2026-11-12 | 2026-11-26 | 13d | 155d | 10d |
| 1220 | 1.5.1.1.18.2.2 | Supply of Fabricated Structure | 26d | 2026-10-24 | 2026-11-23 | 297SS+85d, 140FS+52d | 2026-10-24 | 2026-11-23 | 26d | 129d | 0d |
| 1221 | 1.5.1.1.18.2.3 | Erection of Structural Steel | 26d | 2026-11-04 | 2026-12-03 | 1217, 1220SS | 2026-11-04 | 2026-12-03 | 26d | 120d | 0d |
| 1222 | 1.5.1.1.18.2.4 | Sheeting and painting | 27d | 2026-12-04 | 2027-01-04 | 1221, 1219SS | 2026-12-04 | 2027-01-04 | 27d | 136d | 35d |
| 1223 | 1.5.1.1.18.3 | **Mechanical Erection** | 139d | 2026-12-28 | 2027-06-05 |  | 2026-12-28 | 2027-06-05 | 139d | 101d |  |
| 1224 | 1.5.1.1.18.3.1 | Erection of Technological Structure | 45d | 2026-12-28 | 2027-02-17 | 1221FS+20d | 2026-12-28 | 2027-02-17 | 45d | 120d | 19d |
| 1225 | 1.5.1.1.18.3.2 | Erection of Mechanical Equipment | 45d | 2027-04-16 | 2027-06-05 | 1224FS+30d, 413, 1222FS+52d | 2027-04-16 | 2027-06-05 | 45d | 101d | 0d |
| 1226 | 1.5.1.1.18.4 | **Electrical Erection** | 71d | 2027-06-07 | 2027-08-27 |  | 2027-06-07 | 2027-08-27 | 71d | 101d |  |
| 1227 | 1.5.1.1.18.4.1 | Erection of Electrical Equipments | 71d | 2027-06-07 | 2027-08-27 | 1225 | 2027-06-07 | 2027-08-27 | 71d | 101d | 0d |

| ID | WBS | Task | Duration | Start | Finish | Predecessors | Complete | Remaining | Baseline start | Baseline finish | Baseline duration | Total slack | Free slack | Constraint |
| --- | --- | --- | --- | --- | --- | --- | --- | --- | --- | --- | --- | --- | --- | --- |
| 1228 | 1.5.1.1.19 | **Conveyor 2018** | 514d | 2026-03-25 A | 2027-11-12 |  | 4% | 493.71d | 2026-03-25 | 2027-11-05 | 508d | 5d |  |  |
| 1229 | 1.5.1.1.19.1 | **Civil Work** | 224d | 2026-03-25 A | 2026-12-10 |  | 10% | 201.07d | 2026-03-25 | 2026-12-03 | 218d | 5d |  |  |
| 1230 | 1.5.1.1.19.1.1 | E/W in excavation | 49d | 2026-03-25 A | 2026-05-20 | 51FS+180d | 80% | 9.8d | 2026-03-25 | 2026-05-20 | 49d | 11d | 6d |  |
| 1231 | 1.5.1.1.19.1.2 | Dressing, Levelling and P.C.C. | 26d | 2026-05-28 | 2026-06-26 | 143, 1230 |  |  | 2026-05-21 | 2026-06-19 | 26d | 5d | 0d |  |
| 1232 | 1.5.1.1.19.1.3 | RCC work in Foundation | 104d | 2026-06-17 | 2026-10-15 | 1231SS+17d |  |  | 2026-06-10 | 2026-10-08 | 104d | 5d | 0d |  |
| 1233 | 1.5.1.1.19.1.4 | RCC work in Pedestal | 104d | 2026-07-17 | 2026-11-14 | 1232SS+26d |  |  | 2026-07-10 | 2026-11-07 | 104d | 5d | 0d |  |
| 1234 | 1.5.1.1.19.1.5 | Bolt Lift | 100d | 2026-08-17 | 2026-12-10 | 1233SS+26d |  |  | 2026-08-10 | 2026-12-03 | 100d | 5d | 0d |  |
| 1235 | 1.5.1.1.19.2 | **Structural and Sheeting Work** | 316d | 2026-05-27 | 2027-05-28 |  |  |  | 2026-05-27 | 2027-05-21 | 310d | 39d |  |  |
| 1236 | 1.5.1.1.19.2.1 | Supply of Sheeting Material | 21d | 2026-12-17 | 2027-01-09 | 300SS+145d |  |  | 2026-12-17 | 2027-01-09 | 21d | 60d | 21d |  |
| 1237 | 1.5.1.1.19.2.2 | Supply of Fabricated Structure | 38d | 2026-11-16 | 2026-12-29 | 297SS+104d, 144FS+78d |  |  | 2026-11-16 | 2026-12-29 | 38d | 27d | 22d |  |
| 1238 | 1.5.1.1.19.2.3 | Diversion of Over Head Line | 13d | 2026-05-27 | 2026-06-10 | 1200 |  |  | 2026-05-27 | 2026-06-10 | 13d | 162d | 157d | finish no earlier than 2025-04-11 |
| 1239 | 1.5.1.1.19.2.4 | Erection of Structural Steel | 110d | 2026-12-11 | 2027-04-17 | 1234, 1237SS, 1238 |  |  | 2026-12-04 | 2027-04-10 | 110d | 5d | 0d |  |
| 1240 | 1.5.1.1.19.2.5 | Sheeting and painting | 120d | 2027-01-11 | 2027-05-28 | 1239SS+26d, 1236SS |  |  | 2027-01-04 | 2027-05-21 | 120d | 39d | 34d |  |
| 1241 | 1.5.1.1.19.3 | **Mechanical Erection** | 200d | 2027-02-19 | 2027-10-08 |  |  |  | 2027-02-12 | 2027-10-01 | 200d | 5d |  |  |
| 1242 | 1.5.1.1.19.3.1 | Erection of Technological Structure | 78d | 2027-02-19 | 2027-05-19 | 1239SS+60d |  |  | 2027-02-12 | 2027-05-13 | 78d | 5d | 0d |  |
| 1243 | 1.5.1.1.19.3.2 | Erection of Idler Assly | 60d | 2027-04-30 | 2027-07-07 | 1242SS+60d |  |  | 2027-04-23 | 2027-06-30 | 60d | 5d | 0d |  |
| 1244 | 1.5.1.1.19.3.3 | Erection of Pulleys | 25d | 2027-05-20 | 2027-06-17 | 1242 |  |  | 2027-05-14 | 2027-06-10 | 25d | 132d | 127d |  |
| 1245 | 1.5.1.1.19.3.4 | Erection of GearBox & Coupling | 25d | 2027-07-08 | 2027-08-05 | 1243, 377, 1240 |  |  | 2027-07-01 | 2027-07-29 | 25d | 5d | 0d |  |
| 1246 | 1.5.1.1.19.3.5 | Erection of Belting | 35d | 2027-08-30 | 2027-10-08 | 1245FS+20d |  |  | 2027-08-23 | 2027-10-01 | 35d | 35d | 30d |  |
| 1247 | 1.5.1.1.19.4 | **Electrical Erection** | 85d | 2027-08-06 | 2027-11-12 |  |  |  | 2027-07-30 | 2027-11-05 | 85d | 5d |  |  |
| 1248 | 1.5.1.1.19.4.1 | Erection of Conv. Motors | 25d | 2027-08-06 | 2027-09-03 | 1245 |  |  | 2027-07-30 | 2027-08-27 | 25d | 5d | 0d |  |
| 1249 | 1.5.1.1.19.4.2 | Erection of Electrical Equipments | 60d | 2027-09-04 | 2027-11-12 | 1248 |  |  | 2027-08-28 | 2027-11-05 | 60d | 5d | 0d |  |
| 1250 | 1.5.1.1.20 | **Transfer House TH7** | 401d | 2026-06-04 | 2027-09-13 |  |  |  | 2026-06-11 | 2027-09-13 | 395d | 87d |  |  |
| 1251 | 1.5.1.1.20.1 | **Civil Work** | 156d | 2026-06-04 | 2026-12-02 |  |  |  | 2026-06-11 | 2026-12-09 | 156d | 100d |  |  |
| 1252 | 1.5.1.1.20.1.1 | E/W in excavation | 25d | 2026-06-04 | 2026-07-02 | 135FS+7d, 147 |  |  | 2026-06-11 | 2026-07-09 | 25d | 100d | 0d |  |
| 1253 | 1.5.1.1.20.1.2 | Dressing, Levelling and P.C.C. | 15d | 2026-07-03 | 2026-07-20 | 1252 |  |  | 2026-07-10 | 2026-07-27 | 15d | 100d | 0d |  |
| 1254 | 1.5.1.1.20.1.3 | RCC work in Foundation | 52d | 2026-07-21 | 2026-09-18 | 1253 |  |  | 2026-07-28 | 2026-09-25 | 52d | 100d | 0d |  |
| 1255 | 1.5.1.1.20.1.4 | RCC work in Pedestal | 52d | 2026-08-27 | 2026-10-26 | 1254FS-20d |  |  | 2026-09-03 | 2026-11-02 | 52d | 100d | 0d |  |
| 1256 | 1.5.1.1.20.1.5 | Bolt Lift | 52d | 2026-10-03 | 2026-12-02 | 1255FS-20d |  |  | 2026-10-10 | 2026-12-09 | 52d | 100d | 0d |  |

| ID | WBS | Task | Duration | Start | Finish | Predecessors | Baseline start | Baseline finish | Baseline duration | Total slack | Free slack |
| --- | --- | --- | --- | --- | --- | --- | --- | --- | --- | --- | --- |
| 1257 | 1.5.1.1.20.2 | **Structural and Sheeting Work** | 122d | 2026-11-11 | 2027-04-01 |  | 2026-11-11 | 2027-04-01 | 122d | 87d |  |
| 1258 | 1.5.1.1.20.2.1 | Supply of Sheeting Material | 22d | 2027-01-22 | 2027-02-16 | 300SS+176d | 2027-01-22 | 2027-02-16 | 22d | 87d | 0d |
| 1259 | 1.5.1.1.20.2.2 | Supply of Fabricated Structure | 20d | 2026-11-11 | 2026-12-03 | 297SS+100d, 136FS+39d | 2026-11-11 | 2026-12-03 | 20d | 119d | 19d |
| 1260 | 1.5.1.1.20.2.3 | Erection of Structural Steel | 50d | 2026-12-03 | 2027-01-29 | 1256, 1259SS | 2026-12-10 | 2027-02-05 | 50d | 100d | 13d |
| 1261 | 1.5.1.1.20.2.4 | Sheeting and painting | 40d | 2027-02-15 | 2027-04-01 | 1260, 1258SS+20d | 2027-02-15 | 2027-04-01 | 40d | 87d | 0d |
| 1262 | 1.5.1.1.20.3 | **Mechanical Erection** | 90d | 2027-03-11 | 2027-06-22 |  | 2027-03-11 | 2027-06-22 | 90d | 87d |  |
| 1263 | 1.5.1.1.20.3.1 | Erection of Technological Structure | 45d | 2027-03-11 | 2027-05-01 | 1260FS+20d, 1261FF+26d | 2027-03-11 | 2027-05-01 | 45d | 87d | 0d |
| 1264 | 1.5.1.1.20.3.2 | Erection of Mechanical Equipment | 45d | 2027-05-03 | 2027-06-22 | 1263, 413 | 2027-05-03 | 2027-06-22 | 45d | 87d | 0d |
| 1265 | 1.5.1.1.20.4 | **Electrical Erection** | 71d | 2027-06-23 | 2027-09-13 |  | 2027-06-23 | 2027-09-13 | 71d | 87d |  |
| 1266 | 1.5.1.1.20.4.1 | Erection of Electrical Equipments | 71d | 2027-06-23 | 2027-09-13 | 1264 | 2027-06-23 | 2027-09-13 | 71d | 87d | 0d |
| 1267 | 1.5.1.1.21 | **Conveyor 2019** | 489d | 2026-04-11 | 2027-11-01 |  | 2026-04-11 | 2027-11-02 | 489.2d | 30d |  |
| 1268 | 1.5.1.1.21.1 | **Civil Work** | 218d | 2026-04-11 | 2026-12-21 |  | 2026-04-11 | 2026-12-22 | 218.2d | 30d |  |
| 1269 | 1.5.1.1.21.1.1 | Diversion of Pipe Line | 20d | 2026-04-11 | 2026-05-04 | 1200FS-39d | 2026-04-11 | 2026-05-04 | 20d | 30d | 0d |
| 1270 | 1.5.1.1.21.1.2 | E/W in excavation | 26d | 2026-05-05 | 2026-06-03 | 1269 | 2026-05-05 | 2026-06-03 | 26d | 30d | 0d |
| 1271 | 1.5.1.1.21.1.3 | Dressing, Levelling and P.C.C. | 20d | 2026-06-04 | 2026-06-26 | 1270, 151FS+7d | 2026-06-04 | 2026-06-27 | 20d | 30d | 0d |
| 1272 | 1.5.1.1.21.1.4 | RCC work in Foundation | 100d | 2026-06-27 | 2026-10-21 | 1271 | 2026-06-27 | 2026-10-22 | 100d | 30d | 0d |
| 1273 | 1.5.1.1.21.1.5 | RCC work in Pedestal | 78d | 2026-08-22 | 2026-11-20 | 1272FS-52d | 2026-08-22 | 2026-11-21 | 78d | 30d | 0d |
| 1274 | 1.5.1.1.21.1.6 | Bolt Lift | 78d | 2026-09-22 | 2026-12-21 | 1273FS-52d | 2026-09-22 | 2026-12-22 | 78d | 30d | 0d |
| 1275 | 1.5.1.1.21.2 | **Structural and Sheeting Work** | 181d | 2026-10-16 | 2027-05-14 |  | 2026-10-16 | 2027-05-15 | 181.2d | 48d |  |
| 1276 | 1.5.1.1.21.2.1 | Supply of Sheeting Material | 20d | 2027-01-21 | 2027-02-12 | 300SS+175d | 2027-01-21 | 2027-02-12 | 20d | 137d | 20d |
| 1277 | 1.5.1.1.21.2.2 | Supply of Fabricated Structure | 20d | 2026-10-16 | 2026-11-07 | 297SS+78d, 152FS+39d | 2026-10-16 | 2026-11-07 | 20d | 48d | 18d |
| 1278 | 1.5.1.1.21.2.3 | Erection of Structural Steel | 85d | 2026-11-06 | 2027-02-12 | 1274SS+39d, 1277SS | 2026-11-06 | 2027-02-13 | 85d | 30d | 0d |
| 1279 | 1.5.1.1.21.2.4 | Sheeting and painting | 78d | 2027-02-13 | 2027-05-14 | 1278, 1276SS | 2027-02-13 | 2027-05-15 | 78d | 117d | 32d |
| 1280 | 1.5.1.1.21.3 | **Mechanical Erection** | 200d | 2027-01-09 | 2027-08-28 |  | 2027-01-09 | 2027-08-30 | 200d | 30d |  |
| 1281 | 1.5.1.1.21.3.1 | Erection of Technological Structure | 90d | 2027-01-09 | 2027-04-23 | 1278FS-30d | 2027-01-09 | 2027-04-24 | 90d | 30d | 0d |
| 1282 | 1.5.1.1.21.3.2 | Erection of Idler Assly | 75d | 2027-03-20 | 2027-06-14 | 1281FS-30d | 2027-03-20 | 2027-06-15 | 75d | 150d | 120d |
| 1283 | 1.5.1.1.21.3.3 | Erection of Pulleys | 25d | 2027-04-24 | 2027-05-21 | 1281 | 2027-04-24 | 2027-05-22 | 25d | 30d | 0d |
| 1284 | 1.5.1.1.21.3.4 | Erection of GearBox & Coupling | 25d | 2027-05-22 | 2027-06-19 | 1283, 377 | 2027-05-22 | 2027-06-21 | 25d | 30d | 0d |
| 1285 | 1.5.1.1.21.3.5 | Erection of Belting | 60d | 2027-06-21 | 2027-08-28 | 1284, 1279 | 2027-06-21 | 2027-08-30 | 60d | 85d | 55d |

| ID | WBS | Task | Duration | Start | Finish | Predecessors | Baseline start | Baseline finish | Baseline duration | Total slack | Free slack |
| --- | --- | --- | --- | --- | --- | --- | --- | --- | --- | --- | --- |
| 1286 | 1.5.1.1.21.4 | **Electrical Erection** | 115d | 2027-06-21 | 2027-11-01 |  | 2027-06-21 | 2027-11-02 | 115d | 30d |  |
| 1287 | 1.5.1.1.21.4.1 | Erection of Conv. Motors | 25d | 2027-06-21 | 2027-07-19 | 1284 | 2027-06-21 | 2027-07-20 | 25d | 30d | 0d |
| 1288 | 1.5.1.1.21.4.2 | Erection of Electrical Equipments | 90d | 2027-07-20 | 2027-11-01 | 1287 | 2027-07-20 | 2027-11-02 | 90d | 30d | 0d |
| 1289 | 1.5.1.1.22 | **Transfer House TH8A** | 431d | 2026-06-05 | 2027-10-19 |  | 2026-05-27 | 2027-10-19 | 439d | 56d |  |
| 1290 | 1.5.1.1.22.1 | **Civil Work** | 138d | 2026-06-05 | 2026-11-12 |  | 2026-05-27 | 2026-11-03 | 138d | 134d |  |
| 1291 | 1.5.1.1.22.1.1 | E/W in excavation | 20d | 2026-06-05 | 2026-06-27 | 155FS+7d | 2026-05-27 | 2026-06-18 | 20d | 134d | 0d |
| 1292 | 1.5.1.1.22.1.2 | Dressing, Levelling and P.C.C. | 15d | 2026-06-29 | 2026-07-15 | 1291 | 2026-06-19 | 2026-07-06 | 15d | 134d | 0d |
| 1293 | 1.5.1.1.22.1.3 | RCC work in Foundation | 65d | 2026-07-16 | 2026-09-29 | 1292 | 2026-07-07 | 2026-09-19 | 65d | 134d | 0d |
| 1294 | 1.5.1.1.22.1.4 | RCC work in Pedestal | 45d | 2026-08-31 | 2026-10-21 | 1293FS-26d | 2026-08-21 | 2026-10-12 | 45d | 134d | 0d |
| 1295 | 1.5.1.1.22.1.5 | Bolt Lift | 45d | 2026-09-22 | 2026-11-12 | 1294FS-26d | 2026-09-12 | 2026-11-03 | 45d | 134d | 0d |
| 1296 | 1.5.1.1.22.2 | **Structural and Sheeting Work** | 95d | 2026-10-07 | 2027-01-25 |  | 2026-10-07 | 2027-01-25 | 95d | 156d |  |
| 1297 | 1.5.1.1.22.2.1 | Supply of Sheeting Material | 13d | 2026-12-07 | 2026-12-21 | 300SS+136d | 2026-12-07 | 2026-12-21 | 13d | 156d | 0d |
| 1298 | 1.5.1.1.22.2.2 | Supply of Fabricated Structure | 13d | 2026-10-07 | 2026-10-21 | 297SS+70d, 163FS+39d | 2026-10-07 | 2026-10-21 | 13d | 166d | 32d |
| 1299 | 1.5.1.1.22.2.3 | Erection of Structural Steel | 30d | 2026-11-13 | 2026-12-17 | 1295, 1298SS | 2026-11-04 | 2026-12-08 | 30d | 134d | 0d |
| 1300 | 1.5.1.1.22.2.4 | Sheeting and painting | 30d | 2026-12-22 | 2027-01-25 | 1299, 1297 | 2026-12-22 | 2027-01-25 | 30d | 156d | 100d |
| 1301 | 1.5.1.1.22.3 | **Mechanical Erection** | 168d | 2026-12-30 | 2027-07-12 |  | 2026-12-21 | 2027-07-12 | 176d | 56d |  |
| 1302 | 1.5.1.1.22.3.1 | Erection of Technological Structure | 45d | 2026-12-30 | 2027-02-19 | 1299FS+10d | 2026-12-21 | 2027-02-10 | 45d | 134d | 78d |
| 1303 | 1.5.1.1.22.3.2 | Erection of Mechanical Equipment | 45d | 2027-05-21 | 2027-07-12 | 1302, 413, 389FS+26d, 1300 | 2027-05-21 | 2027-07-12 | 45d | 56d | 0d |
| 1304 | 1.5.1.1.22.4 | **Electrical Erection** | 60d | 2027-08-11 | 2027-10-19 |  | 2027-08-11 | 2027-10-19 | 60d | 56d |  |
| 1305 | 1.5.1.1.22.4.1 | Erection of Electrical Equipments | 60d | 2027-08-11 | 2027-10-19 | 1303FS+25d | 2027-08-11 | 2027-10-19 | 60d | 56d | 0d |
| 1306 | 1.5.1.1.23 | **Transfer House TH8** | 395d | 2026-06-05 | 2027-09-07 |  | 2026-06-04 | 2027-09-07 | 396d | 92d |  |
| 1307 | 1.5.1.1.23.1 | **Civil Work** | 154d | 2026-06-05 | 2026-12-01 |  | 2026-06-04 | 2026-11-30 | 154d | 113d |  |
| 1308 | 1.5.1.1.23.1.1 | E/W in excavation | 25d | 2026-06-05 | 2026-07-03 | 159FS+7d | 2026-06-04 | 2026-07-02 | 25d | 113d | 0d |
| 1309 | 1.5.1.1.23.1.2 | RCC work in Foundation | 52d | 2026-07-04 | 2026-09-02 | 1308 | 2026-07-03 | 2026-09-01 | 52d | 113d | 0d |
| 1310 | 1.5.1.1.23.1.3 | RCC work in Pedestal | 45d | 2026-08-19 | 2026-10-09 | 1309FS-13d | 2026-08-18 | 2026-10-08 | 45d | 113d | 0d |
| 1311 | 1.5.1.1.23.1.4 | Bolt Lift | 45d | 2026-10-10 | 2026-12-01 | 1310 | 2026-10-09 | 2026-11-30 | 45d | 113d | 0d |

| ID | WBS | Task | Duration | Start | Finish | Predecessors | Baseline start | Baseline finish | Baseline duration | Total slack | Free slack |
| --- | --- | --- | --- | --- | --- | --- | --- | --- | --- | --- | --- |
| 1312 | 1.5.1.1.23.2 | **Structural and Sheeting** | 110d | 2026-10-05 | 2027-02-09 |  | 2026-10-05 | 2027-02-08 | 109d | 148d |  |
| 1313 | 1.5.1.1.23.2.1 | Supply of Sheeting Material | 13d | 2026-12-23 | 2027-01-06 | 300SS+150d | 2026-12-23 | 2027-01-06 | 13d | 160d | 12d |
| 1314 | 1.5.1.1.23.2.2 | Supply of Fabricated Structure | 13d | 2026-10-05 | 2026-10-19 | 297SS+68d, 160FS+52d | 2026-10-05 | 2026-10-19 | 13d | 163d | 50d |
| 1315 | 1.5.1.1.23.2.3 | Erection of Structural Steel | 30d | 2026-12-02 | 2027-01-05 | 1311, 1314SS | 2026-12-01 | 2027-01-04 | 30d | 113d | 0d |
| 1316 | 1.5.1.1.23.2.4 | Sheeting and painting | 30d | 2027-01-06 | 2027-02-09 | 1315, 1313SS | 2027-01-05 | 2027-02-08 | 30d | 148d | 56d |
| 1317 | 1.5.1.1.23.3 | **Mechanical Erection** | 111d | 2027-01-29 | 2027-06-05 |  | 2027-01-28 | 2027-06-05 | 112d | 92d |  |
| 1318 | 1.5.1.1.23.3.1 | Erection of Technological Structure | 45d | 2027-01-29 | 2027-03-22 | 1315FS+20d | 2027-01-28 | 2027-03-20 | 45d | 113d | 21d |
| 1319 | 1.5.1.1.23.3.2 | Erection of Mechanical Equipment | 45d | 2027-04-16 | 2027-06-05 | 1318, 413, 1316 | 2027-04-16 | 2027-06-05 | 45d | 92d | 0d |
| 1320 | 1.5.1.1.23.4 | **Electrical Erection** | 60d | 2027-06-30 | 2027-09-07 |  | 2027-06-30 | 2027-09-07 | 60d | 92d |  |
| 1321 | 1.5.1.1.23.4.1 | Erection of Electrical Equipments | 60d | 2027-06-30 | 2027-09-07 | 1319FS+20d | 2027-06-30 | 2027-09-07 | 60d | 92d | 0d |
| 1322 | 1.5.1.1.24 | **Conveyor 2020** | 374d | 2026-06-12 | 2027-08-20 |  | 2026-06-12 | 2027-08-20 | 374d | 112d |  |
| 1323 | 1.5.1.1.24.1 | **Civil Work** | 125d | 2026-06-12 | 2026-11-04 |  | 2026-06-12 | 2026-11-04 | 125d | 112d |  |
| 1324 | 1.5.1.1.24.1.1 | E/W in excavation | 25d | 2026-06-12 | 2026-07-10 | 163FS+13d | 2026-06-12 | 2026-07-10 | 25d | 112d | 0d |
| 1325 | 1.5.1.1.24.1.2 | Dressing, Levelling and P.C.C. | 10d | 2026-07-11 | 2026-07-22 | 1324 | 2026-07-11 | 2026-07-22 | 10d | 112d | 0d |
| 1326 | 1.5.1.1.24.1.3 | RCC work in Foundation | 30d | 2026-07-23 | 2026-08-26 | 1325 | 2026-07-23 | 2026-08-26 | 30d | 112d | 0d |
| 1327 | 1.5.1.1.24.1.4 | RCC work in Pedestal | 30d | 2026-08-27 | 2026-09-30 | 1326 | 2026-08-27 | 2026-09-30 | 30d | 112d | 0d |
| 1328 | 1.5.1.1.24.1.5 | Bolt Lift | 30d | 2026-10-01 | 2026-11-04 | 1327 | 2026-10-01 | 2026-11-04 | 30d | 112d | 0d |
| 1329 | 1.5.1.1.24.2 | **Structural Steel and Sheeting Work** | 79d | 2026-10-16 | 2027-01-15 |  | 2026-10-16 | 2027-01-15 | 79d | 129d |  |
| 1330 | 1.5.1.1.24.2.1 | Supply of Sheeting Material | 13d | 2026-12-01 | 2026-12-15 | 300SS+131d | 2026-12-01 | 2026-12-15 | 13d | 160d | 0d |
| 1331 | 1.5.1.1.24.2.2 | Supply of Fabricated Structure | 13d | 2026-10-16 | 2026-10-30 | 297SS+78d, 164FS+52d | 2026-10-16 | 2026-10-30 | 13d | 129d | 17d |
| 1332 | 1.5.1.1.24.2.3 | Erection of Structural Steel | 35d | 2026-11-05 | 2026-12-15 | 1328, 1331SS | 2026-11-05 | 2026-12-15 | 35d | 112d | 0d |
| 1333 | 1.5.1.1.24.2.4 | Sheeting and painting | 27d | 2026-12-16 | 2027-01-15 | 1332, 1330 | 2026-12-16 | 2027-01-15 | 27d | 160d | 48d |
| 1334 | 1.5.1.1.24.3 | **Mechanical Erection** | 150d | 2027-01-14 | 2027-07-06 |  | 2027-01-14 | 2027-07-06 | 150d | 112d |  |
| 1335 | 1.5.1.1.24.3.1 | Erection of Technological Structure | 30d | 2027-01-14 | 2027-02-17 | 1332FS+25d | 2027-01-14 | 2027-02-17 | 30d | 112d | 0d |
| 1336 | 1.5.1.1.24.3.2 | Erection of Idler Assly | 25d | 2027-03-13 | 2027-04-10 | 1335FS+20d, 1333 | 2027-03-13 | 2027-04-10 | 25d | 112d | 0d |
| 1337 | 1.5.1.1.24.3.3 | Erection of Pulleys | 25d | 2027-04-12 | 2027-05-10 | 1336 | 2027-04-12 | 2027-05-10 | 25d | 149d | 37d |
| 1338 | 1.5.1.1.24.3.4 | Erection of GearBox & Coupling | 25d | 2027-04-23 | 2027-05-20 | 1336FS+10d, 377 | 2027-04-23 | 2027-05-20 | 25d | 112d | 0d |
| 1339 | 1.5.1.1.24.3.5 | Erection of Belting | 25d | 2027-06-08 | 2027-07-06 | 1338FS+15d | 2027-06-08 | 2027-07-06 | 25d | 151d | 39d |

| ID | WBS | Task | Duration | Start | Finish | Predecessors | Baseline start | Baseline finish | Baseline duration | Total slack | Free slack |
| --- | --- | --- | --- | --- | --- | --- | --- | --- | --- | --- | --- |
| 1340 | 1.5.1.1.24.4 | **Electrical Erection** | 69d | 2027-06-02 | 2027-08-20 |  | 2027-06-02 | 2027-08-20 | 69d | 112d |  |
| 1341 | 1.5.1.1.24.4.1 | Erection of Conv. Motors | 25d | 2027-06-02 | 2027-06-30 | 1338FS+10d | 2027-06-02 | 2027-06-30 | 25d | 112d | 0d |
| 1342 | 1.5.1.1.24.4.2 | Erection of Electrical Equipments | 44d | 2027-07-01 | 2027-08-20 | 1341 | 2027-07-01 | 2027-08-20 | 44d | 112d | 0d |
| 1343 | 1.5.1.1.25 | **Transfer House TH8B** | 330d | 2026-06-27 | 2027-07-15 |  | 2026-06-27 | 2027-07-15 | 330d | 138d |  |
| 1344 | 1.5.1.1.25.1 | **Civil Work** | 141d | 2026-06-27 | 2026-12-08 |  | 2026-06-27 | 2026-12-08 | 141d | 143d |  |
| 1345 | 1.5.1.1.25.1.1 | E/W in excavation | 12d | 2026-06-27 | 2026-07-10 | 167FS+26d | 2026-06-27 | 2026-07-10 | 12d | 143d | 0d |
| 1346 | 1.5.1.1.25.1.2 | RCC work in Foundation | 52d | 2026-07-11 | 2026-09-09 | 1345 | 2026-07-11 | 2026-09-09 | 52d | 143d | 0d |
| 1347 | 1.5.1.1.25.1.3 | RCC work in Pedestal | 45d | 2026-08-26 | 2026-10-16 | 1346FS-13d | 2026-08-26 | 2026-10-16 | 45d | 143d | 0d |
| 1348 | 1.5.1.1.25.1.4 | Bolt Lift | 45d | 2026-10-17 | 2026-12-08 | 1347 | 2026-10-17 | 2026-12-08 | 45d | 143d | 0d |
| 1349 | 1.5.1.1.25.2 | **Structural and Sheeting Work** | 77d | 2026-11-11 | 2027-02-08 |  | 2026-11-11 | 2027-02-08 | 77d | 143d |  |
| 1350 | 1.5.1.1.25.2.1 | Supply of Sheeting | 20d | 2026-12-01 | 2026-12-23 | 300SS+131d | 2026-12-01 | 2026-12-23 | 20d | 176d | 33d |
| 1351 | 1.5.1.1.25.2.2 | Supply of Fabricated Structure | 11d | 2026-11-11 | 2026-11-23 | 297SS+100d, 168FS+52d | 2026-11-11 | 2026-11-23 | 11d | 167d | 24d |
| 1352 | 1.5.1.1.25.2.3 | Erection of Structural Steel | 26d | 2026-12-09 | 2027-01-07 | 1348, 1351SS | 2026-12-09 | 2027-01-07 | 26d | 143d | 0d |
| 1353 | 1.5.1.1.25.2.4 | Sheeting and painting | 27d | 2027-01-08 | 2027-02-08 | 1352, 1350SS | 2027-01-08 | 2027-02-08 | 27d | 143d | 5d |
| 1354 | 1.5.1.1.25.3 | **Mechanical Erection** | 99d | 2027-01-26 | 2027-05-19 |  | 2027-01-26 | 2027-05-19 | 99d | 138d |  |
| 1355 | 1.5.1.1.25.3.1 | Erection of Technological Structure | 30d | 2027-01-26 | 2027-03-01 | 1352FS+15d | 2027-01-26 | 2027-03-01 | 30d | 152d | 14d |
| 1356 | 1.5.1.1.25.3.2 | Erection of Mechanical Equipment | 30d | 2027-04-16 | 2027-05-19 | 1355FS+25d, 413, 1353FS+52d | 2027-04-16 | 2027-05-19 | 30d | 138d | 0d |
| 1357 | 1.5.1.1.25.4 | **Electrical Erection** | 49d | 2027-05-20 | 2027-07-15 |  | 2027-05-20 | 2027-07-15 | 49d | 138d |  |
| 1358 | 1.5.1.1.25.4.1 | Erection of Electrical Equipments | 49d | 2027-05-20 | 2027-07-15 | 1356 | 2027-05-20 | 2027-07-15 | 49d | 138d | 0d |
| 1359 | 1.5.1.1.26 | **Substation 1** | 487d | 2026-05-09 | 2027-11-26 |  | 2026-05-09 | 2027-11-26 | 487d | 3d |  |
| 1360 | 1.5.1.1.26.1 | **Civil Work** | 275d | 2026-05-09 | 2027-03-25 |  | 2026-05-09 | 2027-03-25 | 275d | 59d |  |
| 1361 | 1.5.1.1.26.1.1 | Excavation for Foundation | 15d | 2026-05-09 | 2026-05-26 | 171FS+7d | 2026-05-09 | 2026-05-26 | 15d | 59d | 0d |
| 1362 | 1.5.1.1.26.1.2 | RCC works upto plinth level | 78d | 2026-05-27 | 2026-08-25 | 1361 | 2026-05-27 | 2026-08-25 | 78d | 59d | 0d |
| 1363 | 1.5.1.1.26.1.3 | RCC work upto ground floor level | 52d | 2026-06-25 | 2026-08-24 | 1362SS+25d | 2026-06-25 | 2026-08-24 | 52d | 59d | 0d |
| 1364 | 1.5.1.1.26.1.4 | RCC work for ground floor roof | 53d | 2026-07-25 | 2026-09-24 | 1363SS+26d | 2026-07-25 | 2026-09-24 | 53d | 59d | 0d |
| 1365 | 1.5.1.1.26.1.5 | Ground Floor Roof Concreting | 1d | 2026-10-01 | 2026-10-01 | 1364FS+5d | 2026-10-01 | 2026-10-01 | 1d | 68d | 0d |
| 1366 | 1.5.1.1.26.1.6 | Balance RCC work upto 1st roof level | 54d | 2026-10-20 | 2026-12-21 | 1365FS+15d | 2026-10-20 | 2026-12-21 | 54d | 68d | 0d |
| 1367 | 1.5.1.1.26.1.7 | 1st floor roof Concreting | 1d | 2026-12-28 | 2026-12-28 | 1366FS+5d | 2026-12-28 | 2026-12-28 | 1d | 68d | 9d |
| 1368 | 1.5.1.1.26.1.8 | Flooring | 53d | 2027-01-23 | 2027-03-25 | 1369, 1367FS+13d | 2027-01-23 | 2027-03-25 | 53d | 59d | 0d |
| 1369 | 1.5.1.1.26.1.9 | Brick work | 103d | 2026-09-25 | 2027-01-22 | 1364 | 2026-09-25 | 2027-01-22 | 103d | 59d | 0d |
| 1370 | 1.5.1.1.26.1.10 | Plastering | 69d | 2026-10-30 | 2027-01-18 | 1369SS+30d | 2026-10-30 | 2027-01-18 | 69d | 80d | 21d |
| 1371 | 1.5.1.1.26.1.11 | Painting & Finishing works | 79d | 2026-12-24 | 2027-03-25 | 1370SS+26d, 1368FF | 2026-12-24 | 2027-03-25 | 79d | 59d | 56d |

| ID | WBS | Task | Duration | Start | Finish | Predecessors | Complete | Remaining | Baseline start | Baseline finish | Baseline duration | Total slack | Free slack |
| --- | --- | --- | --- | --- | --- | --- | --- | --- | --- | --- | --- | --- | --- |
| 1372 | 1.5.1.1.26.2 | **Electrical Erection** | 156d | 2027-05-29 | 2027-11-26 |  |  |  | 2027-05-29 | 2027-11-26 | 156d | 3d |  |
| 1373 | 1.5.1.1.26.2.1 | Erection of Electrical Equipments | 156d | 2027-05-29 | 2027-11-26 | 628FS+25d, 634, 658FS+7d, 670FS+7d, 682FS+7d, 694FS+13d, 700FF+78d, 676FS+13d, 1371, 58FS+150d, 170FS+26d |  |  | 2027-05-29 | 2027-11-26 | 156d | 3d | 0d |
| 1374 | 1.5.1.1.26.2.2 | Erection of 6.6/0.433 Transformers | 52d | 2027-08-14 | 2027-10-13 | 640FS+78d, 652FS+13d |  |  | 2027-08-14 | 2027-10-13 | 52d | 41d | 38d |
| 1375 | 1.5.1.1.27 | **Substation 2** | 546d | 2026-03-02 A | 2027-11-26 |  | 6% | 514.7d | 2026-05-09 | 2027-11-26 | 487d | 3d |  |
| 1376 | 1.5.1.1.27.1 | **Civil Work** | 347d | 2026-03-02 A | 2027-04-09 |  | 8% | 319.94d | 2026-05-09 | 2027-05-18 | 322d | 46d |  |
| 1377 | 1.5.1.1.27.1.1 | Excavation for Foundation | 50d | 2026-03-02 A | 2026-04-28 | 174FS+7d | 90% | 5d | 2026-05-09 | 2026-06-06 | 25d | 46d | 0d |
| 1378 | 1.5.1.1.27.1.2 | RCC works upto plinth level | 78d | 2026-04-29 | 2026-07-28 | 1377 |  |  | 2026-06-08 | 2026-09-05 | 78d | 46d | 0d |
| 1379 | 1.5.1.1.27.1.3 | RCC work upto ground floor level | 52d | 2026-06-13 | 2026-08-12 | 1378SS+39d |  |  | 2026-07-23 | 2026-09-21 | 52d | 46d | 0d |
| 1380 | 1.5.1.1.27.1.4 | RCC work for ground floor roof | 60d | 2026-07-29 | 2026-10-06 | 1379SS+39d |  |  | 2026-09-07 | 2026-11-14 | 60d | 46d | 0d |
| 1381 | 1.5.1.1.27.1.5 | Ground Floor Roof Concreting | 1d | 2026-10-12 | 2026-10-12 | 1380FS+4d |  |  | 2026-11-20 | 2026-11-20 | 1d | 59d | 0d |
| 1382 | 1.5.1.1.27.1.6 | Balance RCC work upto 1st roof level | 60d | 2026-10-13 | 2026-12-21 | 1381 |  |  | 2026-11-21 | 2027-01-29 | 60d | 59d | 0d |
| 1383 | 1.5.1.1.27.1.7 | 1st floor roof Concreting | 1d | 2026-12-26 | 2026-12-26 | 1382FS+4d |  |  | 2027-02-04 | 2027-02-04 | 1d | 59d | 0d |
| 1384 | 1.5.1.1.27.1.8 | Flooring | 50d | 2027-01-27 | 2027-03-25 | 1385, 1383FS+26d |  |  | 2027-03-08 | 2027-05-04 | 50d | 59d | 56d |
| 1385 | 1.5.1.1.27.1.9 | Brick work | 75d | 2026-10-07 | 2027-01-01 | 1380 |  |  | 2026-11-16 | 2027-02-10 | 75d | 46d | 0d |
| 1386 | 1.5.1.1.27.1.10 | Plastering | 75d | 2026-11-21 | 2027-02-16 | 1385SS+39d |  |  | 2026-12-31 | 2027-03-27 | 75d | 46d | 0d |
| 1387 | 1.5.1.1.27.1.11 | Painting & Finishing works | 75d | 2027-01-13 | 2027-04-09 | 1386SS+45d |  |  | 2027-02-22 | 2027-05-18 | 75d | 46d | 43d |
| 1388 | 1.5.1.1.27.2 | **Electrical Erection** | 156d | 2027-05-29 | 2027-11-26 |  |  |  | 2027-05-29 | 2027-11-26 | 156d | 3d |  |
| 1389 | 1.5.1.1.27.2.1 | Erection of Electrical Equipments | 156d | 2027-05-29 | 2027-11-26 | 658FS+7d, 682FS+7d, 700FF+78d, 628FS+13d, 634, 670FS+7d, 694FS+13d, 676FS+13d, 1387, 1384, 58FS+150d, 173FS+26d |  |  | 2027-05-29 | 2027-11-26 | 156d | 3d | 0d |
| 1390 | 1.5.1.1.27.2.2 | Erection of 6.6/0.433 Transformers | 52d | 2027-08-14 | 2027-10-13 | 640FS+78d, 652FS+13d, 1387 |  |  | 2027-08-14 | 2027-10-13 | 52d | 41d | 38d |
| 1391 | 1.5.1.1.28 | **Substation 3** | 484d | 2026-05-13 | 2027-11-26 |  |  |  | 2026-05-13 | 2027-11-26 | 484d | 3d |  |
| 1392 | 1.5.1.1.28.1 | **Civil Work** | 282d | 2026-05-13 | 2027-04-06 |  |  |  | 2026-05-13 | 2027-04-06 | 282d | 49d |  |
| 1393 | 1.5.1.1.28.1.1 | Excavation for Foundation | 15d | 2026-05-13 | 2026-05-29 | 177FS+10d |  |  | 2026-05-13 | 2026-05-29 | 15d | 49d | 0d |
| 1394 | 1.5.1.1.28.1.2 | RCC works upto plinth level | 78d | 2026-05-30 | 2026-08-28 | 1393 |  |  | 2026-05-30 | 2026-08-28 | 78d | 49d | 0d |
| 1395 | 1.5.1.1.28.1.3 | RCC work upto ground floor level | 52d | 2026-06-30 | 2026-08-28 | 1394SS+26d |  |  | 2026-06-30 | 2026-08-28 | 52d | 49d | 0d |
| 1396 | 1.5.1.1.28.1.4 | RCC work for ground floor roof | 53d | 2026-07-30 | 2026-09-29 | 1395SS+26d |  |  | 2026-07-30 | 2026-09-29 | 53d | 49d | 0d |
| 1397 | 1.5.1.1.28.1.5 | Ground Floor Roof Concreting | 1d | 2026-10-06 | 2026-10-06 | 1396FS+5d |  |  | 2026-10-06 | 2026-10-06 | 1d | 81d | 0d |
| 1398 | 1.5.1.1.28.1.6 | Balance RCC work upto 1st roof level | 54d | 2026-10-24 | 2026-12-25 | 1397FS+15d |  |  | 2026-10-24 | 2026-12-25 | 54d | 81d | 0d |
| 1399 | 1.5.1.1.28.1.7 | 1st floor roof Concreting | 1d | 2027-01-01 | 2027-01-01 | 1398FS+5d |  |  | 2027-01-01 | 2027-01-01 | 1d | 81d | 9d |
| 1400 | 1.5.1.1.28.1.8 | Flooring | 36d | 2027-01-28 | 2027-03-10 | 1401, 1399FS+13d |  |  | 2027-01-28 | 2027-03-10 | 36d | 72d | 23d |
| 1401 | 1.5.1.1.28.1.9 | Brick work | 103d | 2026-09-30 | 2027-01-27 | 1396 |  |  | 2026-09-30 | 2027-01-27 | 103d | 49d | 0d |
| 1402 | 1.5.1.1.28.1.10 | Plastering | 69d | 2026-12-09 | 2027-02-26 | 1401SS+60d |  |  | 2026-12-09 | 2027-02-26 | 69d | 49d | 0d |
| 1403 | 1.5.1.1.28.1.11 | Painting & Finishing works | 76d | 2027-01-08 | 2027-04-06 | 1402SS+26d, 1400FF |  |  | 2027-01-08 | 2027-04-06 | 76d | 49d | 46d |

| ID | WBS | Task | Duration | Start | Finish | Predecessors | Baseline start | Baseline finish | Baseline duration | Total slack | Free slack |
| --- | --- | --- | --- | --- | --- | --- | --- | --- | --- | --- | --- |
| 1404 | 1.5.1.1.28.2 | **Electrical Erection** | 156d | 2027-05-29 | 2027-11-26 |  | 2027-05-29 | 2027-11-26 | 156d | 3d |  |
| 1405 | 1.5.1.1.28.2.1 | Erection of Electrical Equipments | 156d | 2027-05-29 | 2027-11-26 | 1403, 628FS+13d, 634, 658FS+7d, 670FS+7d, 682FS+7d, 694FS+13d, 700FF+78d, 676FS+13d, 58FS+150d, 176FS+26d | 2027-05-29 | 2027-11-26 | 156d | 3d | 0d |
| 1406 | 1.5.1.1.28.2.2 | Erection of 6.6/0.433 Transformers | 52d | 2027-08-14 | 2027-10-13 | 640FS+78d, 652FS+13d | 2027-08-14 | 2027-10-13 | 52d | 41d | 38d |
| 1407 | 1.5.1.1.29 | **Substation 4** | 478d | 2026-05-16 | 2027-11-23 |  | 2026-05-16 | 2027-11-23 | 478d | 6d |  |
| 1408 | 1.5.1.1.29.1 | **Civil Work** | 285d | 2026-05-16 | 2027-04-13 |  | 2026-05-16 | 2027-04-13 | 285d | 43d |  |
| 1409 | 1.5.1.1.29.1.1 | Excavation for Foundation | 15d | 2026-05-16 | 2026-06-02 | 180FS+13d | 2026-05-16 | 2026-06-02 | 15d | 43d | 0d |
| 1410 | 1.5.1.1.29.1.2 | RCC works upto plinth level | 78d | 2026-06-03 | 2026-09-01 | 1409 | 2026-06-03 | 2026-09-01 | 78d | 43d | 0d |
| 1411 | 1.5.1.1.29.1.3 | RCC work upto ground floor level | 52d | 2026-07-03 | 2026-09-01 | 1410SS+26d | 2026-07-03 | 2026-09-01 | 52d | 43d | 0d |
| 1412 | 1.5.1.1.29.1.4 | RCC work for ground floor roof | 53d | 2026-08-03 | 2026-10-02 | 1411SS+26d | 2026-08-03 | 2026-10-02 | 53d | 43d | 0d |
| 1413 | 1.5.1.1.29.1.5 | Ground Floor Roof Concreting | 1d | 2026-10-09 | 2026-10-09 | 1412FS+5d | 2026-10-09 | 2026-10-09 | 1d | 80d | 0d |
| 1414 | 1.5.1.1.29.1.6 | Balance RCC work upto 1st roof level | 54d | 2026-10-28 | 2026-12-29 | 1413FS+15d | 2026-10-28 | 2026-12-29 | 54d | 80d | 0d |
| 1415 | 1.5.1.1.29.1.7 | 1st floor roof Concreting | 1d | 2027-01-05 | 2027-01-05 | 1414FS+5d | 2027-01-05 | 2027-01-05 | 1d | 80d | 9d |
| 1416 | 1.5.1.1.29.1.8 | Flooring | 34d | 2027-02-01 | 2027-03-11 | 1417, 1415FS+13d | 2027-02-01 | 2027-03-11 | 34d | 71d | 28d |
| 1417 | 1.5.1.1.29.1.9 | Brick work | 103d | 2026-10-03 | 2027-01-30 | 1412 | 2026-10-03 | 2027-01-30 | 103d | 43d | 0d |
| 1418 | 1.5.1.1.29.1.10 | Plastering | 69d | 2026-12-12 | 2027-03-02 | 1417SS+60d | 2026-12-12 | 2027-03-02 | 69d | 43d | 0d |
| 1419 | 1.5.1.1.29.1.11 | Painting & Finishing works | 79d | 2027-01-12 | 2027-04-13 | 1418SS+26d, 1416FF | 2027-01-12 | 2027-04-13 | 79d | 43d | 37d |
| 1420 | 1.5.1.1.29.2 | **Electrical Erection** | 156d | 2027-05-26 | 2027-11-23 |  | 2027-05-26 | 2027-11-23 | 156d | 6d |  |
| 1421 | 1.5.1.1.29.2.1 | Erection of Electrical Equipments | 156d | 2027-05-26 | 2027-11-23 | 628, 634, 658, 670, 682, 694FS+13d, 700FF+78d, 676FS+13d, 1419, 58FS+150d, 179FS+26d | 2027-05-26 | 2027-11-23 | 156d | 6d | 0d |
| 1422 | 1.5.1.1.29.2.2 | Erection of 6.6/0.433 Transformers | 52d | 2027-08-14 | 2027-10-13 | 640FS+13d, 652FS+13d | 2027-08-14 | 2027-10-13 | 52d | 41d | 35d |
| 1423 | 1.5.1.1.30 | **Pump House and Reservoir** | 478d | 2026-05-12 | 2027-11-18 |  | 2026-05-12 | 2027-11-18 | 478d | 10d |  |
| 1424 | 1.5.1.1.30.1 | **Civil Work** | 275d | 2026-05-12 | 2027-03-27 |  | 2026-05-12 | 2027-03-27 | 275d | 55d |  |
| 1425 | 1.5.1.1.30.1.1 | Availability of clearence from NMDC | 13d | 2026-05-12 | 2026-05-26 | 3FS+350d | 2026-05-12 | 2026-05-26 | 13d | 55d | 0d |
| 1426 | 1.5.1.1.30.1.2 | Preparation of Approach Road | 13d | 2026-05-27 | 2026-06-10 | 1425 | 2026-05-27 | 2026-06-10 | 13d | 55d | 1d |
| 1427 | 1.5.1.1.30.1.3 | Excavation for Reservoir | 18d | 2026-06-12 | 2026-07-02 | 1426, 183FS+13d | 2026-06-12 | 2026-07-02 | 18d | 54d | 0d |
| 1428 | 1.5.1.1.30.1.4 | Dressing, Levelling, Formwork and Reinforcement work for Reservoir | 89d | 2026-07-03 | 2026-10-14 | 1427 | 2026-07-03 | 2026-10-14 | 89d | 63d | 0d |
| 1429 | 1.5.1.1.30.1.5 | RCC work for Reservoir | 104d | 2026-09-01 | 2026-12-30 | 1428SS+51d | 2026-09-01 | 2026-12-30 | 104d | 63d | 0d |
| 1430 | 1.5.1.1.30.1.6 | Finishing work for Reservoir | 75d | 2026-12-31 | 2027-03-27 | 1429 | 2026-12-31 | 2027-03-27 | 75d | 63d | 0d |
| 1431 | 1.5.1.1.30.1.7 | RCC work for Pump House | 76d | 2026-07-03 | 2026-09-29 | 1427 | 2026-07-03 | 2026-09-29 | 76d | 54d | 0d |
| 1432 | 1.5.1.1.30.1.8 | Concreting of Roof Slab of Pump House | 1d | 2026-10-06 | 2026-10-06 | 1431FS+5d | 2026-10-06 | 2026-10-06 | 1d | 54d | 0d |
| 1433 | 1.5.1.1.30.1.9 | Pump Foundation and flooring work | 66d | 2026-12-29 | 2027-03-15 | 1434SS+45d | 2026-12-29 | 2027-03-15 | 66d | 54d | 11d |
| 1434 | 1.5.1.1.30.1.10 | Brick work | 72d | 2026-11-06 | 2027-01-28 | 1432FS+26d | 2026-11-06 | 2027-01-28 | 72d | 54d | 0d |
| 1435 | 1.5.1.1.30.1.11 | Plastering work | 63d | 2026-12-07 | 2027-02-17 | 1434SS+26d | 2026-12-07 | 2027-02-17 | 63d | 88d | 25d |
| 1436 | 1.5.1.1.30.1.12 | Painting & Finishing works | 68d | 2027-01-08 | 2027-03-27 | 1433FF, 1430FF, 1435FS-60d | 2027-01-08 | 2027-03-27 | 68d | 63d | 53d |

| ID | WBS | Task | Duration | Start | Finish | Predecessors | Baseline start | Baseline finish | Baseline duration | Total slack | Free slack |
| --- | --- | --- | --- | --- | --- | --- | --- | --- | --- | --- | --- |
| 1437 | 1.5.1.1.30.2 | **Mechanical Erection** | 90d | 2027-05-28 | 2027-09-09 |  | 2027-05-28 | 2027-09-09 | 90d | 10d |  |
| 1438 | 1.5.1.1.30.2.1 | Erection of Pumps & Piping | 90d | 2027-05-28 | 2027-09-09 | 1433FS+20d, 461FS+13d, 1436, 182FS+26d | 2027-05-28 | 2027-09-09 | 90d | 10d | 0d |
| 1439 | 1.5.1.1.30.3 | **Electrical Erection** | 60d | 2027-09-10 | 2027-11-18 |  | 2027-09-10 | 2027-11-18 | 60d | 10d |  |
| 1440 | 1.5.1.1.30.3.1 | Erection of Electrical Equipments | 60d | 2027-09-10 | 2027-11-18 | 1438 | 2027-09-10 | 2027-11-18 | 60d | 10d | 0d |
| 1441 | 1.5.1.1.31 | **Office Building #1 and Toilet Block** | 266d | 2026-05-27 | 2027-04-01 |  | 2026-05-27 | 2027-04-01 | 266d | 155d |  |
| 1442 | 1.5.1.1.31.1 | **Civil Work** | 266d | 2026-05-27 | 2027-04-01 |  | 2026-05-27 | 2027-04-01 | 266d | 155d |  |
| 1443 | 1.5.1.1.31.1.1 | Excavation for Foundation | 43d | 2026-05-27 | 2026-07-15 | 185FS+150d | 2026-05-27 | 2026-07-15 | 43d | 155d | 0d |
| 1444 | 1.5.1.1.31.1.2 | RCC works upto plinth level | 40d | 2026-07-16 | 2026-08-31 | 1443 | 2026-07-16 | 2026-08-31 | 40d | 155d | 0d |
| 1445 | 1.5.1.1.31.1.3 | RCC work upto ground floor level | 40d | 2026-09-01 | 2026-10-16 | 1444, 1889 | 2026-09-01 | 2026-10-16 | 40d | 155d | 0d |
| 1446 | 1.5.1.1.31.1.4 | RCC work for ground floor roof | 40d | 2026-10-17 | 2026-12-02 | 1445, 1890 | 2026-10-17 | 2026-12-02 | 40d | 155d | 0d |
| 1447 | 1.5.1.1.31.1.5 | Ground Floor Roof Concreting | 1d | 2026-12-03 | 2026-12-03 | 1446, 1891 | 2026-12-03 | 2026-12-03 | 1d | 155d | 0d |
| 1448 | 1.5.1.1.31.1.6 | Balance RCC work upto Staircase roof level | 26d | 2026-12-22 | 2027-01-20 | 1447FS+15d, 1892FS+15d | 2026-12-22 | 2027-01-20 | 26d | 176d | 0d |
| 1449 | 1.5.1.1.31.1.7 | Staircase roof Concreting | 1d | 2027-01-21 | 2027-01-21 | 1448, 1893 | 2027-01-21 | 2027-01-21 | 1d | 176d | 5d |
| 1450 | 1.5.1.1.31.1.8 | Flooring | 30d | 2027-01-08 | 2027-02-11 | 1447FS+30d, 1892FS+30d, 1449FF+13d | 2027-01-08 | 2027-02-11 | 30d | 171d | 16d |
| 1451 | 1.5.1.1.31.1.9 | Brick work | 40d | 2026-12-22 | 2027-02-05 | 1447FS+15d, 1892FS+15d | 2026-12-22 | 2027-02-05 | 40d | 155d | 0d |
| 1452 | 1.5.1.1.31.1.10 | Plastering | 40d | 2026-12-30 | 2027-02-13 | 1451SS+7d, 1896SS+7d | 2026-12-30 | 2027-02-13 | 40d | 155d | 0d |
| 1453 | 1.5.1.1.31.1.11 | Painting, Sanitary, Plumbing& Finishing works | 40d | 2027-02-15 | 2027-04-01 | 1452, 1897, 1450FF+26d | 2027-02-15 | 2027-04-01 | 40d | 155d |  |
| 1454 | 1.5.1.1.32 | **Office Building #2 and Toilet Block** | 379d | 2026-05-12 | 2027-07-26 |  | 2026-05-12 | 2027-07-26 | 379d | 107d |  |
| 1455 | 1.5.1.1.32.1 | **Civil Work** | 379d | 2026-05-12 | 2027-07-26 |  | 2026-05-12 | 2027-07-26 | 379d | 107d |  |
| 1456 | 1.5.1.1.32.1.1 | Availability of clearence from NMDC | 13d | 2026-05-12 | 2026-05-26 | 1425SS | 2026-05-12 | 2026-05-26 | 13d | 107d | 0d |
| 1457 | 1.5.1.1.32.1.2 | Preparation of Approach Road | 13d | 2026-05-27 | 2026-06-10 | 1456 | 2026-05-27 | 2026-06-10 | 13d | 107d | 0d |
| 1458 | 1.5.1.1.32.1.3 | Excavation for Foundation | 23d | 2026-06-11 | 2026-07-07 | 1457, 187FS+7d | 2026-06-11 | 2026-07-07 | 23d | 107d | 0d |
| 1459 | 1.5.1.1.32.1.4 | RCC works upto plinth level | 54d | 2026-07-08 | 2026-09-08 | 1458 | 2026-07-08 | 2026-09-08 | 54d | 107d | 0d |
| 1460 | 1.5.1.1.32.1.5 | RCC work upto ground floor level | 54d | 2026-08-07 | 2026-10-08 | 1459SS+26d | 2026-08-07 | 2026-10-08 | 54d | 107d | 0d |
| 1461 | 1.5.1.1.32.1.6 | RCC work for ground floor roof | 55d | 2026-09-07 | 2026-11-09 | 1460SS+26d | 2026-09-07 | 2026-11-09 | 55d | 107d | 0d |
| 1462 | 1.5.1.1.32.1.7 | Ground Floor Roof Concreting | 1d | 2026-11-16 | 2026-11-16 | 1461FS+5d | 2026-11-16 | 2026-11-16 | 1d | 107d | 0d |
| 1463 | 1.5.1.1.32.1.8 | Balance RCC work upto 1st roof level | 58d | 2026-12-04 | 2027-02-09 | 1462FS+15d | 2026-12-04 | 2027-02-09 | 58d | 134d | 0d |
| 1464 | 1.5.1.1.32.1.9 | 1st floor roof Concreting | 1d | 2027-02-16 | 2027-02-16 | 1463FS+5d | 2027-02-16 | 2027-02-16 | 1d | 134d | 0d |
| 1465 | 1.5.1.1.32.1.10 | Flooring | 98d | 2027-03-04 | 2027-06-24 | 1462FS+60d, 1464FS+13d | 2027-03-04 | 2027-06-24 | 98d | 134d | 27d |
| 1466 | 1.5.1.1.32.1.11 | Brick work | 111d | 2026-12-17 | 2027-04-24 | 1462FS+26d | 2026-12-17 | 2027-04-24 | 111d | 107d | 0d |
| 1467 | 1.5.1.1.32.1.12 | Plastering | 86d | 2027-02-16 | 2027-05-25 | 1466SS+52d | 2027-02-16 | 2027-05-25 | 86d | 107d | 0d |
| 1468 | 1.5.1.1.32.1.13 | Painting & Finishing works | 87d | 2027-04-17 | 2027-07-26 | 1467SS+52d, 1465FF | 2027-04-17 | 2027-07-26 | 87d | 107d |  |

| ID | WBS | Task | Duration | Start | Finish | Predecessors | Complete | Remaining | Baseline start | Baseline finish | Baseline duration | Total slack | Free slack | Text1 |
| --- | --- | --- | --- | --- | --- | --- | --- | --- | --- | --- | --- | --- | --- | --- |
| 1469 | 1.5.1.1.33 | **Miscellaneous Civil Work like Car, Truck Parking, Boundary Wall etc** | 288d | 2026-11-09 | 2027-10-08 |  |  |  | 2026-11-09 | 2027-10-08 | 288d | 43d |  |  |
| 1470 | 1.5.1.1.33.1 | **Civil Work** | 288d | 2026-11-09 | 2027-10-08 | 1427 |  |  | 2026-11-09 | 2027-10-08 | 288d | 43d |  |  |
| 1471 | 1.5.1.1.33.1.1 | Site Levelling and Dressing work | 39d | 2026-11-09 | 2026-12-23 | 189FS+7d |  |  | 2026-11-09 | 2026-12-23 | 39d | 43d | 0d |  |
| 1472 | 1.5.1.1.33.1.2 | Boulder Soling work and PCC | 53d | 2026-12-24 | 2027-02-23 | 1471, 1914 |  |  | 2026-12-24 | 2027-02-23 | 53d | 43d | 0d |  |
| 1473 | 1.5.1.1.33.1.3 | Civil work | 130d | 2027-02-24 | 2027-07-23 | 1472, 1915 |  |  | 2027-02-24 | 2027-07-23 | 130d | 43d | 0d |  |
| 1474 | 1.5.1.1.33.1.4 | Finishing work | 118d | 2027-05-25 | 2027-10-08 | 1473SS+78d |  |  | 2027-05-25 | 2027-10-08 | 118d | 43d |  |  |
| 1475 | 1.5.1.1.34 | **Haul Roads and Service Roads** | 383d | 2026-05-06 | 2027-07-24 |  |  |  | 2026-05-06 | 2027-07-24 | 383d | 108d |  |  |
| 1476 | 1.5.1.1.34.1 | **Civil Work** | 383d | 2026-05-06 | 2027-07-24 |  |  |  | 2026-05-06 | 2027-07-24 | 383d | 108d |  |  |
| 1477 | 1.5.1.1.34.1.1 | Cutting of Trees | 15d | 2026-05-06 | 2026-05-22 | 3FS+345d |  |  | 2026-05-06 | 2026-05-22 | 15d | 108d | 0d |  |
| 1478 | 1.5.1.1.34.1.2 | Excavation work | 170d | 2026-05-23 | 2026-12-07 | 1477, 191 |  |  | 2026-05-23 | 2026-12-07 | 170d | 108d | 0d |  |
| 1479 | 1.5.1.1.34.1.3 | Laying of Sub Grade,Sub Base etc | 198d | 2026-12-08 | 2027-07-24 | 1478 |  |  | 2026-12-08 | 2027-07-24 | 198d | 108d |  |  |
| 1480 | 1.5.1.2 | **Deposit 11C** | 698d | 2025-10-03 A | 2027-12-22 |  | 2% | 682.64d | 2025-10-03 | 2027-12-22 | 698d | 83d |  |  |
| 1481 | 1.5.1.2.1 | **ROM Stock Pile** | 265d | 2025-10-03 A | 2026-08-06 |  | 75% | 66.25d | 2025-10-03 | 2026-08-06 | 265d | 149d |  |  |
| 1482 | 1.5.1.2.1.1 | **Civil Work** | 265d | 2025-10-03 A | 2026-08-06 |  | 75% | 66.25d | 2025-10-03 | 2026-08-06 | 265d | 149d |  |  |
| 1483 | 1.5.1.2.1.1.1 | Excavation work of 94% of total scope | 75d | 2025-10-03 A | 2025-12-28 A | 3FS+160d | 100% |  | 2025-10-03 | 2025-12-28 | 75d |  |  |  |
| 1484 | 1.5.1.2.1.1.2 | Diversion of Pipe Line | 10d | 2026-07-09 | 2026-07-20 | 3FS+400d |  |  | 2026-07-09 | 2026-07-20 | 10d | 149d | 0d |  |
| 1485 | 1.5.1.2.1.1.3 | Balance Excavation | 15d | 2026-07-21 | 2026-08-06 | 1484 |  |  | 2026-07-21 | 2026-08-06 | 15d | 149d |  |  |
| 1486 | 1.5.1.2.2 | **Primary Crusher** | 607d | 2025-12-23 A | 2027-11-27 |  | 8% | 557.41d | 2025-12-23 | 2027-11-27 | 607d | 0d |  |  |
| 1487 | 1.5.1.2.2.1 | **Civil Work** | 345d | 2025-12-23 A | 2027-01-27 |  | 23% | 264.68d | 2025-12-23 | 2027-01-27 | 345d | 0d |  |  |
| 1488 | 1.5.1.2.2.1.1 | E/W in excavation | 126d | 2025-12-23 A | 2026-05-16 | 52SS+190d, 51, 1483 | 85% | 18.9d | 2025-12-23 | 2026-05-16 | 126d | 5d | 0d | cu.m. |
| 1489 | 1.5.1.2.2.1.2 | RCC work for Retaining wall and equipment foundation | 190d | 2026-05-18 | 2026-12-24 | 195FS-9d |  |  | 2026-05-18 | 2026-12-24 | 190d | 0d |  | cu.m. |
| 1490 | 1.5.1.2.2.1.3 | RCC work for Building Shed | 144d | 2026-08-13 | 2027-01-27 | 1489SS+75d, 1485FF |  |  | 2026-08-13 | 2027-01-27 | 144d | 0d |  | cu.m. |
| 1491 | 1.5.1.2.2.2 | **Structural Steel and Sheeting Work** | 148d | 2026-10-19 | 2027-04-08 |  |  |  | 2026-10-19 | 2027-04-08 | 148d | 21d |  |  |
| 1492 | 1.5.1.2.2.2.1 | Supply of Fabricated Structure | 39d | 2026-10-19 | 2026-12-02 | 196FS+36d, 305SS+80d |  |  | 2026-10-19 | 2026-12-02 | 39d | 21d |  |  |
| 1493 | 1.5.1.2.2.2.2 | Erection of Structural Steel | 114d | 2026-11-12 | 2027-03-24 | 1490SS+78d, 1492SS |  |  | 2026-11-12 | 2027-03-24 | 114d | 0d |  | mt. |
| 1494 | 1.5.1.2.2.2.3 | Supply of Sheeting material | 54d | 2026-12-11 | 2027-02-11 | 308SS+140d |  |  | 2026-12-11 | 2027-02-11 | 54d | 108d | 27d |  |
| 1495 | 1.5.1.2.2.2.4 | Sheeting and painting | 75d | 2027-01-12 | 2027-04-08 | 1494SS, 1493SS+52d |  |  | 2027-01-12 | 2027-04-08 | 75d | 81d | 44d |  |

| ID | WBS | Task | Duration | Start | Finish | Predecessors | Baseline start | Baseline finish | Baseline duration | Total slack | Free slack | Text1 |
| --- | --- | --- | --- | --- | --- | --- | --- | --- | --- | --- | --- | --- |
| 1496 | 1.5.1.2.2.3 | **Mechanical Erection** | 170d | 2027-04-02 | 2027-10-15 |  | 2027-04-02 | 2027-10-15 | 170d | 0d |  |  |
| 1497 | 1.5.1.2.2.3.1 | Erection of Gyratory Crusher | 110d | 2027-04-02 | 2027-08-06 | 474FS+64d, 1498FS-58d, 1493FS-26d | 2027-04-02 | 2027-08-06 | 110d | 0d |  | no |
| 1498 | 1.5.1.2.2.3.2 | Erection of EOT Cranes (160/30T) | 50d | 2027-04-12 | 2027-06-07 | 498FS+13d, 1493FS+15d | 2027-04-12 | 2027-06-07 | 50d | 0d |  | no |
| 1499 | 1.5.1.2.2.3.3 | Erection of Apron Feeder (3000 TPH ) | 44d | 2027-08-07 | 2027-09-27 | 1497, 1495 | 2027-08-07 | 2027-09-27 | 44d | 53d |  |  |
| 1500 | 1.5.1.2.2.3.4 | Erection of Hydraulic Gripper | 44d | 2027-08-07 | 2027-09-27 | 1497, 588FS+26d | 2027-08-07 | 2027-09-27 | 44d | 53d |  |  |
| 1501 | 1.5.1.2.2.3.5 | Erection of Rock Breaker | 44d | 2027-08-07 | 2027-09-27 | 1497, 582FS+52d | 2027-08-07 | 2027-09-27 | 44d | 53d |  |  |
| 1502 | 1.5.1.2.2.3.6 | Erection of Utility equipment like Fire Fighting, Dust Suppression System etc | 120d | 2027-05-29 | 2027-10-15 | 600FS+13d, 606FS+13d, 612FS+13d, 1495, 198FS+13d | 2027-05-29 | 2027-10-15 | 120d | 37d |  |  |
| 1503 | 1.5.1.2.2.4 | **Electrical Erection** | 157d | 2027-05-29 | 2027-11-27 |  | 2027-05-29 | 2027-11-27 | 157d | 0d |  |  |
| 1504 | 1.5.1.2.2.4.1 | Erection of Gyratory Motor | 30d | 2027-05-29 | 2027-07-02 | 1497SS+50d, 64FS+150d | 2027-05-29 | 2027-07-02 | 30d | 0d |  | no |
| 1505 | 1.5.1.2.2.4.2 | Erection of Electrical Equipments | 127d | 2027-07-03 | 2027-11-27 | 1504, 1493, 197FS+78d | 2027-07-03 | 2027-11-27 | 127d | 0d |  | lot |
| 1506 | 1.5.1.2.3 | **Conveyor 3005** | 451d | 2026-07-17 | 2027-12-22 |  | 2026-07-17 | 2027-12-22 | 451d | 5d |  |  |
| 1507 | 1.5.1.2.3.1 | **Civil Work** | 201d | 2026-07-17 | 2027-03-08 |  | 2026-07-17 | 2027-03-08 | 201d | 5d |  |  |
| 1508 | 1.5.1.2.3.1.1 | E/W in excavation | 15d | 2026-07-17 | 2026-08-03 | 1488FS+52d, 201FS+7d | 2026-07-17 | 2026-08-03 | 15d | 5d | 0d |  |
| 1509 | 1.5.1.2.3.1.2 | RCC work in Foundation | 62d | 2026-08-04 | 2026-10-14 | 1508 | 2026-08-04 | 2026-10-14 | 62d | 5d | 0d |  |
| 1510 | 1.5.1.2.3.1.3 | RCC work in Pedestal | 62d | 2026-10-15 | 2026-12-25 | 1509 | 2026-10-15 | 2026-12-25 | 62d | 5d | 0d |  |
| 1511 | 1.5.1.2.3.1.4 | Bolt Lift | 62d | 2026-12-26 | 2027-03-08 | 1510 | 2026-12-26 | 2027-03-08 | 62d | 5d | 0d |  |
| 1512 | 1.5.1.2.3.2 | **Structural and Sheeting Work** | 103d | 2027-02-12 | 2027-06-10 |  | 2027-02-12 | 2027-06-10 | 103d | 26d |  |  |
| 1513 | 1.5.1.2.3.2.1 | Supply of Sheeting material | 13d | 2027-04-07 | 2027-04-21 | 308SS+240d | 2027-04-07 | 2027-04-21 | 13d | 40d | 7d |  |
| 1514 | 1.5.1.2.3.2.2 | Supply of Fabricated Structure | 26d | 2027-02-12 | 2027-03-13 | 305SS+180d, 202FS+104d | 2027-02-12 | 2027-03-13 | 26d | 26d | 21d |  |
| 1515 | 1.5.1.2.3.2.3 | Erection of Structural Steel | 45d | 2027-03-09 | 2027-04-29 | 1511, 1514SS | 2027-03-09 | 2027-04-29 | 45d | 5d | 0d |  |
| 1516 | 1.5.1.2.3.2.4 | Sheeting and painting | 37d | 2027-04-30 | 2027-06-10 | 1515, 1513 | 2027-04-30 | 2027-06-10 | 37d | 33d | 28d |  |
| 1517 | 1.5.1.2.3.3 | **Mechanical Erection** | 145d | 2027-05-22 | 2027-11-06 |  | 2027-05-22 | 2027-11-06 | 145d | 5d |  |  |
| 1518 | 1.5.1.2.3.3.1 | Erection of Technological Structure | 30d | 2027-05-22 | 2027-06-25 | 1515FS+20d | 2027-05-22 | 2027-06-25 | 30d | 5d | 0d |  |
| 1519 | 1.5.1.2.3.3.2 | Erection of Idler Assly | 30d | 2027-07-14 | 2027-08-17 | 1518FS+15d, 1516 | 2027-07-14 | 2027-08-17 | 30d | 5d | 0d |  |
| 1520 | 1.5.1.2.3.3.3 | Erection of Pulleys | 20d | 2027-08-18 | 2027-09-09 | 1519SS+30d | 2027-08-18 | 2027-09-09 | 20d | 5d | 0d |  |
| 1521 | 1.5.1.2.3.3.4 | Erection of GearBox & Coupling | 15d | 2027-09-16 | 2027-10-02 | 1520FS+5d | 2027-09-16 | 2027-10-02 | 15d | 45d | 0d |  |
| 1522 | 1.5.1.2.3.3.5 | Erection of Metal Detector | 20d | 2027-08-05 | 2027-08-27 | 552FS+60d | 2027-08-05 | 2027-08-27 | 20d | 106d | 101d |  |
| 1523 | 1.5.1.2.3.3.6 | Erection of ILMS/CBMS | 25d | 2027-05-22 | 2027-06-19 | 558FS+60d | 2027-05-22 | 2027-06-19 | 25d | 165d | 160d |  |
| 1524 | 1.5.1.2.3.3.7 | Erection of Belting | 20d | 2027-10-15 | 2027-11-06 | 1521FS+10d | 2027-10-15 | 2027-11-06 | 20d | 45d | 40d |  |

| ID | WBS | Task | Duration | Start | Finish | Predecessors | Complete | Remaining | Baseline start | Baseline finish | Baseline duration | Total slack | Free slack | Text1 |
| --- | --- | --- | --- | --- | --- | --- | --- | --- | --- | --- | --- | --- | --- | --- |
| 1525 | 1.5.1.2.3.4 | **Electrical Erection** | 60d | 2027-10-15 | 2027-12-22 |  |  |  | 2027-10-15 | 2027-12-22 | 60d | 5d |  |  |
| 1526 | 1.5.1.2.3.4.1 | Erection of Motor | 15d | 2027-10-15 | 2027-11-01 | 1521FS+10d |  |  | 2027-10-15 | 2027-11-01 | 15d | 50d | 45d |  |
| 1527 | 1.5.1.2.3.4.2 | Erection of Electrical Equipments | 60d | 2027-10-15 | 2027-12-22 | 1520FS+30d |  |  | 2027-10-15 | 2027-12-22 | 60d | 5d | 0d |  |
| 1528 | 1.5.1.2.4 | **Secondary Crusher** | 529d | 2026-03-23 A | 2027-11-27 |  | 2% | 515.79d | 2026-04-01 | 2027-11-27 | 521d | 0d |  |  |
| 1529 | 1.5.1.2.4.1 | **Civil Work** | 290d | 2026-03-23 A | 2027-02-23 |  | 8% | 267.03d | 2026-04-01 | 2027-02-23 | 282d | 0d |  |  |
| 1530 | 1.5.1.2.4.1.1 | Road Diversion, Construction of Tunnel of Conv. 3009 including Retaining Wall | 37d | 2026-04-01 A | 2026-05-13 | 3FS+315d | 35% | 24.05d | 2026-04-01 | 2026-05-13 | 37d | 12d | 0d |  |
| 1531 | 1.5.1.2.4.1.2 | E/W in excavation | 24d | 2026-03-23 A | 2026-05-25 | 52SS+166d, 51, 1530FS-14d | 50% | 12d | 2026-04-28 | 2026-05-26 | 25d | 1d |  | cu.m. |
| 1532 | 1.5.1.2.4.1.3 | Dressing, Levelling and P.C.C. | 14d | 2026-05-27 | 2026-06-11 | 1531, 205FS+60d, 944FS+10d |  |  | 2026-05-28 | 2026-06-11 | 13d | 0d |  | cu.m. |
| 1533 | 1.5.1.2.4.1.4 | RCC work for Equipment Foundation | 130d | 2026-06-12 | 2026-11-10 | 1532 |  |  | 2026-06-12 | 2026-11-10 | 130d | 0d |  | cu.m. |
| 1534 | 1.5.1.2.4.1.5 | RCC work for Building Shed | 110d | 2026-10-19 | 2027-02-23 | 1533FS-20d |  |  | 2026-10-19 | 2027-02-23 | 110d | 0d |  | cu.m. |
| 1535 | 1.5.1.2.4.2 | **Structural and Sheeting Work** | 148d | 2026-11-11 | 2027-05-01 |  |  |  | 2026-11-11 | 2027-05-01 | 148d | 9d |  |  |
| 1536 | 1.5.1.2.4.2.1 | Supply of Fabricated Structure | 17d | 2026-11-11 | 2026-11-30 | 305SS+100d |  |  | 2026-11-11 | 2026-11-30 | 17d | 19d |  |  |
| 1537 | 1.5.1.2.4.2.2 | Erection of Structural Steel | 73d | 2026-12-03 | 2027-02-25 | 1534FS-71d, 1536SS |  |  | 2026-12-03 | 2027-02-25 | 73d | 0d |  | mt. |
| 1538 | 1.5.1.2.4.2.3 | Supply of Sheeting material | 27d | 2026-12-30 | 2027-01-29 | 308SS+156d |  |  | 2026-12-30 | 2027-01-29 | 27d | 19d | 10d |  |
| 1539 | 1.5.1.2.4.2.4 | Sheeting and painting | 69d | 2027-02-11 | 2027-05-01 | 1538, 1537SS+60d |  |  | 2027-02-11 | 2027-05-01 | 69d | 9d |  |  |
| 1540 | 1.5.1.2.4.3 | **Mechanical Erection** | 236d | 2027-01-27 | 2027-10-27 |  |  |  | 2027-01-27 | 2027-10-27 | 236d | 15d |  |  |
| 1541 | 1.5.1.2.4.3.1 | Erection of EOT Cranes (40/5T) | 50d | 2027-01-27 | 2027-03-25 | 498FS+13d, 1537FS-26d |  |  | 2027-01-27 | 2027-03-25 | 50d | 15d |  | no |
| 1542 | 1.5.1.2.4.3.2 | Erection of Cone Crusher | 146d | 2027-04-13 | 2027-09-28 | 323FS+73d, 1541, 480FS+73d, 1537FS+39d, 1539FF+120d |  |  | 2027-04-13 | 2027-09-28 | 146d | 0d |  | no |
| 1543 | 1.5.1.2.4.3.3 | Scalping Screen | 52d | 2027-07-14 | 2027-09-11 | 1542SS+80d, 492FS+180d |  |  | 2027-07-14 | 2027-09-11 | 52d | 66d |  |  |
| 1544 | 1.5.1.2.4.3.4 | Erection of Utility equipment like Fire Fighting, Dust Suppression System etc | 130d | 2027-05-29 | 2027-10-27 | 600FS+13d, 606FS+13d, 612FS+13d, 208FS+13d, 1539FS+13d |  |  | 2027-05-29 | 2027-10-27 | 130d | 27d |  |  |
| 1545 | 1.5.1.2.4.4 | **Electrical Erection** | 100d | 2027-08-04 | 2027-11-27 |  |  |  | 2027-08-04 | 2027-11-27 | 100d | 0d |  |  |
| 1546 | 1.5.1.2.4.4.1 | Erection of Cone Crusher Motor | 20d | 2027-08-24 | 2027-09-15 | 1542SS+115d |  |  | 2027-08-24 | 2027-09-15 | 20d | 63d |  |  |
| 1547 | 1.5.1.2.4.4.2 | Erection of Electrical Equipments | 100d | 2027-08-04 | 2027-11-27 | 1542SS+98d, 1541, 64FS+11d, 207FS+90d |  |  | 2027-08-04 | 2027-11-27 | 100d | 0d |  | lot |
| 1548 | 1.5.1.2.5 | **Conveyor 3009** | 493d | 2026-04-20 | 2027-11-13 |  |  |  | 2026-05-30 | 2027-11-13 | 458d | 44d |  |  |
| 1549 | 1.5.1.2.5.1 | **Civil Work** | 201d | 2026-04-20 | 2026-12-09 |  |  |  | 2026-05-30 | 2027-01-19 | 201d | 110d |  |  |
| 1550 | 1.5.1.2.5.1.1 | E/W in excavation | 19d | 2026-04-20 | 2026-05-11 | 211FS+7d |  |  | 2026-05-30 | 2026-06-20 | 19d | 110d | 0d |  |
| 1551 | 1.5.1.2.5.1.2 | Dressing, Levelling and PCC for Tunnel | 52d | 2026-05-12 | 2026-07-10 | 1550 |  |  | 2026-06-22 | 2026-08-20 | 52d | 110d | 0d |  |
| 1552 | 1.5.1.2.5.1.3 | Civil work for Tunnel including Conveyor foundations | 130d | 2026-07-11 | 2026-12-09 | 1551 |  |  | 2026-08-21 | 2027-01-19 | 130d | 110d | 45d |  |

| ID | WBS | Task | Duration | Start | Finish | Predecessors | Baseline start | Baseline finish | Baseline duration | Total slack | Free slack |
| --- | --- | --- | --- | --- | --- | --- | --- | --- | --- | --- | --- |
| 1553 | 1.5.1.2.5.2 | **Structural and Sheeting Work** | 102d | 2027-01-16 | 2027-05-14 |  | 2026-12-21 | 2027-05-03 | 115d | 65d |  |
| 1554 | 1.5.1.2.5.2.1 | Supply of Fabricated Structure | 28d | 2027-01-16 | 2027-02-17 | 212FS+200d | 2026-12-21 | 2027-01-21 | 28d | 65d | 0d |
| 1555 | 1.5.1.2.5.2.2 | Supply of Sheeting Material | 30d | 2027-02-19 | 2027-03-25 | 308SS+200d | 2027-02-19 | 2027-03-25 | 30d | 153d | 23d |
| 1556 | 1.5.1.2.5.2.3 | Erection of Structural Steel | 52d | 2027-02-01 | 2027-04-01 | 1552, 1554SS+13d | 2027-01-20 | 2027-03-20 | 52d | 65d | 0d |
| 1557 | 1.5.1.2.5.2.4 | Sheeting and painting | 37d | 2027-04-02 | 2027-05-14 | 1556, 1555SS+13d | 2027-03-22 | 2027-05-03 | 37d | 130d | 36d |
| 1558 | 1.5.1.2.5.3 | **Mechanical Erection** | 165d | 2027-03-10 | 2027-09-16 |  | 2027-03-10 | 2027-09-16 | 165d | 59d |  |
| 1559 | 1.5.1.2.5.3.1 | Erection of Technological Structure | 30d | 2027-03-10 | 2027-04-13 | 540SS+26d, 1556SS+26d, 1552 | 2027-03-10 | 2027-04-13 | 30d | 59d | 0d |
| 1560 | 1.5.1.2.5.3.2 | Erection of Idler Assly | 20d | 2027-05-07 | 2027-05-28 | 510FS+26d, 1559FS+20d | 2027-05-07 | 2027-05-28 | 20d | 59d | 0d |
| 1561 | 1.5.1.2.5.3.3 | Erection of Pulleys | 10d | 2027-06-10 | 2027-06-21 | 522FS+26d, 1560SS+30d | 2027-06-10 | 2027-06-21 | 10d | 59d | 0d |
| 1562 | 1.5.1.2.5.3.4 | Erection of Gear Box & Coupling | 15d | 2027-07-15 | 2027-07-31 | 516FS+52d, 1561FS+20d | 2027-07-15 | 2027-07-31 | 15d | 59d | 0d |
| 1563 | 1.5.1.2.5.3.5 | Erection of Belting | 20d | 2027-08-25 | 2027-09-16 | 528FS+150d, 1562FS+20d, 1557FS+52d | 2027-08-25 | 2027-09-16 | 20d | 94d | 50d |
| 1564 | 1.5.1.2.5.4 | **Electrical Erection** | 126d | 2027-06-21 | 2027-11-13 |  | 2027-06-21 | 2027-11-13 | 126d | 44d |  |
| 1565 | 1.5.1.2.5.4.1 | Erection of Motor | 45d | 2027-08-13 | 2027-10-04 | 799FS+26d, 1562FS+10d | 2027-08-13 | 2027-10-04 | 45d | 79d | 35d |
| 1566 | 1.5.1.2.5.4.2 | Erection of Electrical Equipment | 126d | 2027-06-21 | 2027-11-13 | 1559FS+40d, 793FS+13d, 805FS+26d, 811FS+26d, 817FS+13d, 823FS+13d | 2027-06-21 | 2027-11-13 | 126d | 44d | 0d |
| 1567 | 1.5.1.2.6 | **Transfer House TH1** | 446d | 2026-06-27 | 2027-11-27 |  | 2026-06-24 | 2027-11-27 | 449d | 22d |  |
| 1568 | 1.5.1.2.6.1 | **Civil Work** | 134d | 2026-06-27 | 2026-11-30 |  | 2026-06-24 | 2026-11-26 | 134d | 50d |  |
| 1569 | 1.5.1.2.6.1.1 | E/W in excavation | 10d | 2026-06-27 | 2026-07-08 | 215FS+26d | 2026-06-24 | 2026-07-04 | 10d | 50d | 0d |
| 1570 | 1.5.1.2.6.1.2 | Dressing, Levelling and P.C.C. | 7d | 2026-07-09 | 2026-07-16 | 1569 | 2026-07-06 | 2026-07-13 | 7d | 50d | 0d |
| 1571 | 1.5.1.2.6.1.3 | RCC work in Foundation | 39d | 2026-07-17 | 2026-08-31 | 1570 | 2026-07-14 | 2026-08-27 | 39d | 50d | 0d |
| 1572 | 1.5.1.2.6.1.4 | RCC work in Pedestal | 39d | 2026-09-01 | 2026-10-15 | 1571 | 2026-08-28 | 2026-10-12 | 39d | 50d | 0d |
| 1573 | 1.5.1.2.6.1.5 | Bolt Lift | 39d | 2026-10-16 | 2026-11-30 | 1572 | 2026-10-13 | 2026-11-26 | 39d | 50d | 0d |
| 1574 | 1.5.1.2.6.2 | **Structural Steel and Sheeting Work** | 90d | 2026-10-19 | 2027-01-30 |  | 2026-10-19 | 2027-01-27 | 87d | 67d |  |
| 1575 | 1.5.1.2.6.2.1 | Supply of Sheeting Material | 22d | 2026-11-25 | 2026-12-19 | 308SS+126d | 2026-11-25 | 2026-12-19 | 22d | 144d | 10d |
| 1576 | 1.5.1.2.6.2.2 | Supply of Fabricated Structure | 20d | 2026-10-19 | 2026-11-10 | 305SS+80d, 216FS+70d | 2026-10-19 | 2026-11-10 | 20d | 67d | 17d |
| 1577 | 1.5.1.2.6.2.3 | Erection of Structural Steel | 27d | 2026-12-01 | 2026-12-31 | 1573, 1576 | 2026-11-27 | 2026-12-28 | 27d | 50d | 0d |
| 1578 | 1.5.1.2.6.2.4 | Sheeting and painting | 26d | 2027-01-01 | 2027-01-30 | 1577, 1575 | 2026-12-29 | 2027-01-27 | 26d | 134d | 112d |

| ID | WBS | Task | Type | Duration | Start | Finish | Predecessors | Complete | Remaining | Baseline start | Baseline finish | Baseline duration | Total slack | Free slack |
| --- | --- | --- | --- | --- | --- | --- | --- | --- | --- | --- | --- | --- | --- | --- |
| 1579 | 1.5.1.2.6.3 | **Mechanical Erection** |  | 140d | 2027-03-10 | 2027-08-18 |  |  |  | 2027-03-10 | 2027-08-18 | 140d | 22d |  |
| 1580 | 1.5.1.2.6.3.1 | Erection of Technological Structure |  | 60d | 2027-03-10 | 2027-05-17 | 540SS+26d, 1577FS+30d |  |  | 2027-03-10 | 2027-05-17 | 60d | 22d | 0d |
| 1581 | 1.5.1.2.6.3.2 | Erection of Mechanical Equipment |  | 60d | 2027-06-10 | 2027-08-18 | 1580FS+20d, 570, 1578 |  |  | 2027-06-10 | 2027-08-18 | 60d | 22d | 0d |
| 1582 | 1.5.1.2.6.4 | **Electrical Erection** |  | 87d | 2027-08-19 | 2027-11-27 |  |  |  | 2027-08-19 | 2027-11-27 | 87d | 22d |  |
| 1583 | 1.5.1.2.6.4.1 | Erection of Electrical Equipment |  | 87d | 2027-08-19 | 2027-11-27 | 793FS+13d, 805FS+26d, 811FS+26d, 823FS+13d, 1580, 1581 |  |  | 2027-08-19 | 2027-11-27 | 87d | 22d | 0d |
| 1584 | 1.5.1.2.7 | **Conveyor 3010** |  | 562d | 2026-02-02 A | 2027-11-17 |  | 19% | 455.1d | 2026-06-26 | 2027-11-17 | 438d | 21d |  |
| 1585 | 1.5.1.2.7.1 | **Civil Work** |  | 199d | 2026-02-02 A | 2026-09-21 |  | 73% | 53.22d | 2026-06-26 | 2027-02-17 | 203d | 161d |  |
| 1586 | 1.5.1.2.7.1.1 | E/W in excavation | milestone | 0d | 2026-02-02 A | 2026-02-20 A | 219FS+39d | 100% |  | 2026-06-26 | 2026-07-20 | 21d |  |  |
| 1587 | 1.5.1.2.7.1.2 | Dressing, Levelling and PCC for Tunnel |  | 19d | 2026-02-21 A | 2026-03-14 A | 1586 | 100% |  | 2026-07-21 | 2026-11-18 | 104d |  |  |
| 1588 | 1.5.1.2.7.1.3 | Civil work for Tunnel including Conveyor foundations |  | 156d | 2026-03-16 A | 2026-09-21 | 1587SS+26d | 70% | 46.8d | 2026-08-20 | 2027-02-17 | 156d | 161d | 116d |
| 1589 | 1.5.1.2.7.2 | **Structural and Sheeting Work** |  | 113d | 2027-01-20 | 2027-05-29 |  |  |  | 2027-01-20 | 2027-05-31 | 114d | 45d |  |
| 1590 | 1.5.1.2.7.2.1 | Supply of Fabricated Structure |  | 28d | 2027-01-20 | 2027-02-20 | 212FS+56d, 220FS+100d, 305SS+160d |  |  | 2027-01-20 | 2027-02-20 | 28d | 45d | 0d |
| 1591 | 1.5.1.2.7.2.2 | Supply of Sheeting Material |  | 30d | 2027-03-15 | 2027-04-17 | 308SS+220d |  |  | 2027-03-15 | 2027-04-17 | 30d | 47d | 0d |
| 1592 | 1.5.1.2.7.2.3 | Erection of Structural Steel |  | 52d | 2027-02-04 | 2027-04-05 | 1588, 1590SS+13d |  |  | 2027-02-18 | 2027-04-19 | 52d | 45d | 11d |
| 1593 | 1.5.1.2.7.2.4 | Sheeting and painting |  | 37d | 2027-04-19 | 2027-05-29 | 1592, 1591 |  |  | 2027-04-20 | 2027-05-31 | 37d | 47d | 26d |
| 1594 | 1.5.1.2.7.3 | **Mechanical Erection** |  | 184d | 2027-03-08 | 2027-10-06 |  |  |  | 2027-03-08 | 2027-10-06 | 184d | 57d |  |
| 1595 | 1.5.1.2.7.3.1 | Erection of Technological Structure |  | 50d | 2027-05-04 | 2027-06-29 | 540FS+13d, 1588FS+30d, 1592, 1593FF |  |  | 2027-05-04 | 2027-06-29 | 50d | 21d | 0d |
| 1596 | 1.5.1.2.7.3.2 | Erection of Idler Assly |  | 45d | 2027-07-23 | 2027-09-13 | 510FS+26d, 1595FS+20d |  |  | 2027-07-23 | 2027-09-13 | 45d | 77d | 56d |
| 1597 | 1.5.1.2.7.3.3 | Erection of Pulleys |  | 25d | 2027-08-04 | 2027-09-01 | 522FS+26d, 1595FS+30d |  |  | 2027-08-04 | 2027-09-01 | 25d | 21d | 0d |
| 1598 | 1.5.1.2.7.3.4 | Erection of GearBox & Coupling |  | 20d | 2027-09-14 | 2027-10-06 | 516FS+52d, 534FS+52d, 1597FS+10d |  |  | 2027-09-14 | 2027-10-06 | 20d | 21d | 0d |
| 1599 | 1.5.1.2.7.3.5 | Erection of Belt Weigher |  | 26d | 2027-08-07 | 2027-09-06 | 564FS+26d |  |  | 2027-08-07 | 2027-09-06 | 26d | 83d | 62d |
| 1600 | 1.5.1.2.7.3.6 | Erection of Belting |  | 30d | 2027-03-08 | 2027-04-10 | 1611FS+10d |  |  | 2027-03-08 | 2027-04-10 | 30d | 211d | 190d |
| 1601 | 1.5.1.2.7.4 | **Electrical Erection** |  | 131d | 2027-06-18 | 2027-11-17 |  |  |  | 2027-06-18 | 2027-11-17 | 131d | 21d |  |
| 1602 | 1.5.1.2.7.4.1 | Erection of Conv. Motors |  | 26d | 2027-10-19 | 2027-11-17 | 646FS+26d, 1598FS+10d |  |  | 2027-10-19 | 2027-11-17 | 26d | 21d | 0d |
| 1603 | 1.5.1.2.7.4.2 | Erection of Electrical Equipments |  | 130d | 2027-06-18 | 2027-11-16 | 793FS+13d, 805, 811, 823FS+13d, 1595SS+40d |  |  | 2027-06-18 | 2027-11-16 | 130d | 22d | 1d |

| ID | WBS | Task | Duration | Start | Finish | Predecessors | Baseline start | Baseline finish | Baseline duration | Total slack | Free slack |
| --- | --- | --- | --- | --- | --- | --- | --- | --- | --- | --- | --- |
| 1604 | 1.5.1.2.8 | **Transfer House TH2** | 410d | 2026-07-20 | 2027-11-08 |  | 2026-07-20 | 2027-11-08 | 410d | 39d |  |
| 1605 | 1.5.1.2.8.1 | **Civil Work** | 135d | 2026-07-20 | 2026-12-23 |  | 2026-07-20 | 2026-12-23 | 135d | 47d |  |
| 1606 | 1.5.1.2.8.1.1 | E/W in excavation | 14d | 2026-07-20 | 2026-08-04 | 52FS+280d | 2026-07-20 | 2026-08-04 | 14d | 47d | 0d |
| 1607 | 1.5.1.2.8.1.2 | Dressing, Levelling and P.C.C. | 8d | 2026-08-05 | 2026-08-13 | 1606, 223FS+7d | 2026-08-05 | 2026-08-13 | 8d | 47d | 0d |
| 1608 | 1.5.1.2.8.1.3 | RCC work in Foundation | 60d | 2026-08-14 | 2026-10-22 | 1607 | 2026-08-14 | 2026-10-22 | 60d | 47d | 0d |
| 1609 | 1.5.1.2.8.1.4 | RCC work in Pedestal | 27d | 2026-10-23 | 2026-11-23 | 1608 | 2026-10-23 | 2026-11-23 | 27d | 47d | 0d |
| 1610 | 1.5.1.2.8.1.5 | Bolt Lift | 26d | 2026-11-24 | 2026-12-23 | 1609 | 2026-11-24 | 2026-12-23 | 26d | 47d | 0d |
| 1611 | 1.5.1.2.8.2 | **Structural Steel and Sheeting Work** | 130d | 2026-09-25 | 2027-02-23 |  | 2026-11-13 | 2027-02-23 | 88d | 124d | 0d |
| 1612 | 1.5.1.2.8.2.1 | Supply of Sheeting Material | 15d | 2026-12-30 | 2027-01-15 | 308SS+156d | 2026-12-30 | 2027-01-15 | 15d | 138d | 7d |
| 1613 | 1.5.1.2.8.2.2 | Supply of Fabricated Structure | 15d | 2026-09-25 | 2026-10-12 | 305SS+60d, 224FS+160d | 2026-11-13 | 2026-11-30 | 15d | 124d | 77d |
| 1614 | 1.5.1.2.8.2.3 | Erection of Structural Steel | 27d | 2026-12-24 | 2027-01-23 | 1610, 1613SS | 2026-12-24 | 2027-01-23 | 27d | 47d | 0d |
| 1615 | 1.5.1.2.8.2.4 | Sheeting and painting | 26d | 2027-01-25 | 2027-02-23 | 1614, 1612 | 2027-01-25 | 2027-02-23 | 26d | 131d | 96d |
| 1616 | 1.5.1.2.8.3 | **Mechanical Erection** | 140d | 2027-03-15 | 2027-08-23 |  | 2027-03-15 | 2027-08-23 | 140d | 35d |  |
| 1617 | 1.5.1.2.8.3.1 | Erection of Technological Structure | 60d | 2027-03-15 | 2027-05-21 | 540SS+30d, 1614FS+30d | 2027-03-15 | 2027-05-21 | 60d | 35d | 0d |
| 1618 | 1.5.1.2.8.3.2 | Erection of Mechanical Equipment | 60d | 2027-06-15 | 2027-08-23 | 1617FS+20d, 570, 1615 | 2027-06-15 | 2027-08-23 | 60d | 35d | 0d |
| 1619 | 1.5.1.2.8.4 | **Electrical Erection** | 66d | 2027-08-24 | 2027-11-08 |  | 2027-08-24 | 2027-11-08 | 66d | 39d |  |
| 1620 | 1.5.1.2.8.4.1 | Erection of Electrical Equipments | 66d | 2027-08-24 | 2027-11-08 | 793FS+13d, 805, 811, 823, 1617, 1618 | 2027-08-24 | 2027-11-08 | 66d | 39d | 0d |
| 1621 | 1.5.1.2.9 | **Conveyor 3011** | 452d | 2026-06-20 | 2027-11-27 |  | 2026-06-19 | 2027-11-27 | 453d | 7d |  |
| 1622 | 1.5.1.2.9.1 | **Civil Work** | 149d | 2026-06-20 | 2026-12-10 |  | 2026-06-19 | 2026-12-09 | 149d | 46d |  |
| 1623 | 1.5.1.2.9.1.1 | E/W in excavation | 27d | 2026-06-20 | 2026-07-21 | 227FS+20d | 2026-06-19 | 2026-07-20 | 27d | 46d | 0d |
| 1624 | 1.5.1.2.9.1.2 | RCC work in Foundation | 52d | 2026-07-22 | 2026-09-19 | 1623 | 2026-07-21 | 2026-09-18 | 52d | 46d | 0d |
| 1625 | 1.5.1.2.9.1.3 | RCC work in Pedestal | 35d | 2026-09-21 | 2026-10-30 | 1624 | 2026-09-19 | 2026-10-29 | 35d | 46d | 0d |
| 1626 | 1.5.1.2.9.1.4 | Bolt Lift | 35d | 2026-10-31 | 2026-12-10 | 1625 | 2026-10-30 | 2026-12-09 | 35d | 46d | 0d |
| 1627 | 1.5.1.2.9.2 | **Structural and Sheeting Work** | 96d | 2026-11-05 | 2027-02-24 |  | 2026-11-05 | 2027-02-23 | 95d | 46d |  |
| 1628 | 1.5.1.2.9.2.1 | Supply of Sheeting material | 13d | 2026-12-30 | 2027-01-13 | 308SS+156d | 2026-12-30 | 2027-01-13 | 13d | 56d | 10d |
| 1629 | 1.5.1.2.9.2.2 | Supply of Fabricated Structure | 13d | 2026-11-05 | 2026-11-19 | 305SS+95d, 228FS+100d | 2026-11-05 | 2026-11-19 | 13d | 77d | 31d |
| 1630 | 1.5.1.2.9.2.3 | Erection of Structural Steel | 39d | 2026-12-11 | 2027-01-25 | 1626, 1629SS | 2026-12-10 | 2027-01-23 | 39d | 46d | 0d |
| 1631 | 1.5.1.2.9.2.4 | Sheeting and painting | 26d | 2027-01-26 | 2027-02-24 | 1630, 1628 | 2027-01-25 | 2027-02-23 | 26d | 46d | 39d |

| ID | WBS | Task | Duration | Start | Finish | Predecessors | Baseline start | Baseline finish | Baseline duration | Total slack | Free slack |
| --- | --- | --- | --- | --- | --- | --- | --- | --- | --- | --- | --- |
| 1632 | 1.5.1.2.9.3 | **Mechanical Erection** | 171d | 2027-03-15 | 2027-09-28 |  | 2027-03-15 | 2027-09-28 | 171d | 7d |  |
| 1633 | 1.5.1.2.9.3.1 | Erection of Technological Structure | 50d | 2027-03-15 | 2027-05-11 | 540SS+30d, 1630FS-26d | 2027-03-15 | 2027-05-11 | 50d | 7d | 0d |
| 1634 | 1.5.1.2.9.3.2 | Erection of Idler Assly | 50d | 2027-04-12 | 2027-06-07 | 510FS+26d, 1633FS-26d, 1631 | 2027-04-12 | 2027-06-07 | 50d | 7d | 0d |
| 1635 | 1.5.1.2.9.3.3 | Erection of Pulleys | 25d | 2027-06-08 | 2027-07-06 | 522FS+26d, 1634 | 2027-06-08 | 2027-07-06 | 25d | 7d | 0d |
| 1636 | 1.5.1.2.9.3.4 | Erection of GearBox & Coupling | 20d | 2027-07-30 | 2027-08-21 | 516FS+52d, 1635FS+20d | 2027-07-30 | 2027-08-21 | 20d | 7d | 0d |
| 1637 | 1.5.1.2.9.3.5 | Erection of Belting | 30d | 2027-08-25 | 2027-09-28 | 528FS+150d, 1562FS+20d | 2027-08-25 | 2027-09-28 | 30d | 59d | 52d |
| 1638 | 1.5.1.2.9.4 | **Electrical Erection** | 69d | 2027-09-09 | 2027-11-27 |  | 2027-09-09 | 2027-11-27 | 69d | 7d |  |
| 1639 | 1.5.1.2.9.4.1 | Erection of Conv. Motors | 15d | 2027-09-09 | 2027-09-25 | 799FS+26d, 1636FS+15d | 2027-09-09 | 2027-09-25 | 15d | 7d | 0d |
| 1640 | 1.5.1.2.9.4.2 | Erection of Electrical Equipments | 54d | 2027-09-27 | 2027-11-27 | 793FS+13d, 805, 811, 817FS+13d, 823, 1633FS+20d, 1639 | 2027-09-27 | 2027-11-27 | 54d | 7d | 0d |
| 1641 | 1.5.1.2.10 | **Transfer House TH3** | 408d | 2026-07-27 | 2027-11-12 |  | 2026-07-15 | 2027-11-12 | 418d | 35d |  |
| 1642 | 1.5.1.2.10.1 | **Civil Work** | 163d | 2026-07-27 | 2027-02-01 |  | 2026-07-15 | 2027-01-20 | 163d | 98d |  |
| 1643 | 1.5.1.2.10.1.1 | E/W in excavation | 18d | 2026-07-27 | 2026-08-15 | 1682SS+26d, 231FS+13d | 2026-07-15 | 2026-08-04 | 18d | 98d | 0d |
| 1644 | 1.5.1.2.10.1.2 | Dressing, Levelling and P.C.C. | 10d | 2026-08-17 | 2026-08-27 | 1643 | 2026-08-05 | 2026-08-15 | 10d | 98d | 0d |
| 1645 | 1.5.1.2.10.1.3 | RCC work in Foundation | 65d | 2026-08-28 | 2026-11-11 | 1644 | 2026-08-17 | 2026-10-30 | 65d | 98d | 0d |
| 1646 | 1.5.1.2.10.1.4 | RCC work in Pedestal | 35d | 2026-11-12 | 2026-12-22 | 1645 | 2026-10-31 | 2026-12-10 | 35d | 98d | 0d |
| 1647 | 1.5.1.2.10.1.5 | Bolt Lift | 35d | 2026-12-23 | 2027-02-01 | 1646 | 2026-12-11 | 2027-01-20 | 35d | 98d | 0d |
| 1648 | 1.5.1.2.10.2 | **Structural Steel and Sheeting Work** | 95d | 2026-12-16 | 2027-04-05 |  | 2026-12-16 | 2027-04-05 | 95d | 129d |  |
| 1649 | 1.5.1.2.10.2.1 | Supply of Sheeting Material | 15d | 2027-02-19 | 2027-03-08 | 308SS+200d | 2027-02-19 | 2027-03-08 | 15d | 129d | 0d |
| 1650 | 1.5.1.2.10.2.2 | Supply of Fabricated Structure | 31d | 2026-12-16 | 2027-01-20 | 305SS+130d, 232FS+150d | 2026-12-16 | 2027-01-20 | 31d | 139d | 41d |
| 1651 | 1.5.1.2.10.2.3 | Erection of Structural Steel | 27d | 2027-02-02 | 2027-03-04 | 1647, 1650SS | 2027-01-21 | 2027-02-20 | 27d | 98d | 0d |
| 1652 | 1.5.1.2.10.2.4 | Sheeting and painting | 26d | 2027-03-06 | 2027-04-05 | 1651, 1649SS+13d | 2027-03-06 | 2027-04-05 | 26d | 129d | 31d |
| 1653 | 1.5.1.2.10.3 | **Mechanical Erection** | 125d | 2027-04-09 | 2027-08-31 |  | 2027-03-29 | 2027-08-19 | 125d | 98d |  |
| 1654 | 1.5.1.2.10.3.1 | Erection of Technological Structure | 60d | 2027-04-09 | 2027-06-16 | 540SS+30d, 1651FS+30d | 2027-03-29 | 2027-06-04 | 60d | 98d | 0d |
| 1655 | 1.5.1.2.10.3.2 | Erection of Mechanical Equipment | 45d | 2027-07-10 | 2027-08-31 | 1654FS+20d, 570, 1652FS+52d | 2027-06-29 | 2027-08-19 | 45d | 98d | 63d |

| ID | WBS | Task | Duration | Start | Finish | Predecessors | Baseline start | Baseline finish | Baseline duration | Total slack | Free slack | Text1 |
| --- | --- | --- | --- | --- | --- | --- | --- | --- | --- | --- | --- | --- |
| 1656 | 1.5.1.2.10.4 | **Electrical Erection** | 60d | 2027-09-04 | 2027-11-12 |  | 2027-09-04 | 2027-11-12 | 60d | 35d |  |  |
| 1657 | 1.5.1.2.10.4.1 | Erection of Electrical Equipments | 60d | 2027-09-04 | 2027-11-12 | 793FS+13d, 805, 811, 823, 1617FS+10d, 1618FS+10d | 2027-09-04 | 2027-11-12 | 60d | 35d | 0d |  |
| 1658 | 1.5.1.2.11 | **Primary Stock Pile and Conveyor 3012** | 495d | 2026-05-01 | 2027-11-27 |  | 2026-05-01 | 2027-11-27 | 495d | 0d |  |  |
| 1659 | 1.5.1.2.11.1 | **Civil Work** | 258d | 2026-05-01 | 2027-02-25 |  | 2026-05-01 | 2027-02-25 | 258d | 0d |  |  |
| 1660 | 1.5.1.2.11.1.1 | Construction of Retaining Wall | 109d | 2026-05-01 | 2026-09-04 | 3FS+329d, 235FS-23d | 2026-05-01 | 2026-09-04 | 109d | 0d |  |  |
| 1661 | 1.5.1.2.11.1.2 | Earth work in excavation and filling | 20d | 2026-09-05 | 2026-09-28 | 1660 | 2026-09-05 | 2026-09-28 | 20d | 0d |  | cu.m. |
| 1662 | 1.5.1.2.11.1.3 | Tipper Car raft of Tunnel, Apron Feeder foundations and Deck Slab for the Tipper rails | 129d | 2026-09-29 | 2027-02-25 | 1661 | 2026-09-29 | 2027-02-25 | 129d | 0d |  |  |
| 1663 | 1.5.1.2.11.1.4 | RCC work for Column Foundation for Structural Shed | 66d | 2026-09-29 | 2026-12-14 | 1661 | 2026-09-29 | 2026-12-14 | 66d | 0d |  | cu.m. |
| 1664 | 1.5.1.2.11.1.5 | Bot Lift for Structural Shed | 55d | 2026-10-29 | 2026-12-31 | 1663SS+26d | 2026-10-29 | 2026-12-31 | 55d | 0d |  | cu.m. |
| 1665 | 1.5.1.2.11.2 | **Structural Steel and Sheeting Work** | 206d | 2026-10-07 | 2027-06-02 |  | 2026-10-07 | 2027-06-02 | 206d | 44d |  |  |
| 1666 | 1.5.1.2.11.2.1 | Supply of Fabricated Structure | 26d | 2026-10-07 | 2026-11-05 | 305SS+70d | 2026-10-07 | 2026-11-05 | 26d | 44d |  |  |
| 1667 | 1.5.1.2.11.2.2 | Erection of Structural Steel | 78d | 2026-11-27 | 2027-02-25 | 1664SS+25d, 1666SS | 2026-11-27 | 2027-02-25 | 78d | 0d |  | mt |
| 1668 | 1.5.1.2.11.2.3 | Supply of Sheeting material | 26d | 2027-02-19 | 2027-03-20 | 308SS+200d | 2027-02-19 | 2027-03-20 | 26d | 127d | 0d |  |
| 1669 | 1.5.1.2.11.2.4 | Sheeting and painting | 77d | 2027-03-06 | 2027-06-02 | 1668SS+13d, 1667SS+61d | 2027-03-06 | 2027-06-02 | 77d | 127d | 46d |  |
| 1670 | 1.5.1.2.11.2.5 | Supply and Erection of Space Frame Structure | 100d | 2026-11-28 | 2027-03-24 | 1664SS+26d | 2026-11-28 | 2027-03-24 | 100d | 56d | 37d |  |
| 1671 | 1.5.1.2.11.3 | **Mechanical Erection** | 218d | 2027-02-26 | 2027-11-05 |  | 2027-02-26 | 2027-11-05 | 218d | 0d |  |  |
| 1672 | 1.5.1.2.11.3.1 | Erection Technological Structure | 60d | 2027-02-26 | 2027-05-06 | 1667, 1662 | 2027-02-26 | 2027-05-06 | 60d | 0d |  | mt |
| 1673 | 1.5.1.2.11.3.2 | Erection of Apron Feeder (1250TPH) | 101d | 2027-05-07 | 2027-08-31 | 1672, 486FS+100d, 1670, 1662 | 2027-05-07 | 2027-08-31 | 101d | 19d | 0d | no |
| 1674 | 1.5.1.2.11.3.3 | Erection of Hydraulic Gates | 37d | 2027-09-24 | 2027-11-05 | 546FS+60d, 1673FS+20d | 2027-09-24 | 2027-11-05 | 37d | 19d |  | no |
| 1675 | 1.5.1.2.11.3.4 | Erection of Motorised Tripper | 151d | 2027-05-07 | 2027-10-28 | 504FS+52d, 1672, 1662 | 2027-05-07 | 2027-10-28 | 151d | 26d |  | no |
| 1676 | 1.5.1.2.11.3.5 | Erection of Elevator | 26d | 2027-07-27 | 2027-08-25 | 576FS+26d, 1669 | 2027-07-27 | 2027-08-25 | 26d | 81d |  |  |
| 1677 | 1.5.1.2.11.3.6 | Erection of Utility equipment like Fire Fighting, Dust Suppression System etc | 130d | 2027-05-29 | 2027-10-27 | 238FS+13d, 600FS+13d, 606FS+13d, 612FS+13d | 2027-05-29 | 2027-10-27 | 130d | 27d |  |  |
| 1678 | 1.5.1.2.11.4 | **Electrical Erection** | 122d | 2027-07-09 | 2027-11-27 |  | 2027-07-09 | 2027-11-27 | 122d | 0d |  |  |
| 1679 | 1.5.1.2.11.4.1 | Erection of Electrical Equipments | 122d | 2027-07-09 | 2027-11-27 | 793FS+13d, 805, 811, 823, 1672FS+55d, 237FS+78d | 2027-07-09 | 2027-11-27 | 122d | 0d |  | lot |

| ID | WBS | Task | Duration | Start | Finish | Predecessors | Baseline start | Baseline finish | Baseline duration | Total slack | Free slack |
| --- | --- | --- | --- | --- | --- | --- | --- | --- | --- | --- | --- |
| 1680 | 1.5.1.2.12 | **Conveyor 3016** | 438d | 2026-06-26 | 2027-11-17 |  | 2026-06-15 | 2027-11-17 | 448d | 36d |  |
| 1681 | 1.5.1.2.12.1 | **Civil Work** | 114d | 2026-06-26 | 2026-11-05 |  | 2026-06-15 | 2026-10-24 | 114d | 98d |  |
| 1682 | 1.5.1.2.12.1.1 | Earth work in excavation and filling | 22d | 2026-06-26 | 2026-07-21 | 241FS+25d | 2026-06-15 | 2026-07-09 | 22d | 98d | 0d |
| 1683 | 1.5.1.2.12.1.2 | Dressing, Levelling and PCC for Tunnel | 13d | 2026-07-22 | 2026-08-05 | 1682 | 2026-07-10 | 2026-07-24 | 13d | 145d | 0d |
| 1684 | 1.5.1.2.12.1.3 | Civil work for Tunnel | 79d | 2026-08-06 | 2026-11-05 | 1683 | 2026-07-25 | 2026-10-24 | 79d | 145d | 110d |
| 1685 | 1.5.1.2.12.2 | **Mechanical Erection** | 155d | 2027-04-19 | 2027-10-14 |  | 2027-04-19 | 2027-10-14 | 155d | 35d |  |
| 1686 | 1.5.1.2.12.2.1 | Erection of Technological Structure | 45d | 2027-04-19 | 2027-06-08 | 1684FS+30d, 540 | 2027-04-19 | 2027-06-08 | 45d | 35d | 0d |
| 1687 | 1.5.1.2.12.2.2 | Erection of Idler Assly | 30d | 2027-07-02 | 2027-08-05 | 510FS+26d, 1686FS+20d | 2027-07-02 | 2027-08-05 | 30d | 35d | 0d |
| 1688 | 1.5.1.2.12.2.3 | Erection of Pulleys | 15d | 2027-07-26 | 2027-08-11 | 522, 1687SS+20d | 2027-07-26 | 2027-08-11 | 15d | 35d | 0d |
| 1689 | 1.5.1.2.12.2.4 | Erection of Gear Box & Coupling | 15d | 2027-08-12 | 2027-08-28 | 516, 534FS+52d, 1688 | 2027-08-12 | 2027-08-28 | 15d | 56d | 0d |
| 1690 | 1.5.1.2.12.2.5 | Erection of Belting | 20d | 2027-09-22 | 2027-10-14 | 528FS+150d, 1689FS+20d | 2027-09-22 | 2027-10-14 | 20d | 65d | 29d |
| 1691 | 1.5.1.2.12.3 | **Electrical Erection** | 126d | 2027-06-24 | 2027-11-17 |  | 2027-06-24 | 2027-11-17 | 126d | 36d |  |
| 1692 | 1.5.1.2.12.3.1 | Erection of Conv. Motors | 39d | 2027-09-10 | 2027-10-25 | 799FS+26d, 1689FS+10d | 2027-09-10 | 2027-10-25 | 39d | 56d | 20d |
| 1693 | 1.5.1.2.12.3.2 | Erection of Electrical Equipments | 126d | 2027-06-24 | 2027-11-17 | 793FS+13d, 805, 811, 823, 1686FS+13d | 2027-06-24 | 2027-11-17 | 126d | 36d | 0d |
| 1694 | 1.5.1.2.13 | **Transfer House TH4** | 408d | 2026-07-22 | 2027-11-08 |  | 2026-07-10 | 2027-11-08 | 418d | 39d |  |
| 1695 | 1.5.1.2.13.1 | **Civil Work** | 125d | 2026-07-22 | 2026-12-14 |  | 2026-07-10 | 2026-12-02 | 125d | 99d |  |
| 1696 | 1.5.1.2.13.1.1 | E/W in excavation | 15d | 2026-07-22 | 2026-08-07 | 1682, 1713 | 2026-07-10 | 2026-07-27 | 15d | 99d | 0d |
| 1697 | 1.5.1.2.13.1.2 | Dressing, Levelling and P.C.C. | 5d | 2026-08-08 | 2026-08-13 | 1696, 244FS+39d | 2026-07-28 | 2026-08-01 | 5d | 99d | 0d |
| 1698 | 1.5.1.2.13.1.3 | RCC work in Foundation | 35d | 2026-08-14 | 2026-09-23 | 1697 | 2026-08-03 | 2026-09-11 | 35d | 99d | 0d |
| 1699 | 1.5.1.2.13.1.4 | RCC work in Pedestal | 35d | 2026-09-24 | 2026-11-03 | 1698 | 2026-09-12 | 2026-10-22 | 35d | 99d | 0d |
| 1700 | 1.5.1.2.13.1.5 | Bolt Lift | 35d | 2026-11-04 | 2026-12-14 | 1699 | 2026-10-23 | 2026-12-02 | 35d | 99d | 0d |
| 1701 | 1.5.1.2.13.2 | **Structural Steel and Sheeting Work** | 113d | 2026-11-11 | 2027-03-22 |  | 2026-11-11 | 2027-03-22 | 113d | 114d |  |
| 1702 | 1.5.1.2.13.2.1 | Supply of Sheeting Material | 15d | 2027-02-08 | 2027-02-24 | 308SS+190d | 2027-02-08 | 2027-02-24 | 15d | 141d | 0d |
| 1703 | 1.5.1.2.13.2.2 | Supply of Fabricated Structure | 14d | 2026-11-11 | 2026-11-26 | 305SS+100d, 245FS+52d | 2026-11-11 | 2026-11-26 | 14d | 114d | 15d |
| 1704 | 1.5.1.2.13.2.3 | Erection of Structural Steel | 27d | 2026-12-15 | 2027-01-14 | 1700, 1703 | 2026-12-03 | 2027-01-02 | 27d | 99d | 33d |
| 1705 | 1.5.1.2.13.2.4 | Sheeting and painting | 24d | 2027-02-23 | 2027-03-22 | 1704, 1702SS+13d | 2027-02-23 | 2027-03-22 | 24d | 141d | 61d |

| ID | WBS | Task | Duration | Start | Finish | Predecessors | Baseline start | Baseline finish | Baseline duration | Total slack | Free slack |
| --- | --- | --- | --- | --- | --- | --- | --- | --- | --- | --- | --- |
| 1706 | 1.5.1.2.13.3 | **Mechanical Erection** | 135d | 2027-04-19 | 2027-09-21 |  | 2027-04-19 | 2027-09-21 | 135d | 39d |  |
| 1707 | 1.5.1.2.13.3.1 | Erection of Technological Structure | 60d | 2027-04-19 | 2027-06-25 | 540, 1704FS+20d | 2027-04-19 | 2027-06-25 | 60d | 39d | 0d |
| 1708 | 1.5.1.2.13.3.2 | Erection of Mechanical Equipment | 45d | 2027-07-31 | 2027-09-21 | 570FS+26d, 1707FS+30d, 1705FS+52d | 2027-07-31 | 2027-09-21 | 45d | 80d | 41d |
| 1709 | 1.5.1.2.13.4 | **Electrical Erection** | 90d | 2027-07-27 | 2027-11-08 |  | 2027-07-27 | 2027-11-08 | 90d | 39d |  |
| 1710 | 1.5.1.2.13.4.1 | Erection of Electrical Equipment | 90d | 2027-07-27 | 2027-11-08 | 793FS+15d, 805FS+15d, 811FS+15d, 823, 1707FS+26d | 2027-07-27 | 2027-11-08 | 90d | 39d | 0d |
| 1711 | 1.5.1.2.14 | **Transfer House TH5** | 429d | 2026-06-27 | 2027-11-08 |  | 2026-06-25 | 2027-11-08 | 431d | 39d |  |
| 1712 | 1.5.1.2.14.1 | **Civil Work** | 127d | 2026-06-27 | 2026-11-21 |  | 2026-06-25 | 2026-11-19 | 127d | 42d |  |
| 1713 | 1.5.1.2.14.1.1 | E/W in excavation | 13d | 2026-06-27 | 2026-07-11 | 248FS+26d | 2026-06-25 | 2026-07-09 | 13d | 42d | 0d |
| 1714 | 1.5.1.2.14.1.2 | Dressing, Levelling and P.C.C. | 10d | 2026-07-13 | 2026-07-23 | 1713 | 2026-07-10 | 2026-07-21 | 10d | 106d | 0d |
| 1715 | 1.5.1.2.14.1.3 | RCC work in Foundation | 52d | 2026-07-24 | 2026-09-22 | 1714 | 2026-07-22 | 2026-09-19 | 52d | 106d | 0d |
| 1716 | 1.5.1.2.14.1.4 | RCC work in Super Structure | 52d | 2026-09-23 | 2026-11-21 | 1715 | 2026-09-21 | 2026-11-19 | 52d | 106d | 0d |
| 1717 | 1.5.1.2.14.2 | **Structural Erection and Sheeting Work** | 63d | 2026-11-23 | 2027-02-03 |  | 2026-11-20 | 2027-02-01 | 63d | 106d |  |
| 1718 | 1.5.1.2.14.2.1 | Erection of Roof Structure | 39d | 2026-11-23 | 2027-01-06 | 1716 | 2026-11-20 | 2027-01-04 | 39d | 106d | 0d |
| 1719 | 1.5.1.2.14.2.2 | Roof Sheeting | 24d | 2027-01-07 | 2027-02-03 | 1718 | 2027-01-05 | 2027-02-01 | 24d | 107d | 76d |
| 1720 | 1.5.1.2.14.3 | **Mechanical Erection** | 135d | 2027-04-19 | 2027-09-21 |  | 2027-04-19 | 2027-09-21 | 135d | 39d |  |
| 1721 | 1.5.1.2.14.3.1 | Erection of Technological Structure | 60d | 2027-04-19 | 2027-06-25 | 540, 1718FS+20d | 2027-04-19 | 2027-06-25 | 60d | 39d | 0d |
| 1722 | 1.5.1.2.14.3.2 | Erection of Mechanical Equipment | 45d | 2027-07-31 | 2027-09-21 | 570FS+26d, 1721FS+30d | 2027-07-31 | 2027-09-21 | 45d | 80d | 41d |
| 1723 | 1.5.1.2.14.4 | **Electrical Erection** | 90d | 2027-07-27 | 2027-11-08 |  | 2027-07-27 | 2027-11-08 | 90d | 39d |  |
| 1724 | 1.5.1.2.14.4.1 | Erection of Electrical Equipment | 90d | 2027-07-27 | 2027-11-08 | 793, 805, 811, 823, 1721FS+26d | 2027-07-27 | 2027-11-08 | 90d | 39d | 0d |
| 1725 | 1.5.1.2.15 | **Conveyor 3017** | 418d | 2026-07-15 | 2027-11-12 |  | 2026-07-13 | 2027-11-12 | 420d | 35d |  |
| 1726 | 1.5.1.2.15.1 | **Civil Work** | 168d | 2026-07-15 | 2027-01-26 |  | 2026-07-13 | 2027-01-23 | 168d | 42d |  |
| 1727 | 1.5.1.2.15.1.1 | E/W in excavation | 10d | 2026-07-15 | 2026-07-25 | 1713FS+2d | 2026-07-13 | 2026-07-23 | 10d | 42d | 0d |
| 1728 | 1.5.1.2.15.1.2 | RCC work in Foundation | 78d | 2026-07-27 | 2026-10-24 | 1727, 252FS+26d | 2026-07-24 | 2026-10-22 | 78d | 69d | 0d |
| 1729 | 1.5.1.2.15.1.3 | RCC work in Pedestal | 40d | 2026-10-26 | 2026-12-10 | 1728 | 2026-10-23 | 2026-12-08 | 40d | 69d | 0d |
| 1730 | 1.5.1.2.15.1.4 | Bolt Lift | 40d | 2026-12-11 | 2027-01-26 | 1729 | 2026-12-09 | 2027-01-23 | 40d | 69d | 0d |

| ID | WBS | Task | Duration | Start | Finish | Predecessors | Baseline start | Baseline finish | Baseline duration | Total slack | Free slack |
| --- | --- | --- | --- | --- | --- | --- | --- | --- | --- | --- | --- |
| 1731 | 1.5.1.2.15.2 | **Structural Steel and Sheeting Work** | 102d | 2026-12-16 | 2027-04-13 |  | 2026-12-16 | 2027-04-10 | 100d | 93d |  |
| 1732 | 1.5.1.2.15.2.1 | Supply of Sheeting material | 13d | 2027-02-19 | 2027-03-05 | 308SS+200d | 2027-02-19 | 2027-03-05 | 13d | 176d | 7d |
| 1733 | 1.5.1.2.15.2.2 | Supply of Fabricated Structure | 13d | 2026-12-16 | 2026-12-30 | 305SS+130d, 253FS+52d | 2026-12-16 | 2026-12-30 | 13d | 93d | 24d |
| 1734 | 1.5.1.2.15.2.3 | Erection of Structural Steel | 39d | 2027-01-28 | 2027-03-13 | 1730FS+1d, 1733SS+13d | 2027-01-26 | 2027-03-11 | 39d | 69d | 0d |
| 1735 | 1.5.1.2.15.2.4 | Sheeting and painting | 26d | 2027-03-15 | 2027-04-13 | 1734, 1732SS+13d | 2027-03-12 | 2027-04-10 | 26d | 169d | 74d |
| 1736 | 1.5.1.2.15.3 | **Mehanical Erection** | 215.25d | 2027-03-08 | 2027-11-12 |  | 2027-01-13 | 2027-11-12 | 262d | 35d |  |
| 1737 | 1.5.1.2.15.3.1 | Erection of Technological Structure | 50d | 2027-04-19 | 2027-06-14 | 540, 1734FS+30d | 2027-04-19 | 2027-06-14 | 50d | 69d | 0d |
| 1738 | 1.5.1.2.15.3.2 | Erection of Idler Assly | 50d | 2027-07-08 | 2027-09-03 | 510, 1737FS+20d, 1735 | 2027-07-08 | 2027-09-03 | 50d | 95d | 60d |
| 1739 | 1.5.1.2.15.3.3 | Erection of Pulleys | 25d | 2027-03-08 | 2027-04-06 | 522, 1659SS+20d | 2027-01-13 | 2027-02-10 | 25d | 125.25d | 90.25d |
| 1740 | 1.5.1.2.15.3.4 | Erection of GearBox & Coupling | 20d | 2027-08-24 | 2027-09-15 | 516, 534FS+52d, 1688FS+10d | 2027-08-24 | 2027-09-15 | 20d | 35d | 0d |
| 1741 | 1.5.1.2.15.3.5 | Erection of Belting | 30d | 2027-10-09 | 2027-11-12 | 528, 1740FS+20d | 2027-10-09 | 2027-11-12 | 30d | 35d | 0d |
| 1742 | 1.5.1.2.15.4 | **Electrical Erection** | 130d | 2027-06-15 | 2027-11-12 |  | 2027-06-15 | 2027-11-12 | 130d | 35d |  |
| 1743 | 1.5.1.2.15.4.1 | Erection of Conv. Motors | 20d | 2027-10-21 | 2027-11-12 | 799, 1740FS+30d | 2027-10-21 | 2027-11-12 | 20d | 35d | 0d |
| 1744 | 1.5.1.2.15.4.2 | Erection of Electrical Equipments | 96d | 2027-06-15 | 2027-10-04 | 793, 805, 811, 823, 1737 | 2027-06-15 | 2027-10-04 | 96d | 69d | 34d |
| 1745 | 1.5.1.2.16 | **Transfer House TH6** | 428d | 2026-07-15 | 2027-11-24 |  | 2026-07-11 | 2027-11-24 | 431d | 25d |  |
| 1746 | 1.5.1.2.16.1 | **Civil Work** | 182d | 2026-07-15 | 2027-02-11 |  | 2026-07-11 | 2027-02-08 | 182d | 26d |  |
| 1747 | 1.5.1.2.16.1.1 | E/W in excavation | 16d | 2026-07-15 | 2026-08-01 | 1727FS-26d, 1764, 256FS+39d | 2026-07-11 | 2026-07-29 | 16d | 26d | 0d |
| 1748 | 1.5.1.2.16.1.2 | Dressing, Levelling and P.C.C. | 10d | 2026-08-03 | 2026-08-13 | 1747 | 2026-07-30 | 2026-08-10 | 10d | 26d | 0d |
| 1749 | 1.5.1.2.16.1.3 | RCC work in Foundation | 52d | 2026-08-14 | 2026-10-13 | 1748 | 2026-08-11 | 2026-10-09 | 52d | 26d | 0d |
| 1750 | 1.5.1.2.16.1.4 | RCC work in Pedestal | 52d | 2026-10-14 | 2026-12-12 | 1749 | 2026-10-10 | 2026-12-09 | 52d | 26d | 0d |
| 1751 | 1.5.1.2.16.1.5 | Bolt Lift | 52d | 2026-12-14 | 2027-02-11 | 1750 | 2026-12-10 | 2027-02-08 | 52d | 26d | 0d |
| 1752 | 1.5.1.2.16.2 | **Structural Steel and Sheeting Work** | 91d | 2027-01-08 | 2027-04-23 |  | 2027-01-08 | 2027-04-20 | 88d | 56d |  |
| 1753 | 1.5.1.2.16.2.1 | Supply of Sheeting Material | 15d | 2027-02-19 | 2027-03-08 | 308SS+200d | 2027-02-19 | 2027-03-08 | 15d | 127d | 14d |
| 1754 | 1.5.1.2.16.2.2 | Supply of Fabricated Structure | 14d | 2027-01-08 | 2027-01-23 | 305SS+150d, 257FS+39d | 2027-01-08 | 2027-01-23 | 14d | 56d | 30d |
| 1755 | 1.5.1.2.16.2.3 | Erection of Structural Steel | 35d | 2027-02-12 | 2027-03-24 | 1751, 1754SS | 2027-02-09 | 2027-03-20 | 35d | 26d | 0d |
| 1756 | 1.5.1.2.16.2.4 | Sheeting and painting | 26d | 2027-03-25 | 2027-04-23 | 1755, 1753 | 2027-03-22 | 2027-04-20 | 26d | 113d | 33d |

| ID | WBS | Task | Duration | Start | Finish | Predecessors | Baseline start | Baseline finish | Baseline duration | Total slack | Free slack |
| --- | --- | --- | --- | --- | --- | --- | --- | --- | --- | --- | --- |
| 1757 | 1.5.1.2.16.3 | **Mechanical Erection** | 135d | 2027-04-19 | 2027-09-21 |  | 2027-04-19 | 2027-09-21 | 135d | 25d |  |
| 1758 | 1.5.1.2.16.3.1 | Erection of Technological Structure | 60d | 2027-04-19 | 2027-06-25 | 540, 1755FS+20d | 2027-04-19 | 2027-06-25 | 60d | 25d | 0d |
| 1759 | 1.5.1.2.16.3.2 | Erection of Mechanical Equipment | 45d | 2027-07-31 | 2027-09-21 | 570FS+26d, 1758FS+30d, 1756FS+52d | 2027-07-31 | 2027-09-21 | 45d | 80d | 55d |
| 1760 | 1.5.1.2.16.4 | **Electrical Erection** | 85d | 2027-08-18 | 2027-11-24 |  | 2027-08-18 | 2027-11-24 | 85d | 25d |  |
| 1761 | 1.5.1.2.16.4.1 | Erection of Electrical Equipment | 85d | 2027-08-18 | 2027-11-24 | 793, 805, 811, 823, 1758FS+45d | 2027-08-18 | 2027-11-24 | 85d | 25d | 0d |
| 1762 | 1.5.1.2.17 | **Transfer House TH7** | 422d | 2026-06-27 | 2027-10-30 |  | 2026-06-24 | 2027-10-30 | 425d | 26d |  |
| 1763 | 1.5.1.2.17.1 | **Civil Work** | 170d | 2026-06-27 | 2027-01-11 |  | 2026-06-24 | 2027-01-07 | 170d | 26d |  |
| 1764 | 1.5.1.2.17.1.1 | E/W in excavation | 15d | 2026-06-27 | 2026-07-14 | 260FS+26d | 2026-06-24 | 2026-07-10 | 15d | 26d | 0d |
| 1765 | 1.5.1.2.17.1.2 | Dressing, Levelling and P.C.C. | 7d | 2026-07-15 | 2026-07-22 | 1764 | 2026-07-11 | 2026-07-18 | 7d | 74d | 0d |
| 1766 | 1.5.1.2.17.1.3 | RCC work in Foundation | 70d | 2026-07-23 | 2026-10-12 | 1765 | 2026-07-20 | 2026-10-08 | 70d | 74d | 0d |
| 1767 | 1.5.1.2.17.1.4 | RCC work in Pedestal | 26d | 2026-10-13 | 2026-11-11 | 1766 | 2026-10-09 | 2026-11-07 | 26d | 74d | 0d |
| 1768 | 1.5.1.2.17.1.5 | Bolt Lift | 52d | 2026-11-12 | 2027-01-11 | 1767 | 2026-11-09 | 2027-01-07 | 52d | 74d | 0d |
| 1769 | 1.5.1.2.17.2 | **Structural Steel and Sheeting Work** | 84d | 2026-12-16 | 2027-03-23 |  | 2026-12-16 | 2027-03-19 | 81d | 97d |  |
| 1770 | 1.5.1.2.17.2.1 | Supply of Sheeting Material | 15d | 2027-01-15 | 2027-02-01 | 308SS+170d | 2027-01-15 | 2027-02-01 | 15d | 157d | 17d |
| 1771 | 1.5.1.2.17.2.2 | Supply of Fabricated Structure | 14d | 2026-12-16 | 2026-12-31 | 305SS+130d, 261FS+39d | 2026-12-16 | 2026-12-31 | 14d | 97d | 23d |
| 1772 | 1.5.1.2.17.2.3 | Erection of Structural Steel | 35d | 2027-01-12 | 2027-02-20 | 1768, 1771SS | 2027-01-08 | 2027-02-17 | 35d | 74d | 0d |
| 1773 | 1.5.1.2.17.2.4 | Sheeting and painting | 26d | 2027-02-22 | 2027-03-23 | 1772, 1770 | 2027-02-18 | 2027-03-19 | 26d | 140d | 60d |
| 1774 | 1.5.1.2.17.3 | **Mechanical Erection** | 135d | 2027-04-19 | 2027-09-21 |  | 2027-04-19 | 2027-09-21 | 135d | 46d |  |
| 1775 | 1.5.1.2.17.3.1 | Erection of Technological Structure | 60d | 2027-04-19 | 2027-06-25 | 540, 1772FS+20d | 2027-04-19 | 2027-06-25 | 60d | 46d | 0d |
| 1776 | 1.5.1.2.17.3.2 | Erection of Mechanical Equipment | 45d | 2027-07-31 | 2027-09-21 | 570, 1775FS+30d, 1773FS+52d | 2027-07-31 | 2027-09-21 | 45d | 80d | 34d |
| 1777 | 1.5.1.2.17.4 | **Electrical Erection** | 96d | 2027-07-12 | 2027-10-30 |  | 2027-07-12 | 2027-10-30 | 96d | 46d |  |
| 1778 | 1.5.1.2.17.4.1 | Erection of Electrical Equipment | 96d | 2027-07-12 | 2027-10-30 | 793, 805, 811, 823, 1775FS+13d | 2027-07-12 | 2027-10-30 | 96d | 46d | 0d |
| 1779 | 1.5.1.2.18 | **Conveyor 2017A** | 368d | 2026-08-29 | 2027-10-30 |  | 2026-08-25 | 2027-10-30 | 372d | 56d |  |
| 1780 | 1.5.1.2.18.1 | **Civil Work** | 101d | 2026-08-29 | 2026-12-24 |  | 2026-08-25 | 2026-12-19 | 101d | 105d |  |
| 1781 | 1.5.1.2.18.1.1 | E/W in excavation | 20d | 2026-08-29 | 2026-09-21 | 264FS+80d | 2026-08-25 | 2026-09-16 | 20d | 105d | 0d |
| 1782 | 1.5.1.2.18.1.2 | RCC work in Foundation | 28d | 2026-09-22 | 2026-10-23 | 1781 | 2026-09-17 | 2026-10-19 | 28d | 105d | 0d |
| 1783 | 1.5.1.2.18.1.3 | RCC work in Pedestal | 26d | 2026-10-24 | 2026-11-23 | 1782 | 2026-10-20 | 2026-11-18 | 26d | 105d | 0d |
| 1784 | 1.5.1.2.18.1.4 | Bolt Lift | 27d | 2026-11-24 | 2026-12-24 | 1783 | 2026-11-19 | 2026-12-19 | 27d | 105d | 0d |

| ID | WBS | Task | Duration | Start | Finish | Predecessors | Baseline start | Baseline finish | Baseline duration | Total slack | Free slack |
| --- | --- | --- | --- | --- | --- | --- | --- | --- | --- | --- | --- |
| 1785 | 1.5.1.2.18.2 | **Structural Steel and Sheeting Work** | 99d | 2026-11-23 | 2027-03-17 |  | 2026-11-23 | 2027-03-12 | 95d | 105d |  |
| 1786 | 1.5.1.2.18.2.1 | Supply of Sheeting material | 13d | 2027-01-04 | 2027-01-18 | 308SS+160d | 2027-01-04 | 2027-01-18 | 13d | 129d | 24d |
| 1787 | 1.5.1.2.18.2.2 | Supply of Fabricated Structure | 13d | 2026-11-23 | 2026-12-07 | 305SS+110d, 265FS+100d | 2026-11-23 | 2026-12-07 | 13d | 133d | 28d |
| 1788 | 1.5.1.2.18.2.3 | Erection of Structural Steel | 45d | 2026-12-25 | 2027-02-15 | 1784, 1787SS | 2026-12-21 | 2027-02-10 | 45d | 105d | 0d |
| 1789 | 1.5.1.2.18.2.4 | Sheeting and painting | 26d | 2027-02-16 | 2027-03-17 | 1788, 1786 | 2027-02-11 | 2027-03-12 | 26d | 105d | 45d |
| 1790 | 1.5.1.2.18.3 | **Mechanical Erection** | 165d | 2027-04-19 | 2027-10-26 |  | 2027-04-19 | 2027-10-26 | 165d | 56d |  |
| 1791 | 1.5.1.2.18.3.1 | Erection of Technological Structure | 50d | 2027-04-19 | 2027-06-14 | 540, 1803FS+30d | 2027-04-19 | 2027-06-14 | 50d | 56d | 0d |
| 1792 | 1.5.1.2.18.3.2 | Erection of Idler Assly | 50d | 2027-07-08 | 2027-09-03 | 510, 1791FS+20d, 1789FS+52d | 2027-07-08 | 2027-09-03 | 50d | 60d | 0d |
| 1793 | 1.5.1.2.18.3.3 | Erection of Pulleys | 25d | 2027-07-31 | 2027-08-28 | 522, 1792SS+20d | 2027-07-31 | 2027-08-28 | 25d | 60d | 0d |
| 1794 | 1.5.1.2.18.3.4 | Erection of GearBox & Coupling | 20d | 2027-08-30 | 2027-09-21 | 516, 534, 1793 | 2027-08-30 | 2027-09-21 | 20d | 60d | 0d |
| 1795 | 1.5.1.2.18.3.5 | Erection of Belting | 30d | 2027-09-22 | 2027-10-26 | 528, 1794 | 2027-09-22 | 2027-10-26 | 30d | 60d | 4d |
| 1796 | 1.5.1.2.18.4 | **Electrical Erection** | 106d | 2027-06-30 | 2027-10-30 |  | 2027-06-30 | 2027-10-30 | 106d | 56d |  |
| 1797 | 1.5.1.2.18.4.1 | Erection of Conv. Motors | 20d | 2027-10-04 | 2027-10-26 | 799, 1794FS+10d | 2027-10-04 | 2027-10-26 | 20d | 60d | 4d |
| 1798 | 1.5.1.2.18.4.2 | Erection of Electrical Equipments | 106d | 2027-06-30 | 2027-10-30 | 793, 805, 811, 823, 1791FS+13d | 2027-06-30 | 2027-10-30 | 106d | 56d | 0d |
| 1799 | 1.5.1.2.19 | **Conveyor 3018** | 428d | 2026-06-20 | 2027-10-30 |  | 2026-06-15 | 2027-10-30 | 433d | 36d |  |
| 1800 | 1.5.1.2.19.1 | **Civil Work** | 176d | 2026-06-20 | 2027-01-11 |  | 2026-06-15 | 2027-01-05 | 176d | 48d |  |
| 1801 | 1.5.1.2.19.1.1 | E/W in excavation | 26d | 2026-06-20 | 2026-07-20 | 268FS+20d | 2026-06-15 | 2026-07-14 | 26d | 48d | 0d |
| 1802 | 1.5.1.2.19.1.2 | RCC work in Foundation | 60d | 2026-07-21 | 2026-09-28 | 1801 | 2026-07-15 | 2026-09-22 | 60d | 48d | 0d |
| 1803 | 1.5.1.2.19.1.3 | RCC work in Pedestal | 40d | 2026-09-29 | 2026-11-13 | 1802 | 2026-09-23 | 2026-11-07 | 40d | 48d | 0d |
| 1804 | 1.5.1.2.19.1.4 | Bolt Lift | 50d | 2026-11-14 | 2027-01-11 | 1803 | 2026-11-09 | 2027-01-05 | 50d | 48d | 0d |
| 1805 | 1.5.1.2.19.2 | **Structural Steel and Sheeting Work** | 94d | 2026-12-16 | 2027-04-03 |  | 2026-12-16 | 2027-03-29 | 89d | 71d |  |
| 1806 | 1.5.1.2.19.2.1 | Supply of Sheeting material | 13d | 2027-01-15 | 2027-01-29 | 308SS+170d | 2027-01-15 | 2027-01-29 | 13d | 151d | 29d |
| 1807 | 1.5.1.2.19.2.2 | Supply of Fabricated Structure | 13d | 2026-12-16 | 2026-12-30 | 305SS+130d, 269FS+52d | 2026-12-16 | 2026-12-30 | 13d | 71d | 23d |
| 1808 | 1.5.1.2.19.2.3 | Erection of Structural Steel | 45d | 2027-01-12 | 2027-03-04 | 1804, 1807SS | 2027-01-06 | 2027-02-26 | 45d | 48d | 0d |
| 1809 | 1.5.1.2.19.2.4 | Sheeting and painting | 26d | 2027-03-05 | 2027-04-03 | 1808, 1806 | 2027-02-27 | 2027-03-29 | 26d | 122d | 46d |

| ID | WBS | Task | Duration | Start | Finish | Predecessors | Baseline start | Baseline finish | Baseline duration | Total slack | Free slack |
| --- | --- | --- | --- | --- | --- | --- | --- | --- | --- | --- | --- |
| 1810 | 1.5.1.2.19.3 | **Mechanical Erection** | 155d | 2027-03-19 | 2027-09-14 |  | 2027-03-19 | 2027-09-14 | 155d | 36d |  |
| 1811 | 1.5.1.2.19.3.1 | Erection of Technological Structure | 60d | 2027-03-19 | 2027-05-26 | 540FS-26d, 1808 | 2027-03-19 | 2027-05-26 | 60d | 36d | 0d |
| 1812 | 1.5.1.2.19.3.2 | Erection of Idler Assly | 50d | 2027-05-27 | 2027-07-23 | 510, 1811, 1809 | 2027-05-27 | 2027-07-23 | 50d | 76d | 0d |
| 1813 | 1.5.1.2.19.3.3 | Erection of Pulleys | 25d | 2027-06-19 | 2027-07-17 | 522, 1812SS+20d | 2027-06-19 | 2027-07-17 | 25d | 76d | 0d |
| 1814 | 1.5.1.2.19.3.4 | Erection of GearBox & Coupling | 20d | 2027-07-19 | 2027-08-10 | 516, 534, 1813 | 2027-07-19 | 2027-08-10 | 20d | 76d | 0d |
| 1815 | 1.5.1.2.19.3.5 | Erection of Belting | 30d | 2027-08-11 | 2027-09-14 | 528, 1814 | 2027-08-11 | 2027-09-14 | 30d | 76d | 40d |
| 1816 | 1.5.1.2.19.4 | **Electrical Erection** | 90d | 2027-07-19 | 2027-10-30 |  | 2027-07-19 | 2027-10-30 | 90d | 36d |  |
| 1817 | 1.5.1.2.19.4.1 | Erection of Conv. Motors | 15d | 2027-08-23 | 2027-09-08 | 799, 1814FS+10d | 2027-08-23 | 2027-09-08 | 15d | 81d | 45d |
| 1818 | 1.5.1.2.19.4.2 | Erection of Electrical Equipments | 90d | 2027-07-19 | 2027-10-30 | 793, 805, 811, 823, 1811FS+45d | 2027-07-19 | 2027-10-30 | 90d | 36d | 0d |
| 1819 | 1.5.1.2.20 | **Transfer House TH8** | 424.08d | 2026-06-19 | 2027-10-26 |  | 2026-06-17 | 2027-10-26 | 426.08d | 50d |  |
| 1820 | 1.5.1.2.20.1 | **Civil Work** | 156d | 2026-06-19 | 2026-12-18 |  | 2026-06-17 | 2026-12-16 | 156d | 106.08d |  |
| 1821 | 1.5.1.2.20.1.1 | E/W in excavation | 26d | 2026-06-19 | 2026-07-20 | 272FS+20d | 2026-06-17 | 2026-07-17 | 26d | 106.08d | 0d |
| 1822 | 1.5.1.2.20.1.2 | Dressing, Levelling and P.C.C. | 10d | 2026-07-20 | 2026-07-31 | 1821 | 2026-07-17 | 2026-07-29 | 10d | 106.08d | 0d |
| 1823 | 1.5.1.2.20.1.3 | RCC work in Foundation | 40d | 2026-07-31 | 2026-09-16 | 1822 | 2026-07-29 | 2026-09-14 | 40d | 106.08d | 0d |
| 1824 | 1.5.1.2.20.1.4 | RCC work in Pedestal | 40d | 2026-09-16 | 2026-11-02 | 1823 | 2026-09-14 | 2026-10-30 | 40d | 106.08d | 0d |
| 1825 | 1.5.1.2.20.1.5 | Bolt Lift | 40d | 2026-11-02 | 2026-12-18 | 1824 | 2026-10-30 | 2026-12-16 | 40d | 106.08d | 0d |
| 1826 | 1.5.1.2.20.2 | **Strucural Steel and Sheeting Work** | 105.92d | 2026-10-16 | 2027-02-16 |  | 2026-10-16 | 2027-02-13 | 103.92d | 148d |  |
| 1827 | 1.5.1.2.20.2.1 | Supply of Sheeting Material | 15d | 2026-12-07 | 2026-12-23 | 308SS+136d | 2026-12-07 | 2026-12-23 | 15d | 185d | 22.92d |
| 1828 | 1.5.1.2.20.2.2 | Supply of Fabricated Structure | 14d | 2026-10-16 | 2026-10-31 | 305SS+78d, 273FS+39d | 2026-10-16 | 2026-10-31 | 14d | 148d | 41.92d |
| 1829 | 1.5.1.2.20.2.3 | Erection of Structural Steel | 27d | 2026-12-18 | 2027-01-19 | 1825, 1828SS+13d | 2026-12-16 | 2027-01-16 | 27d | 106.08d | 0d |
| 1830 | 1.5.1.2.20.2.4 | Sheeting and painting | 24d | 2027-01-19 | 2027-02-16 | 1829, 1827 | 2027-01-16 | 2027-02-13 | 24d | 162.08d | 52.08d |
| 1831 | 1.5.1.2.20.3 | **Mechanical Erection** | 105d | 2027-04-19 | 2027-08-17 |  | 2027-04-19 | 2027-08-17 | 105d | 50d |  |
| 1832 | 1.5.1.2.20.3.1 | Erection of Technological Structure | 60d | 2027-04-19 | 2027-06-25 | 540, 1829FS+20d | 2027-04-19 | 2027-06-25 | 60d | 50d | 0d |
| 1833 | 1.5.1.2.20.3.2 | Erection of Mechanical Equipment | 45d | 2027-06-26 | 2027-08-17 | 570, 1832, 1830FS+60d | 2027-06-26 | 2027-08-17 | 45d | 110d | 60d |

| ID | WBS | Task | Duration | Start | Finish | Predecessors | Baseline start | Baseline finish | Baseline duration | Total slack | Free slack |
| --- | --- | --- | --- | --- | --- | --- | --- | --- | --- | --- | --- |
| 1834 | 1.5.1.2.20.4 | **Electrical Erection** | 60d | 2027-08-18 | 2027-10-26 |  | 2027-08-18 | 2027-10-26 | 60d | 50d |  |
| 1835 | 1.5.1.2.20.4.1 | Erection of Electrical Equipment | 60d | 2027-08-18 | 2027-10-26 | 793, 805, 811, 823, 1832FS+45d | 2027-08-18 | 2027-10-26 | 60d | 50d | 0d |
| 1836 | 1.5.1.2.21 | **Substation 1** | 470d | 2026-05-27 | 2027-11-25 |  | 2026-05-01 | 2027-10-29 | 470d | 4.2d |  |
| 1837 | 1.5.1.2.21.1 | **Civil Work** | 335d | 2026-05-27 | 2027-06-21 |  | 2026-05-01 | 2027-05-25 | 335d | 4.2d |  |
| 1838 | 1.5.1.2.21.1.1 | Excavation for Foundation | 25d | 2026-05-27 | 2026-06-25 | 276 | 2026-05-01 | 2026-05-29 | 25d | 4.2d | 0d |
| 1839 | 1.5.1.2.21.1.2 | RCC works upto plinth level | 52d | 2026-06-25 | 2026-08-25 | 1838 | 2026-05-30 | 2026-07-29 | 52d | 4.2d | 0d |
| 1840 | 1.5.1.2.21.1.3 | RCC work upto ground floor level | 65d | 2026-08-12 | 2026-10-27 | 1839SS+41d | 2026-07-17 | 2026-09-30 | 65d | 4.2d | 0d |
| 1841 | 1.5.1.2.21.1.4 | RCC work for ground floor roof | 52d | 2026-10-27 | 2026-12-26 | 1840 | 2026-10-01 | 2026-11-30 | 52d | 4.2d | 0d |
| 1842 | 1.5.1.2.21.1.5 | Ground Floor Roof Concreting | 1d | 2026-12-26 | 2026-12-28 | 1841 | 2026-12-01 | 2026-12-01 | 1d | 63.2d | 0d |
| 1843 | 1.5.1.2.21.1.6 | Balance RCC work upto 1st roof level | 32d | 2027-01-02 | 2027-02-09 | 1842FS+5d | 2026-12-08 | 2027-01-13 | 32d | 63.2d | 0d |
| 1844 | 1.5.1.2.21.1.7 | 1st floor roof Concreting | 1d | 2027-02-09 | 2027-02-10 | 1843 | 2027-01-14 | 2027-01-14 | 1d | 63.2d | 11d |
| 1845 | 1.5.1.2.21.1.8 | Flooring | 40d | 2027-03-11 | 2027-04-27 | 1846, 1844FS+14d | 2027-02-13 | 2027-03-31 | 40d | 52.2d | 48d |
| 1846 | 1.5.1.2.21.1.9 | Brick work | 64d | 2026-12-26 | 2027-03-11 | 1841 | 2026-12-01 | 2027-02-12 | 64d | 4.2d | 0d |
| 1847 | 1.5.1.2.21.1.10 | Plastering | 38d | 2027-02-12 | 2027-03-29 | 1846SS+41d | 2027-01-18 | 2027-03-02 | 38d | 4.2d | 0d |
| 1848 | 1.5.1.2.21.1.11 | Painting & Finishing works | 73d | 2027-03-29 | 2027-06-21 | 1847, 1845FF | 2027-03-03 | 2027-05-25 | 73d | 4.2d | 0d |
| 1849 | 1.5.1.2.21.2 | **Electrical Erection** | 135d | 2027-06-21 | 2027-11-25 |  | 2027-05-26 | 2027-10-29 | 135d | 4.2d |  |
| 1850 | 1.5.1.2.21.2.1 | Erection of Electrical Equipments | 135d | 2027-06-21 | 2027-11-25 | 781FS+26d, 793, 811, 817FS+13d, 823, 835FS+13d, 841FF+13d, 1848, 64FS+11d, 275 | 2027-05-26 | 2027-10-29 | 135d | 4.2d | 0d |
| 1851 | 1.5.1.2.21.2.2 | Erection of 6.6/0.433 Transformers | 52d | 2027-08-14 | 2027-10-13 | 775FS+78d, 787FS+13d | 2027-08-14 | 2027-10-13 | 52d | 41d | 36.8d |
| 1852 | 1.5.1.2.22 | **Substation 2** | 495d | 2026-04-02 | 2027-10-29 |  | 2026-04-02 | 2027-10-29 | 495d | 27d |  |
| 1853 | 1.5.1.2.22.1 | **Civil Work** | 282d | 2026-04-02 | 2027-02-24 |  | 2026-04-02 | 2027-02-24 | 282d | 105d |  |
| 1854 | 1.5.1.2.22.1.1 | Availability of clearence from NMDC | 13d | 2026-04-02 | 2026-04-16 | 4FS+196d | 2026-04-02 | 2026-04-16 | 13d | 105d | 0d |
| 1855 | 1.5.1.2.22.1.2 | Preparation of Approach Road | 13d | 2026-04-17 | 2026-05-01 | 1854 | 2026-04-17 | 2026-05-01 | 13d | 105d | 0d |
| 1856 | 1.5.1.2.22.1.3 | Excavation for Foundation | 15d | 2026-05-02 | 2026-05-19 | 1855 | 2026-05-02 | 2026-05-19 | 15d | 105d | 0d |
| 1857 | 1.5.1.2.22.1.4 | RCC works upto plinth level | 52d | 2026-05-20 | 2026-07-18 | 1856, 279FS+40d | 2026-05-20 | 2026-07-18 | 52d | 105d | 0d |
| 1858 | 1.5.1.2.22.1.5 | RCC work upto ground floor level | 65d | 2026-06-24 | 2026-09-07 | 1857SS+30d | 2026-06-24 | 2026-09-07 | 65d | 105d | 0d |
| 1859 | 1.5.1.2.22.1.6 | RCC work for ground floor roof | 52d | 2026-07-29 | 2026-09-26 | 1858SS+30d | 2026-07-29 | 2026-09-26 | 52d | 105d | 0d |
| 1860 | 1.5.1.2.22.1.7 | Ground Floor Roof Concreting | 1d | 2026-09-28 | 2026-09-28 | 1859 | 2026-09-28 | 2026-09-28 | 1d | 114d | 0d |
| 1861 | 1.5.1.2.22.1.8 | Balance RCC work upto 1st roof level | 52d | 2026-10-16 | 2026-12-15 | 1860FS+15d | 2026-10-16 | 2026-12-15 | 52d | 114d | 0d |
| 1862 | 1.5.1.2.22.1.9 | 1st floor roof Concreting | 1d | 2026-12-16 | 2026-12-16 | 1861 | 2026-12-16 | 2026-12-16 | 1d | 114d | 0d |
| 1863 | 1.5.1.2.22.1.10 | Flooring | 36d | 2027-01-04 | 2027-02-13 | 1862FS+15d | 2027-01-04 | 2027-02-13 | 36d | 114d | 9d |
| 1864 | 1.5.1.2.22.1.11 | Brick work | 78d | 2026-09-28 | 2026-12-26 | 1859 | 2026-09-28 | 2026-12-26 | 78d | 105d | 0d |
| 1865 | 1.5.1.2.22.1.12 | Plastering | 69d | 2026-11-02 | 2027-01-20 | 1864SS+30d | 2026-11-02 | 2027-01-20 | 69d | 105d | 0d |
| 1866 | 1.5.1.2.22.1.13 | Painting & Finishing works | 69d | 2026-12-07 | 2027-02-24 | 1865SS+30d, 1863FF | 2026-12-07 | 2027-02-24 | 69d | 105d | 78d |

| ID | WBS | Task | Duration | Start | Finish | Predecessors | Baseline start | Baseline finish | Baseline duration | Total slack | Free slack |
| --- | --- | --- | --- | --- | --- | --- | --- | --- | --- | --- | --- |
| 1867 | 1.5.1.2.22.2 | **Electrical Erection** | 135d | 2027-05-26 | 2027-10-29 |  | 2027-05-26 | 2027-10-29 | 135d | 27d |  |
| 1868 | 1.5.1.2.22.2.1 | Erection of Electrical Equipments | 135d | 2027-05-26 | 2027-10-29 | 781FS+13d, 793, 811, 817FS+13d, 823, 835FS+13d, 841FF, 1866, 64FS+11d, 280FS+26d | 2027-05-26 | 2027-10-29 | 135d | 27d | 0d |
| 1869 | 1.5.1.2.22.2.2 | Erection of 6.6/0.433 Transformers | 52d | 2027-08-14 | 2027-10-13 | 775FS+78d, 787FS+13d | 2027-08-14 | 2027-10-13 | 52d | 41d | 14d |
| 1870 | 1.5.1.2.23 | **Pump House and Reservoir** | 467d | 2026-05-01 | 2027-10-26 |  | 2026-05-01 | 2027-10-26 | 467d | 30d |  |
| 1871 | 1.5.1.2.23.1 | **Civil Work** | 290d | 2026-05-01 | 2027-04-03 |  | 2026-05-01 | 2027-04-03 | 290d | 37d |  |
| 1872 | 1.5.1.2.23.1.1 | Availability of clearence from NMDC | 13d | 2026-05-01 | 2026-05-15 | 4FS+221d | 2026-05-01 | 2026-05-15 | 13d | 37d | 0d |
| 1873 | 1.5.1.2.23.1.2 | Excavation for Reservoir | 38d | 2026-05-16 | 2026-06-29 | 1872 | 2026-05-16 | 2026-06-29 | 38d | 37d | 0d |
| 1874 | 1.5.1.2.23.1.3 | Dressing, Levelling, Formwork and Reinforcement work for Reservoir | 89d | 2026-06-30 | 2026-10-10 | 1873, 282FS+26d | 2026-06-30 | 2026-10-10 | 89d | 135d | 0d |
| 1875 | 1.5.1.2.23.1.4 | RCC work for Reservoir | 79d | 2026-08-28 | 2026-11-27 | 1874SS+51d | 2026-08-28 | 2026-11-27 | 79d | 135d | 0d |
| 1876 | 1.5.1.2.23.1.5 | Finishing work for Reservoir | 51d | 2026-11-28 | 2027-01-26 | 1875 | 2026-11-28 | 2027-01-26 | 51d | 135d | 105d |
| 1877 | 1.5.1.2.23.1.6 | RCC work for Pump House | 76d | 2026-07-15 | 2026-10-10 | 1873FS+13d | 2026-07-15 | 2026-10-10 | 76d | 37d | 0d |
| 1878 | 1.5.1.2.23.1.7 | Concreting of Roof Slab of Pump House | 1d | 2026-10-15 | 2026-10-15 | 1877FS+3d | 2026-10-15 | 2026-10-15 | 1d | 37d | 0d |
| 1879 | 1.5.1.2.23.1.8 | Pump Foundation and flooring work | 66d | 2027-01-04 | 2027-03-20 | 1880SS+45d | 2027-01-04 | 2027-03-20 | 66d | 37d | 7d |
| 1880 | 1.5.1.2.23.1.9 | Brick work | 71d | 2026-11-12 | 2027-02-02 | 1878FS+23d | 2026-11-12 | 2027-02-02 | 71d | 37d | 0d |
| 1881 | 1.5.1.2.23.1.10 | Plastering work | 71d | 2026-12-12 | 2027-03-04 | 1880SS+26d | 2026-12-12 | 2027-03-04 | 71d | 77d | 0d |
| 1882 | 1.5.1.2.23.1.11 | Painting & Finishing works | 66d | 2027-01-18 | 2027-04-03 | 1881SS+31d, 1879FF | 2027-01-18 | 2027-04-03 | 66d | 77d | 47d |
| 1883 | 1.5.1.2.23.2 | **Mechanical / Electrical Erection** | 130d | 2027-05-28 | 2027-10-26 |  | 2027-05-28 | 2027-10-26 | 130d | 30d |  |
| 1884 | 1.5.1.2.23.2.1 | Erection of Pumps / Piping | 90d | 2027-05-28 | 2027-09-09 | 612FS+13d, 1881FS+20d, 281FS+26d, 1879FS+52d, 1876, 1882 | 2027-05-28 | 2027-09-09 | 90d | 30d | 0d |
| 1885 | 1.5.1.2.23.2.2 | Erection of Electrical Equipment | 30d | 2027-09-22 | 2027-10-26 | 1884FS+10d | 2027-09-22 | 2027-10-26 | 30d | 30d | 0d |
| 1886 | 1.5.1.2.24 | **Office Building #1 and Toilet Block** | 263d | 2026-05-05 | 2027-03-06 |  | 2026-05-05 | 2027-03-06 | 263d | 131d |  |
| 1887 | 1.5.1.2.24.1 | **Civil Work** | 263d | 2026-05-05 | 2027-03-06 |  | 2026-05-05 | 2027-03-06 | 263d | 131d |  |
| 1888 | 1.5.1.2.24.1.1 | Excavation for Foundation | 40d | 2026-05-05 | 2026-06-19 | 284FS+120d | 2026-05-05 | 2026-06-19 | 40d | 131d | 0d |
| 1889 | 1.5.1.2.24.1.2 | RCC works upto plinth level | 40d | 2026-06-20 | 2026-08-05 | 1888 | 2026-06-20 | 2026-08-05 | 40d | 131d | 0d |
| 1890 | 1.5.1.2.24.1.3 | RCC work upto ground floor level | 40d | 2026-08-06 | 2026-09-21 | 1889 | 2026-08-06 | 2026-09-21 | 40d | 131d | 0d |
| 1891 | 1.5.1.2.24.1.4 | RCC work for ground floor roof | 40d | 2026-09-22 | 2026-11-06 | 1890 | 2026-09-22 | 2026-11-06 | 40d | 131d | 0d |
| 1892 | 1.5.1.2.24.1.5 | Ground Floor Roof Concreting | 1d | 2026-11-07 | 2026-11-07 | 1891 | 2026-11-07 | 2026-11-07 | 1d | 131d | 0d |
| 1893 | 1.5.1.2.24.1.6 | Balance RCC work upto Staircase roof level | 26d | 2026-11-26 | 2026-12-25 | 1892FS+15d | 2026-11-26 | 2026-12-25 | 26d | 198d | 0d |
| 1894 | 1.5.1.2.24.1.7 | Staircase roof Concreting | 1d | 2026-12-26 | 2026-12-26 | 1893 | 2026-12-26 | 2026-12-26 | 1d | 394d |  |
| 1895 | 1.5.1.2.24.1.8 | Flooring | 30d | 2026-12-14 | 2027-01-16 | 1892FS+30d | 2026-12-14 | 2027-01-16 | 30d | 376d |  |
| 1896 | 1.5.1.2.24.1.9 | Brick work | 40d | 2026-11-26 | 2027-01-11 | 1892FS+15d | 2026-11-26 | 2027-01-11 | 40d | 131d | 0d |
| 1897 | 1.5.1.2.24.1.10 | Plastering | 40d | 2026-12-04 | 2027-01-19 | 1896SS+7d | 2026-12-04 | 2027-01-19 | 40d | 131d | 0d |
| 1898 | 1.5.1.2.24.1.11 | Painting, Sanitary, Plumbing & Finishing works | 40d | 2027-01-20 | 2027-03-06 | 1897 | 2027-01-20 | 2027-03-06 | 40d | 131d |  |

| ID | WBS | Task | Duration | Start | Finish | Predecessors | Baseline start | Baseline finish | Baseline duration | Total slack | Free slack |
| --- | --- | --- | --- | --- | --- | --- | --- | --- | --- | --- | --- |
| 1899 | 1.5.1.2.25 | **Office Building#2 and Out Door Toilet** | 321d | 2026-06-01 | 2027-06-08 |  | 2026-05-16 | 2027-05-24 | 321d | 122d |  |
| 1900 | 1.5.1.2.25.1 | **Civil Work** | 321d | 2026-06-01 | 2027-06-08 |  | 2026-05-16 | 2027-05-24 | 321d | 122d |  |
| 1901 | 1.5.1.2.25.1.1 | Excavation for Foundation | 17d | 2026-06-01 | 2026-06-19 | 286FS+26d | 2026-05-16 | 2026-06-04 | 17d | 122d | 0d |
| 1902 | 1.5.1.2.25.1.2 | RCC works upto plinth level | 54d | 2026-06-20 | 2026-08-21 | 1901 | 2026-06-05 | 2026-08-06 | 54d | 122d | 0d |
| 1903 | 1.5.1.2.25.1.3 | RCC work upto ground floor level | 56d | 2026-07-25 | 2026-09-28 | 1902SS+30d | 2026-07-10 | 2026-09-12 | 56d | 122d | 0d |
| 1904 | 1.5.1.2.25.1.4 | RCC work for ground floor roof | 57d | 2026-08-29 | 2026-11-03 | 1903SS+30d | 2026-08-14 | 2026-10-19 | 57d | 122d | 0d |
| 1905 | 1.5.1.2.25.1.5 | Ground Floor Roof Concreting | 1d | 2026-11-04 | 2026-11-04 | 1904 | 2026-10-20 | 2026-10-20 | 1d | 122d | 0d |
| 1906 | 1.5.1.2.25.1.6 | Balance RCC work upto 1st roof level | 58d | 2026-11-23 | 2027-01-28 | 1905FS+15d | 2026-11-07 | 2027-01-13 | 58d | 122d | 0d |
| 1907 | 1.5.1.2.25.1.7 | 1st floor roof Concreting | 1d | 2027-01-29 | 2027-01-29 | 1906 | 2027-01-14 | 2027-01-14 | 1d | 122d | 0d |
| 1908 | 1.5.1.2.25.1.8 | Flooring | 98d | 2027-02-16 | 2027-06-08 | 1907FS+14d | 2027-02-01 | 2027-05-24 | 98d | 122d | 0d |
| 1909 | 1.5.1.2.25.1.9 | Brick work | 111d | 2026-11-05 | 2027-03-13 | 1905 | 2026-10-21 | 2027-02-26 | 111d | 157d | 0d |
| 1910 | 1.5.1.2.25.1.10 | Plastering | 98d | 2026-12-10 | 2027-04-02 | 1909SS+30d | 2026-11-25 | 2027-03-18 | 98d | 157d | 35d |
| 1911 | 1.5.1.2.25.1.11 | Painting & Finishing works | 95d | 2027-01-20 | 2027-05-10 | 1910SS, 1908FF-26d | 2027-01-05 | 2027-04-24 | 95d | 122d |  |
| 1912 | 1.5.1.2.26 | **Miscellaneous Civil Work like Car, Truck Parking, Boundary Wall etc** | 346d | 2026-09-04 | 2027-10-11 |  | 2026-09-04 | 2027-10-11 | 346d | 89d |  |
| 1913 | 1.5.1.2.26.1 | **Civil Work** | 346d | 2026-09-04 | 2027-10-11 |  | 2026-09-04 | 2027-10-11 | 346d | 89d |  |
| 1914 | 1.5.1.2.26.1.1 | Site Levelling and Dressing work | 49d | 2026-09-04 | 2026-10-30 | 288FF | 2026-09-04 | 2026-10-30 | 49d | 89d | 46d |
| 1915 | 1.5.1.2.26.1.2 | Boulder Soling work and PCC | 53d | 2026-12-24 | 2027-02-23 | 1471 | 2026-12-24 | 2027-02-23 | 53d | 43d | 0d |
| 1916 | 1.5.1.2.26.1.3 | Civil work | 130d | 2027-02-24 | 2027-07-23 | 1472 | 2027-02-24 | 2027-07-23 | 130d | 109d | 16d |
| 1917 | 1.5.1.2.26.1.4 | Finishing work | 118d | 2027-05-27 | 2027-10-11 | 1473FS-50d, 1916FF+52d | 2027-05-27 | 2027-10-11 | 118d | 93d |  |
| 1918 | 1.5.1.2.27 | **Haul and Service Roads** | 383d | 2026-05-06 | 2027-07-24 |  | 2026-05-06 | 2027-07-24 | 383d | 160d |  |
| 1919 | 1.5.1.2.27.1 | **Civil Work** | 383d | 2026-05-06 | 2027-07-24 |  | 2026-05-06 | 2027-07-24 | 383d | 160d |  |
| 1920 | 1.5.1.2.27.1.1 | Cutting of Trees | 15d | 2026-05-06 | 2026-05-22 | 4FS+225d | 2026-05-06 | 2026-05-22 | 15d | 160d | 0d |
| 1921 | 1.5.1.2.27.1.2 | Excavation work | 170d | 2026-05-23 | 2026-12-07 | 1920, 290 | 2026-05-23 | 2026-12-07 | 170d | 160d | 0d |
| 1922 | 1.5.1.2.27.1.3 | Laying of Sub Grade,Sub Base etc | 198d | 2026-12-08 | 2027-07-24 | 1921 | 2026-12-08 | 2027-07-24 | 198d | 160d |  |

| ID | WBS | Task | Duration | Start | Finish | Predecessors | Baseline start | Baseline finish | Baseline duration | Total slack |
| --- | --- | --- | --- | --- | --- | --- | --- | --- | --- | --- |
| 1923 | 1.5.2 | **Erection of Common Equipment** | 165d | 2027-05-18 | 2027-11-25 |  | 2027-05-18 | 2027-11-25 | 165d | 11d |
| 1924 | 1.5.2.1 | **Mechanical Plant & Equipment** | 157d | 2027-05-18 | 2027-11-16 |  | 2027-05-18 | 2027-11-16 | 157d | 11d |
| 1925 | 1.5.2.1.1 | **General** | 54d | 2027-08-12 | 2027-10-13 |  | 2027-08-12 | 2027-10-13 | 54d | 144d |
| 1926 | 1.5.2.1.1.1 | Modification work for augmentation of existing conveyors in Deposit 14 and 11C | 54d | 2027-08-12 | 2027-10-13 | 5FS+350d | 2027-08-12 | 2027-10-13 | 54d | 144d |
| 1927 | 1.5.2.1.2 | **Deposit 14** | 157d | 2027-05-18 | 2027-11-16 |  | 2027-05-18 | 2027-11-16 | 157d | 10d |
| 1928 | 1.5.2.1.2.1 | Erection of Ventillation System | 156d | 2027-05-18 | 2027-11-15 | 443FS+13d | 2027-05-18 | 2027-11-15 | 156d | 11d |
| 1929 | 1.5.2.1.2.2 | Erection of Fire Fighting System | 156d | 2027-05-19 | 2027-11-16 | 455FS+13d | 2027-05-19 | 2027-11-16 | 156d | 10d |
| 1930 | 1.5.2.1.2.3 | Erection of Dust Supression Equipment | 120d | 2027-05-29 | 2027-10-15 | 1058FS-78d, 449FS+13d | 2027-05-29 | 2027-10-15 | 120d | 37d |
| 1931 | 1.5.2.1.2.4 | Erection of Miscellaneous Equipment | 149d | 2027-05-27 | 2027-11-16 | 467FS+13d | 2027-05-27 | 2027-11-16 | 149d | 10d |
| 1932 | 1.5.2.1.3 | **Deposit 11C** | 157d | 2027-05-18 | 2027-11-16 |  | 2027-05-18 | 2027-11-16 | 157d | 10d |
| 1933 | 1.5.2.1.3.1 | Erection of Ventillation System | 156d | 2027-05-18 | 2027-11-15 | 594FS+13d | 2027-05-18 | 2027-11-15 | 156d | 11d |
| 1934 | 1.5.2.1.3.2 | Erection of Fire Fighting System | 156d | 2027-05-19 | 2027-11-16 | 606FS+13d | 2027-05-19 | 2027-11-16 | 156d | 10d |
| 1935 | 1.5.2.1.3.3 | Erection of Dust Supression Equipment | 130d | 2027-05-29 | 2027-10-27 | 600FS+13d | 2027-05-29 | 2027-10-27 | 130d | 27d |
| 1936 | 1.5.2.1.3.4 | Erection of Miscellaneous Equipment | 149d | 2027-05-27 | 2027-11-16 | 618FS+13d | 2027-05-27 | 2027-11-16 | 149d | 10d |
| 1937 | 1.5.2.2 | **Electrical Plant & equipment** | 158d | 2027-05-26 | 2027-11-25 |  | 2027-05-26 | 2027-11-25 | 158d | 2d |
| 1938 | 1.5.2.2.1 | **Deposit 14** | 155d | 2027-05-29 | 2027-11-25 |  | 2027-05-29 | 2027-11-25 | 155d | 2d |
| 1939 | 1.5.2.2.1.1 | Control Panel/PLC | 82d | 2027-08-17 | 2027-11-19 | 707FS+13d, 713FS+13d | 2027-08-17 | 2027-11-19 | 82d | 7d |
| 1940 | 1.5.2.2.1.2 | Erection of Illumination System | 78d | 2027-08-27 | 2027-11-25 | 725FS+5d, 688FS+13d | 2027-08-27 | 2027-11-25 | 78d | 2d |
| 1941 | 1.5.2.2.1.3 | Erection of LSIC System | 78d | 2027-08-16 | 2027-11-13 | 737FS+13d | 2027-08-16 | 2027-11-13 | 78d | 12d |
| 1942 | 1.5.2.2.1.4 | Erection of PA/Telephone System | 52d | 2027-08-31 | 2027-10-29 | 743FS+13d | 2027-08-31 | 2027-10-29 | 52d | 25d |
| 1943 | 1.5.2.2.1.5 | Erection of Fire Detection & Alarm System | 104d | 2027-07-24 | 2027-11-22 | 749FS+13d | 2027-07-24 | 2027-11-22 | 104d | 5d |
| 1944 | 1.5.2.2.1.6 | Erection of CCTV | 52d | 2027-09-10 | 2027-11-09 | 731FS+13d | 2027-09-10 | 2027-11-09 | 52d | 16d |
| 1945 | 1.5.2.2.1.7 | Erection of Miscellaneous Equipment | 152d | 2027-05-29 | 2027-11-22 | 700FS+15d, 317, 719FF+39d | 2027-05-29 | 2027-11-22 | 152d | 5d |
| 1946 | 1.5.2.2.2 | **Deposit 11C** | 158d | 2027-05-26 | 2027-11-25 |  | 2027-05-26 | 2027-11-25 | 158d | 2d |
| 1947 | 1.5.2.2.2.1 | 33KV O/H Line with poles and conductors | 150d | 2027-05-26 | 2027-11-16 | 757FS+13d | 2027-05-26 | 2027-11-16 | 150d | 10d |
| 1948 | 1.5.2.2.2.2 | 33 KV GIS and Control & relay Panel | 50d | 2027-09-13 | 2027-11-09 | 763FS+13d | 2027-09-13 | 2027-11-09 | 50d | 16d |
| 1949 | 1.5.2.2.2.3 | 33/6.9 kv Power Transformer | 90d | 2027-07-09 | 2027-10-21 | 769FS+13d | 2027-07-09 | 2027-10-21 | 90d | 32d |
| 1950 | 1.5.2.2.2.4 | PLC & Control Desk | 66d | 2027-08-17 | 2027-11-01 | 848FS+13d, 854FS+13d | 2027-08-17 | 2027-11-01 | 66d | 23d |
| 1951 | 1.5.2.2.2.5 | Erection of LSIC System | 78d | 2027-08-16 | 2027-11-13 | 878FS+13d | 2027-08-16 | 2027-11-13 | 78d | 12d |
| 1952 | 1.5.2.2.2.6 | Erection of PA/Telephone System | 52d | 2027-08-31 | 2027-10-29 | 884FS+13d | 2027-08-31 | 2027-10-29 | 52d | 25d |
| 1953 | 1.5.2.2.2.7 | Erection of Fire Detection & Alarm System | 104d | 2027-07-24 | 2027-11-22 | 890FS+13d | 2027-07-24 | 2027-11-22 | 104d | 5d |
| 1954 | 1.5.2.2.2.8 | Erection of Illumination System | 78d | 2027-08-27 | 2027-11-25 | 829FS+13d, 866FS+5d | 2027-08-27 | 2027-11-25 | 78d | 2d |
| 1955 | 1.5.2.2.2.9 | Erection of CCTV | 60d | 2027-09-10 | 2027-11-18 | 872FS+13d | 2027-09-10 | 2027-11-18 | 60d | 8d |
| 1956 | 1.5.2.2.2.10 | Erection of Miscellaneous Equipment | 131d | 2027-05-27 | 2027-10-26 | 841FS+13d, 860FF+39d | 2027-05-27 | 2027-10-26 | 131d | 28d |

| ID | WBS | Task | Duration | Start | Finish | Predecessors | Baseline start | Baseline finish | Baseline duration | Total slack |
| --- | --- | --- | --- | --- | --- | --- | --- | --- | --- | --- |
| 1957 | 1.6 | **Preliminary Acceptance** | 196d | 2027-07-16 | 2028-02-27 |  | 2027-07-16 | 2028-02-27 | 196d | 0d |
| 1958 | 1.6.1 | **Trial Runs for individual equipment/units** | 168d | 2027-07-16 | 2028-01-26 |  | 2027-07-16 | 2028-01-26 | 168d | 0d |
| 1959 | 1.6.1.1 | **Deposit 14** | 168d | 2027-07-16 | 2028-01-26 |  | 2027-07-16 | 2028-01-26 | 168d | 0d |
| 1960 | 1.6.1.1.1 | Primary Crusher House Area | 52d | 2027-11-28 | 2028-01-26 | 909, 911, 912, 913, 916, 917, 1479, 1928, 1929, 1930, 1931, 1939, 1940, 1941, 1942, 1943, 1944, 1945, 914, 1474, 1453FS+52d, 1468 | 2027-11-28 | 2028-01-26 | 52d | 0d |
| 1961 | 1.6.1.1.2 | Secondary Crusher House Area | 52d | 2027-11-28 | 2028-01-26 | 953, 954, 955, 958, 959, 1928, 1929, 1930, 1931, 1939, 1940, 1941, 1942, 1943, 1944, 1945, 956 | 2027-11-28 | 2028-01-26 | 52d | 0d |
| 1962 | 1.6.1.1.3 | Primary Stockpile area and Tripper Conveyor 2011 | 52d | 2027-11-28 | 2028-01-26 | 1056, 1057, 1058, 1059, 1060, 1061, 1062, 1063, 1066, 1928, 1929, 1930, 1931, 1939, 1940, 1941, 1942, 1943, 1944, 1945, 1064 | 2027-11-28 | 2028-01-26 | 52d | 0d |
| 1963 | 1.6.1.1.4 | Conveyor 2005 | 30d | 2027-11-18 | 2027-12-21 | 932, 933, 934, 935, 936FS+26d, 937, 939, 940 | 2027-11-18 | 2027-12-21 | 30d | 31d |
| 1964 | 1.6.1.1.5 | Conveyor 2009 | 25d | 2027-11-05 | 2027-12-02 | 974, 975, 976, 977, 978, 980, 981 | 2027-11-05 | 2027-12-02 | 25d | 47d |
| 1965 | 1.6.1.1.6 | Transfer House TH1 | 30d | 2027-11-11 | 2027-12-14 | 996, 998 | 2027-11-11 | 2027-12-14 | 30d | 37d |
| 1966 | 1.6.1.1.7 | Conveyor 2010 | 40d | 2027-08-27 | 2027-10-12 | 1013, 1014, 1015, 1016, 1018, 1019 | 2027-08-27 | 2027-10-12 | 40d | 92d |
| 1967 | 1.6.1.1.8 | Transfer House TH2 | 30d | 2027-10-05 | 2027-11-08 | 1036, 1038 | 2027-10-05 | 2027-11-08 | 30d | 69d |
| 1968 | 1.6.1.1.9 | Conveyor 2015 | 40d | 2027-07-19 | 2027-09-02 | 1076, 1077, 1078, 1079, 1081, 1082 | 2027-07-19 | 2027-09-02 | 40d | 126d |
| 1969 | 1.6.1.1.10 | Transfer House TH3 | 30d | 2027-08-13 | 2027-09-16 | 1097, 1099 | 2027-08-13 | 2027-09-16 | 30d | 114d |
| 1970 | 1.6.1.1.11 | Transfer House TH4 | 30d | 2027-11-09 | 2027-12-11 | 1112, 1114 | 2027-11-09 | 2027-12-11 | 30d | 39d |
| 1971 | 1.6.1.1.12 | Conveyor 2016A | 60d | 2027-11-04 | 2028-01-11 | 1130, 1131, 1132, 1133, 1135, 1136 | 2027-11-04 | 2028-01-11 | 60d | 13d |
| 1972 | 1.6.1.1.13 | Transfer House TH4A | 30d | 2027-07-29 | 2027-09-01 | 1150, 1152 | 2027-07-29 | 2027-09-01 | 30d | 127d |
| 1973 | 1.6.1.1.14 | Conveyor 2016B | 35d | 2027-11-11 | 2027-12-20 | 1168, 1169, 1170, 1172, 1173 | 2027-11-11 | 2027-12-20 | 35d | 32d |
| 1974 | 1.6.1.1.15 | Transfer House TH5 | 30d | 2027-08-10 | 2027-09-13 | 1187, 1189 | 2027-08-10 | 2027-09-13 | 30d | 117d |
| 1975 | 1.6.1.1.16 | Conveyor 2017 | 50d | 2027-11-02 | 2027-12-28 | 1205, 1206, 1207, 1208, 1210, 1211 | 2027-11-02 | 2027-12-28 | 50d | 25d |
| 1976 | 1.6.1.1.17 | Transfer House TH6A and 6B | 30d | 2027-08-28 | 2027-10-01 | 1225, 1227 | 2027-08-28 | 2027-10-01 | 30d | 101d |
| 1977 | 1.6.1.1.18 | Conveyor 2018 | 60d | 2027-11-13 | 2028-01-20 | 1243, 1244, 1245, 1246, 1248, 1249 | 2027-11-06 | 2028-01-13 | 60d | 5d |
| 1978 | 1.6.1.1.19 | Transfer House TH7 | 30d | 2027-09-14 | 2027-10-18 | 1264, 1266 | 2027-09-14 | 2027-10-18 | 30d | 87d |
| 1979 | 1.6.1.1.20 | Conveyor 2019 | 45d | 2027-11-02 | 2027-12-22 | 1282, 1283, 1284, 1285, 1287, 1288 | 2027-11-02 | 2027-12-23 | 45d | 30d |
| 1980 | 1.6.1.1.21 | Transfer House TH8A | 30d | 2027-10-20 | 2027-11-23 | 1303, 1305 | 2027-10-20 | 2027-11-23 | 30d | 56d |
| 1981 | 1.6.1.1.22 | Transfer House TH8 | 30d | 2027-09-08 | 2027-10-12 | 1319, 1321 | 2027-09-08 | 2027-10-12 | 30d | 92d |
| 1982 | 1.6.1.1.23 | Conveyor 2020 | 25d | 2027-08-21 | 2027-09-18 | 1336, 1337FS+52d, 1338, 1339, 1341, 1342 | 2027-08-21 | 2027-09-18 | 25d | 112d |
| 1983 | 1.6.1.1.24 | Transfer House TH8B | 30d | 2027-07-16 | 2027-08-19 | 1356, 1358 | 2027-07-16 | 2027-08-19 | 30d | 138d |
| 1984 | 1.6.1.1.25 | Substation 1 | 50d | 2027-11-27 | 2028-01-22 | 1373, 1374 | 2027-11-27 | 2028-01-22 | 50d | 3d |
| 1985 | 1.6.1.1.26 | Substation 2 | 50d | 2027-11-27 | 2028-01-22 | 1389, 1390 | 2027-11-27 | 2028-01-22 | 50d | 3d |
| 1986 | 1.6.1.1.27 | Substation 3 | 50d | 2027-11-27 | 2028-01-22 | 1405, 1406 | 2027-11-27 | 2028-01-22 | 50d | 3d |
| 1987 | 1.6.1.1.28 | Substation 4 | 50d | 2027-11-24 | 2028-01-19 | 1421, 1422 | 2027-11-24 | 2028-01-19 | 50d | 6d |
| 1988 | 1.6.1.1.29 | Pump House | 50d | 2027-11-19 | 2028-01-14 | 1438, 1440 | 2027-11-19 | 2028-01-14 | 50d | 10d |

| ID | WBS | Task | Duration | Start | Finish | Predecessors | Baseline start | Baseline finish | Baseline duration | Total slack |
| --- | --- | --- | --- | --- | --- | --- | --- | --- | --- | --- |
| 1989 | 1.6.1.2 | **Deposit 11C** | 80d | 2027-10-27 | 2028-01-26 |  | 2027-10-27 | 2028-01-26 | 80d | 0d |
| 1990 | 1.6.1.2.1 | Primary Crusher House Area | 52d | 2027-11-28 | 2028-01-26 | 1497, 1501, 1504, 1499, 1500, 1505, 1933, 1934, 1935, 1936, 1947, 1948, 1949, 1950, 1951, 1952, 1953, 1954, 1955, 1956, 1502 | 2027-11-28 | 2028-01-26 | 52d | 0d |
| 1991 | 1.6.1.2.2 | Secondary Crusher House Area | 52d | 2027-11-28 | 2028-01-26 | 1541, 1542, 1543, 1546, 1547, 1933, 1934, 1935, 1936, 1947, 1948, 1949, 1950, 1951, 1952, 1953, 1954, 1955, 1956, 1544 | 2027-11-28 | 2028-01-26 | 52d | 0d |
| 1992 | 1.6.1.2.3 | Primary Stockpile area and Tripper Conveyor 3012 | 52d | 2027-11-28 | 2028-01-26 | 1673, 1674, 1675, 1676, 1679, 1915, 1933, 1934, 1935, 1936, 1947, 1948, 1949, 1950, 1951, 1952, 1953, 1954, 1955, 1677 | 2027-11-28 | 2028-01-26 | 52d | 0d |
| 1993 | 1.6.1.2.4 | Conveyor 3005 | 25d | 2027-12-23 | 2028-01-20 | 1519, 1520, 1521, 1522, 1523, 1524, 1526, 1947, 1948, 1949, 1950, 1951, 1952, 1953, 1954, 1955, 1956, 1527 | 2027-12-23 | 2028-01-20 | 25d | 5d |
| 1994 | 1.6.1.2.5 | Conveyor 3009 | 20d | 2027-11-15 | 2027-12-06 | 1560, 1561, 1562, 1563, 1565, 1566 | 2027-11-15 | 2027-12-06 | 20d | 44d |
| 1995 | 1.6.1.2.6 | Transfer House TH1 | 30d | 2027-11-28 | 2027-12-31 | 1581, 1583 | 2027-11-28 | 2027-12-31 | 30d | 22d |
| 1996 | 1.6.1.2.7 | Conveyor 3010 | 40d | 2027-11-18 | 2028-01-01 | 1596, 1597, 1598, 1599, 1600, 1602, 1603 | 2027-11-18 | 2028-01-01 | 40d | 21d |
| 1997 | 1.6.1.2.8 | Transfer House TH2 | 30d | 2027-11-09 | 2027-12-11 | 1618, 1620 | 2027-11-09 | 2027-12-11 | 30d | 39d |
| 1998 | 1.6.1.2.9 | Conveyor 3011 | 45d | 2027-11-28 | 2028-01-18 | 1634, 1635, 1636, 1637, 1639, 1640 | 2027-11-28 | 2028-01-18 | 45d | 7d |
| 1999 | 1.6.1.2.10 | Transfer House TH3 | 30d | 2027-11-13 | 2027-12-16 | 1655, 1657 | 2027-11-13 | 2027-12-16 | 30d | 35d |
| 2000 | 1.6.1.2.11 | Conveyor 3016 | 25d | 2027-11-18 | 2027-12-15 | 1687, 1688, 1689, 1690, 1692, 1693 | 2027-11-18 | 2027-12-15 | 25d | 36d |
| 2001 | 1.6.1.2.12 | Transfer House TH4 | 30d | 2027-11-09 | 2027-12-11 | 1708, 1710 | 2027-11-09 | 2027-12-11 | 30d | 39d |
| 2002 | 1.6.1.2.13 | Transfer House TH5 | 30d | 2027-11-09 | 2027-12-11 | 1722, 1724 | 2027-11-09 | 2027-12-11 | 30d | 39d |
| 2003 | 1.6.1.2.14 | Conveyor 3017 | 30d | 2027-11-13 | 2027-12-16 | 1738, 1739FS+100d, 1740, 1741, 1743, 1744 | 2027-11-13 | 2027-12-16 | 30d | 35d |
| 2004 | 1.6.1.2.15 | Transfer House TH6 | 30d | 2027-11-25 | 2027-12-28 | 1759, 1761 | 2027-11-25 | 2027-12-28 | 30d | 25d |
| 2005 | 1.6.1.2.16 | Transfer House TH7 | 30d | 2027-11-01 | 2027-12-03 | 1776, 1778 | 2027-11-01 | 2027-12-03 | 30d | 46d |
| 2006 | 1.6.1.2.17 | Conveyor 2017A | 20d | 2027-11-01 | 2027-11-23 | 1792, 1793, 1794, 1795, 1797, 1798 | 2027-11-01 | 2027-11-23 | 20d | 56d |
| 2007 | 1.6.1.2.18 | Conveyor 3018 | 40d | 2027-11-01 | 2027-12-15 | 1812, 1813, 1814, 1815, 1817, 1818 | 2027-11-01 | 2027-12-15 | 40d | 36d |
| 2008 | 1.6.1.2.19 | Transfer House TH8 | 30d | 2027-10-27 | 2027-11-29 | 1833, 1835 | 2027-10-27 | 2027-11-29 | 30d | 50d |
| 2009 | 1.6.1.2.20 | Substation 1 | 50d | 2027-11-25 | 2028-01-21 | 1850, 1851 | 2027-10-30 | 2027-12-25 | 50d | 4.2d |
| 2010 | 1.6.1.2.21 | Substation 2 | 50d | 2027-10-30 | 2027-12-25 | 1868, 1869 | 2027-10-30 | 2027-12-25 | 50d | 27d |
| 2011 | 1.6.1.2.22 | Pump House | 50d | 2027-10-27 | 2027-12-22 | 1884, 1885 | 2027-10-27 | 2027-12-22 | 50d | 30d |
| 2012 | 1.6.2 | **Integrated Trial Runs** | 28d | 2028-01-27 | 2028-02-27 |  | 2028-01-27 | 2028-02-27 | 28d | 0d |
| 2013 | 1.6.2.1 | Deposit 14 | 28d | 2028-01-27 | 2028-02-27 | 1960, 1961, 1962, 1963, 1964, 1965, 1966, 1967, 1968, 1969, 1970, 1971, 1972, 1973, 1974, 1975, 1976, 1977, 1978, 1979, 1980, 1981, 1982, 1983, 1984, 1985, 1986, 1987, 1988, 1485 | 2028-01-27 | 2028-02-27 | 28d | 0d |
| 2014 | 1.6.2.2 | Deposit 11C | 28d | 2028-01-27 | 2028-02-27 | 1990, 1991, 1992, 1993, 1994, 1995, 1996, 1997, 1998, 1999, 2000, 2001, 2002, 2003, 2004, 2005, 2006, 2007, 2008, 2009, 2010, 2011, 1898FS+150d, 1911FS+104d, 1922, 1917 | 2028-01-27 | 2028-02-27 | 28d | 0d |

| ID | WBS | Task | Duration | Start | Finish | Predecessors | Baseline start | Baseline finish | Baseline duration | Total slack |
| --- | --- | --- | --- | --- | --- | --- | --- | --- | --- | --- |
| 2015 | 1.7 | **Commissioning** | 25d | 2028-02-28 | 2028-03-27 |  | 2028-02-28 | 2028-03-27 | 25d | 0d |
| 2016 | 1.7.1 | Deposit 14 | 25d | 2028-02-28 | 2028-03-27 | 2013 | 2028-02-28 | 2028-03-27 | 25d | 0d |
| 2017 | 1.7.2 | Deposit 11C | 25d | 2028-02-28 | 2028-03-27 | 2014 | 2028-02-28 | 2028-03-27 | 25d | 0d |
