# Donimalai SPII (PKG-I) - 7MTPA Plant

Schedule from Primavera P6, 2024-06-26 to 2026-11-30, data date 2026-03-16, A marks actual dates.
Must finish by 2026-08-26

## Calendars

- KPIL calendar: Mon-Sat 08:00-12:00, 13:00-17:00; Sun off. Exceptions (off unless hours are given): 2024-06-30 08:00-16:00, 2024-08-15, 2024-08-19, 2024-08-26, 2024-09-17, 2024-10-02, 2024-10-12, 2024-10-31 to 2024-11-01, 2024-12-25, 2025-01-01, 2025-01-15, 2025-03-14, 2025-04-25, 2025-08-09, 2025-08-15 to 2025-08-16, 2025-09-17, 2025-10-02, 2025-10-20 08:00-16:00, 2025-10-21, 2025-10-22 00:00-00:30, 08:00-12:00, 13:00-17:00, 2025-11-01, 2025-12-25, 2026-01-01, 2026-01-15, 2026-01-26, 2026-03-03, 2026-03-19, 2026-03-26, 2026-05-09, 2026-08-15.

## Schedule

| ID | WBS | Activity | Type | Duration | Start | Finish | Predecessors | Complete | Planned start | Planned finish | MSP Activity ID | Responsibility | No |
| --- | --- | --- | --- | --- | --- | --- | --- | --- | --- | --- | --- | --- | --- |
| A1010 |  | Contract Documents signoff |  | 1d | 2024-06-26 A | 2024-06-26 A |  | 100% |  |  | 1 | ALL | 2 |
| A1020 |  | Commencement Date |  | 1d | 2024-06-26 A | 2024-06-26 A | A1010 FF | 100% |  |  | 2 | ALL | 1 |
|  | IA | **Initial Activities** |  |  | 2024-06-27 | 2025-04-15 |  |  |  |  |  |  |  |
| IA.1130 |  | Handing over of yards & spaces for stores ,P&M ,Project office, Labour colony etc |  | 30d | 2024-06-27 A | 2024-07-30 A | A1020 | 100% |  |  | 14 | N | 16 |
| IA.1150 |  | Handing over of encumbrance free Site |  | 30d | 2024-06-27 A | 2024-08-30 A | A1020 | 100% | 2024-06-27 | 2024-07-30 | 19 | N | 18 |
| IA.1020 |  | Issue Form V for getting Labour License |  | 1d | 2024-07-08 A | 2024-07-08 A | A1020 | 100% | 2024-06-27 | 2024-06-27 | 5 | N | 4 |
| IA.1030 |  | Submission of labour license to government |  | 10d | 2024-07-09 A | 2024-07-17 A | IA.1020 | 100% | 2024-06-28 | 2024-07-08 | 6 | K | 5 |
| IA.1010 |  | Submission of Contract Performance Guarantee (CPBG) |  | 30d | 2024-07-15 A | 2024-08-02 A | A1020 | 100% | 2024-06-27 | 2024-07-30 | 4 | K/T/H | 3 |
| IA.1040 |  | Obtain labour license from the government |  | 10d | 2024-07-18 A | 2024-07-28 A | IA.1030 | 100% | 2024-07-09 | 2024-07-19 | 7 | K | 6 |
| IA.1050 |  | Obtaining MCE Insurance |  | 28d | 2024-07-24 A | 2024-07-30 A | A1020 | 100% | 2024-06-27 | 2024-07-27 | 8 | K | 7 |
| IA.1080 |  | Obtaining electricity at one point connection |  | 40d | 2024-08-12 A | 2025-04-15 A | IA.1070 | 100% | 2024-08-12 | 2024-10-01 | 15 | K | 11 |
| IA.1110 |  | Submission of site Logistic plan |  | 30d | 2024-08-27 A | 2024-10-01 A | A1020 FS+50d | 100% |  |  | 12 | K | 14 |
| IA.1090 |  | Submission of Construction water request |  | 30d | 2024-09-09 A | 2024-10-09 A | A1020 | 100% | 2024-06-27 | 2024-07-30 | 11 | K | 12 |
| IA.1070 |  | Approval of Construction power |  | 10d | 2024-09-10 A | 2024-09-10 A | IA.1060 | 100% | 2024-07-31 | 2024-08-10 | 16 | N | 10 |
| IA.1100 |  | Approval of Construction water |  | 10d | 2024-09-10 A | 2024-09-10 A | IA.1090 | 100% | 2024-07-31 | 2024-08-10 | 10 | N | 13 |
| IA.1060 |  | Submission of Construction power request |  | 30d | 2024-09-11 A | 2024-09-11 A | A1020 | 100% | 2024-06-27 | 2024-07-30 | 9 | K | 8 |
| IA.1140 |  | Re-Routing of Existing Water Pipe Line |  | 90d | 2024-09-11 A | 2024-12-17 A | A1020 | 100% | 2024-06-27 | 2024-10-15 | 17 | N | 17 |
| IA.1160 |  | Input for Future conveyor of Transfer House 4 & Transfer House 6 |  | 1d | 2024-09-19 A | 2024-09-19 A | A1020 FS+70d | 100% | 2024-09-20 | 2024-09-20 | 20 | N | 19 |
| IA.1170 |  | Input for Future Buildings - MRSS |  | 10d | 2024-09-24 A | 2024-09-24 A | A1020 | 100% | 2024-06-27 | 2024-07-06 | 21 | N | 20 |
| IA.1120 |  | Approval of site Logistic plan |  | 10d | 2024-10-03 A | 2024-10-15 A | IA.1110 | 100% |  |  | 13 | N | 15 |
| MSI1 - IA |  | Initial Activity Completetion | milestone | 0d | 2025-04-15 A | 2025-04-15 A | IA.1010, IA.1040, IA.1050, IA.1080, IA.1100 | 100% | 2025-06-25 | 2025-06-25 | 18 | N/M/K/T/H | 21 |
|  | MA | **Initial Mobilization** |  |  | 2024-07-15 | 2025-10-14 |  |  |  |  |  |  |  |
| MA1010 |  | Initial Manpower & Plant Mobilization. |  | 45d | 2024-07-15 A | 2024-09-20 A | IA.1040 | 100% | 2024-07-20 | 2024-09-13 | 24 | K |  |
| MA1020 |  | Labour Camp Setup |  | 60d | 2024-07-15 A | 2024-10-10 A | MA1010 SS+5d | 100% | 2024-07-26 | 2024-10-09 | 23 | K |  |
| MA1050 |  | Quality Lab SetUp |  | 15d | 2024-09-20 A | 2024-10-20 A | A1020 FS+75d | 100% | 2024-09-26 | 2024-10-15 | 28 | K |  |
| MA1070 |  | Rebar & Formwork yard Initial SetUp |  | 25d | 2024-10-05 A | 2024-10-30 A | A1020 FS+75d | 100% | 2024-09-26 | 2024-10-26 | 29 | K |  |
| MA1030 |  | Weighbridge Installation |  | 15d | 2024-10-12 A | 2024-10-25 A | A1020 FS+75d | 100% | 2024-09-26 | 2024-10-15 | 26 | K |  |
| MA1040 |  | Batching Plant Installation |  | 20d | 2024-10-18 A | 2024-11-25 A | A1020 FS+90d, MA1060 FF-10d, MA1030 FF | 100% | 2024-10-16 | 2024-11-09 | 25 | K |  |
| MA1060 |  | Concrete Mix Design Completion |  | 30d | 2024-10-24 A | 2024-11-30 A | MA1050 | 100% | 2024-10-16 | 2024-11-21 | 27 | K |  |
| MA1080 |  | Storage yard for Equipment (Identificaiton) |  | 30d | 2025-02-12 A | 2025-10-14 A | MA1070 FS+20d, IA.1120 FF | 100% | 2025-06-25 | 2025-07-29 | 30 | K/N |  |

| ID | WBS | Activity | Type | Duration | Start | Finish | Predecessors | Complete | Planned start | Planned finish | MSP Activity ID | Responsibility |
| --- | --- | --- | --- | --- | --- | --- | --- | --- | --- | --- | --- | --- |
|  | BE | **Basic Engineering** |  |  | 2024-06-26 | 2026-01-19 |  |  |  |  |  |  |
| MS1 - BE |  | Basic Engineering Complete | milestone | 0d | 2026-01-19 A | 2026-01-19 A | BE.KP.GE.1020 FF, BE.KP.GE.1040 FF, BE.KP.GE.1050 FF, BE.TM.P.1040 FF, BE.KP.C.1010, BE.KP.C.1020, BE.KP.C.1030, BE.KP.U.1010, BE.KP.U.1020, BE.KP.U.1030, BE.KP.U.1040, BE.KP.U.1050, BE.KP.U.1060, BE.KP.E.1010, BE.KP.E.1020, BE.KP.E.1030, BE.KP.E.1040, BE.KP.E.1050, BE.KP.E.1060, BE.KP.E.1070, BE.KP.E.1080, BE.TM.I.1010, BE.HT.KP.TM.I.1020, BE.KP.I.1030, BE.KP.TM.I.1040, BE.KP.I.1050, BE.KP.I.1060, BE.KP.I.1070, BE.HT.M.1040 FF | 100% | 2026-01-27 | 2026-01-27 | 32 | K/T/H/M/N |
|  | GE | **General** |  |  | 2024-06-26 | 2026-01-18 |  |  |  |  |  |  |
| BE.KP.GE.1010 |  | Name Plate and Numbering System |  | 8d | 2024-06-26 A | 2024-06-26 A | A1020 SS | 100% | 2024-06-26 | 2024-07-03 | 63 | K/M/N |
| BE.KP.GE.1030 |  | Preliminary Plant Layout Finalization |  | 60d | 2024-06-27 A | 2024-07-26 A | A1020 | 100% | 2024-06-27 | 2024-09-06 | 64 | K/M/N |
| BE.KP.GE.1020 |  | Master Drawing List |  | 443d | 2024-07-04 A | 2025-12-27 A | BE.KP.GE.1010 FS+5d | 100% | 2024-07-04 | 2025-12-26 | 48 | K/M/N |
| BE.KP.GE.1050 |  | Inspection procedures |  | 100d | 2024-07-04 A | 2024-11-07 A | BE.KP.GE.1010 | 100% | 2024-07-04 | 2024-11-06 | 49 | K/M/N |
| BE.KP.GE.1040 |  | General Plant Layout Updation |  | 350d | 2024-07-24 A | 2026-01-18 A | BE.KP.GE.1010 FS+3d, IA.1170, BE.KP.GE.1030 | 100% | 2024-09-07 | 2025-11-08 | 40 | K/M/N |
|  | P | **Process** |  |  | 2024-07-15 | 2025-11-19 |  |  |  |  |  |  |
| BE.TM.P.1010 |  | Process Flow Diagram |  | 73d | 2024-07-15 A | 2024-11-08 A | BE.KP.GE.1010 FS+9d | 100% | 2024-07-15 | 2024-10-14 | 66 | T/K/M/N |
| BE.TM.P.1020 |  | Process Mass & Water Balance |  | 73d | 2024-07-15 A | 2024-11-08 A | BE.TM.P.1010 SS | 100% | 2024-07-15 | 2024-10-14 | 67 | T/K/M/N |
| BE.TM.P.1030 |  | Design & Construction (Process Water & Slurry Piping Systems) |  | 71d | 2024-08-16 A | 2024-09-20 A | BE.TM.P.1020 SS+27d | 100% | 2024-08-16 | 2024-11-14 | 68 | T/K/M/N |
| BE.TM.P.1040 |  | Process Pumps & Piping Schedule |  | 74d | 2024-12-16 A | 2025-11-19 A | BE.TM.P.1030 FS+55d | 100% | 2024-12-26 | 2025-03-25 | 51 | T/K/M/N |
|  | M | **Mechanical** |  |  | 2024-07-04 | 2024-11-19 |  |  |  |  |  |  |
| BE.KP.M.1010 |  | Equipment Flowsheet |  | 72d | 2024-07-04 A | 2024-11-08 A | BE.KP.GE.1010 | 100% | 2024-07-04 | 2024-09-30 | 70 | K/M/N |
| BE.KP.M.1030 |  | Design Criteria for for Structural works & Cladding |  | 71d | 2024-07-04 A | 2024-08-13 A | BE.KP.M.1010 SS | 100% | 2024-07-04 | 2024-09-28 | 72 | K/M/N |
| BE.HT.M.1020 |  | Typical Cross Section of Conveyor Gallery |  | 72d | 2024-08-01 A | 2024-08-13 A | BE.KP.M.1010 SS+24d | 100% | 2024-08-01 | 2024-10-30 | 71 | H/K/M/N |
| BE.HT.M.1040 |  | Design Basis Report (DBR) for Belt Conveyor System |  | 73d | 2024-08-29 A | 2024-11-19 A | BE.KP.M.1010 SS+45d | 100% | 2024-08-29 | 2024-11-27 | 39 | H/K/M/N |
|  | C | **Civil** |  |  | 2024-06-27 | 2025-02-06 |  |  |  |  |  |  |
| BE.KP.C.1010 |  | Topography Survey Report |  | 75d | 2024-06-27 A | 2024-12-06 A | A1020 | 100% | 2024-06-27 | 2024-09-25 | 61 | K/M/N |
| BE.KP.C.1020 |  | Design Criteria Report (Civil, Architecture, Plumbing & Road Works) |  | 97d | 2024-06-27 A | 2024-08-20 A | A1020 | 100% | 2024-06-27 | 2024-10-23 | 47 | K/M/N |
| BE.KP.C.1030 |  | Soil Investigation Report |  | 50d | 2024-10-14 A | 2025-02-06 A | A1020 FS+39d | 100% | 2024-08-10 | 2024-10-14 | 33 | K/M/N |
|  | U | **Utility** |  |  | 2024-06-27 | 2026-01-19 |  |  |  |  |  |  |
| BE.KP.U.1010 |  | P&I Drawing (Make-up, Raw, Process & Cooling Water) |  | 140d | 2024-06-27 A | 2025-11-25 A | A1020 | 100% | 2024-06-27 | 2024-12-14 | 35 | K/M/N |
| BE.KP.U.1020 |  | Design Basis of DFDS Pumps & Compressed Air System |  | 106d | 2024-09-13 A | 2025-12-29 A | A1020 FS+65d | 100% | 2024-09-13 | 2025-01-23 | 60 | K/M/N |
| BE.KP.U.1030 |  | Ventilation Fan Schedule With Calculation |  | 75d | 2024-11-15 A | 2025-08-15 A | A1020 FS+114d | 100% | 2024-11-15 | 2025-02-13 | 41 | K/M/N |
| BE.KP.U.1040 |  | Heat Load calculation for Air Conditioning system |  | 88d | 2024-11-29 A | 2026-01-19 A | A1020 FS+100d | 100% | 2024-11-29 | 2025-03-15 | 50 | K/M/N |
| BE.KP.U.1050 |  | Piping Layout of Water System |  | 128d | 2024-12-10 A | 2026-01-10 A | A1020 FS+135d | 100% | 2024-12-10 | 2025-05-13 | 57 | K/M/N |
| BE.KP.U.1060 |  | Interplant Piping Layout |  | 88d | 2025-03-15 A | 2026-01-10 A | A1020 FS+213d, BE.KP.U.1050 FF+5d | 100% | 2025-03-28 | 2025-07-09 | 46 | K/M/N |

| ID | WBS | Activity | Type | Duration | Start | Finish | Predecessors | Complete | Planned start | Planned finish | Total float | Free float | MSP Activity ID | Responsibility |
| --- | --- | --- | --- | --- | --- | --- | --- | --- | --- | --- | --- | --- | --- | --- |
|  | E | **Electrical** |  |  | 2024-08-30 | 2026-01-02 |  |  |  |  |  |  |  |  |
| BE.KP.E.1010 |  | Electrical Load List |  | 73d | 2024-08-30 A | 2025-01-03 A | A1020 FS+53d | 100% | 2024-08-30 | 2024-11-28 |  |  | 52 | K/M/N |
| BE.KP.E.1020 |  | Maximum demand & Sizing Calculation of Transformers |  | 73d | 2024-09-18 A | 2025-02-05 A | A1020 FS+67d, BE.KP.E.1010 SS+15d | 100% | 2024-09-18 | 2024-12-16 |  |  | 58 | K/M/N |
| BE.KP.E.1030 |  | Typical Cable Block Diagram |  | 74d | 2024-09-25 A | 2026-01-02 A | A1020 FS+74d | 100% | 2024-09-25 | 2024-12-24 |  |  | 44 | K/M/N |
| BE.KP.E.1040 |  | Basic Electrical Equipment Layout |  | 73d | 2024-09-27 A | 2025-03-05 A | A1020 FS+76d | 100% | 2024-09-27 | 2024-12-26 |  |  | 45 | K/M/N |
| BE.KP.E.1050 |  | Earthing & Lightning Protection Calculation |  | 74d | 2024-10-15 A | 2025-03-26 A | A1020 FS+89d | 100% | 2024-10-15 | 2025-01-13 |  |  | 56 | K/M/N |
| BE.KP.E.1060 |  | Overall Single line Diagram |  | 73d | 2024-10-25 A | 2024-12-23 A | A1020 FS+98d | 100% | 2024-10-25 | 2025-01-23 |  |  | 43 | K/M/N |
| BE.KP.E.1070 |  | Capacitor Bank sizing calculation |  | 74d | 2024-12-16 A | 2025-07-29 A | A1020 FS+140d | 100% | 2024-12-16 | 2025-03-15 |  |  | 42 | K/M/N |
| BE.KP.E.1080 |  | Illumination calculations |  | 77d | 2025-03-20 A | 2025-07-02 A | A1020 FS+217d | 100% | 2025-03-25 | 2025-06-23 |  |  | 37 | K/M/N |
|  | I | **Instrumentation** |  |  | 2024-09-20 | 2026-01-14 |  |  |  |  |  |  |  |  |
| BE.HT.KP.TM.I.1020 |  | P&I Diagram |  | 74d | 2024-09-20 A | 2025-12-31 A | A1020 FS+70d | 100% | 2024-09-20 | 2024-12-19 |  |  | 36 | K/M/N |
| BE.TM.I.1010 |  | Electrical & Instrumentation Design Basis |  | 74d | 2024-09-20 A | 2025-03-25 A | A1020 FS+70d | 100% | 2024-09-20 | 2024-12-19 |  |  | 55 | T/K/M/N |
| BE.KP.I.1030 |  | Automation Configuration Diagram |  | 73d | 2024-10-25 A | 2026-01-14 A | A1020 FS+98d | 100% | 2024-10-25 | 2025-01-23 |  |  | 53 | K/M/N |
| BE.KP.TM.I.1040 |  | Instrument and Component list |  | 75d | 2024-11-25 A | 2025-11-27 A | A1020 FS+119d, BE.TM.I.1010 SS+50d | 100% | 2024-11-22 | 2025-02-20 |  |  | 34 | K/M/N |
| BE.KP.I.1050 |  | System writeup for communication & FDA systems |  | 82d | 2025-04-04 A | 2025-08-13 A | A1020 FS+230d | 100% | 2025-04-04 | 2025-07-09 |  |  | 54 | K/M/N |
| BE.KP.I.1060 |  | Single line diagram for telephone system |  | 77d | 2025-04-15 A | 2025-07-17 A | A1020 FS+239d | 100% | 2025-04-26 | 2025-07-24 |  |  | 59 | K/M/N |
| BE.KP.I.1070 |  | Operation And Control Philosophy |  | 98d | 2025-06-03 A | 2026-01-05 A | A1020 FS+280d | 100% | 2025-11-25 | 2026-03-25 |  |  | 38 | K/M/N |
|  | DE | **Detailed Engineering** |  |  | 2024-06-30 | 2026-08-24 |  |  |  |  |  |  |  |  |
| MS2 - DE |  | Detailed Engineering complete | milestone | 0d | 2026-08-24 | 2026-08-24 | DE.KP.C.1050 FF, DE.KP.TOT.1020, DE.MISC,1060 FS+35d, DE.MISC,1070 FF, MS1 - BE FF |  |  |  | 1d | 81d | 78 | K/M/N |
|  | KP.GE | **General** |  |  | 2024-06-30 | 2025-05-15 |  |  |  |  |  |  |  |  |
| DE.KP.GE.1010 |  | Standard Architectural Drawings |  | 90d | 2024-06-30 A | 2024-10-01 A | A1020 FS+3d | 100% | 2024-06-30 | 2024-10-18 |  |  | 84 | K/M/N |
| DE.KP.GE.1020 |  | Standard Civil Drawings |  | 60d | 2024-07-01 A | 2024-08-09 A | DE.KP.GE.1010 SS, BE.KP.C.1020 SS, BE.KP.C.1030 SS | 100% | 2024-08-10 | 2024-10-25 |  |  | 85 | K/M/N |
| DE.KP.GE.1030 |  | Standard Structural Drawings |  | 73d | 2024-07-01 A | 2024-08-20 A | DE.KP.GE.1020 SS, BE.KP.M.1030 SS | 100% | 2024-08-20 | 2024-11-19 |  |  | 86 | K/M/N |
| DE.KP.GE.1040 |  | Excavation & Area Grading |  | 72d | 2024-08-01 A | 2025-05-15 A | DE.KP.GE.1030 SS | 100% | 2024-09-13 | 2024-12-11 |  |  | 87 | K/M/N |

| ID | WBS | Activity | Duration | Start | Finish | Predecessors | Complete | Remaining | Planned start | Planned finish | Total float | Free float | MSP Activity ID | Responsibility |
| --- | --- | --- | --- | --- | --- | --- | --- | --- | --- | --- | --- | --- | --- | --- |
|  | KP.SB | **Silo Buiiding** |  | 2024-07-27 | 2026-01-07 |  |  |  |  |  |  |  |  |  |
| DE.KP.SB.1010 |  | Mechanical | 179d | 2024-07-27 A | 2025-08-25 A | A1020 FS+27d | 100% |  | 2024-07-27 | 2025-03-05 |  |  | 89 | K/M/N |
| DE.KP.SB.1020 |  | Structural | 140d | 2024-09-06 A | 2025-02-11 A | DE.KP.SB.1010 SS+32d, BE.KP.M.1030 SS+30d | 100% |  | 2024-09-06 | 2025-02-25 |  |  | 90 | K/M/N |
| DE.KP.SB.1050 |  | Utility | 179d | 2024-10-11 A | 2025-05-16 A | DE.KP.SB.1010 SS+60d | 100% |  |  |  |  |  | 93 | K/M/N |
| DE.KP.SB.1030 |  | Civil | 140d | 2024-11-22 A | 2025-06-27 A | DE.KP.SB.1020 SS+12d, BE.KP.GE.1040 SS+60d, BE.KP.C.1020 SS, BE.KP.C.1030 | 100% |  | 2024-11-02 | 2025-04-18 |  |  | 91 | K/M/N |
| DE.KP.SB.1040 |  | Electrical & Instrumentation | 100d | 2025-01-10 A | 2026-01-07 A | DE.KP.SB.1030 SS+40d | 100% |  | 2025-01-25 | 2025-05-24 |  |  | 92 | K/M/N |
|  | KP.S&C | **Screening & Classifier Building** |  | 2024-08-01 | 2026-03-23 |  |  |  |  |  |  |  |  |  |
| DE.KP.S&C.1010 |  | Mechanical | 235d | 2024-08-01 A | 2025-10-27 A | A1020 FS+31d | 100% |  | 2024-08-01 | 2025-05-16 |  |  | 95 | K/M/N |
| DE.KP.S&C.1040 |  | Electrical & Instrumentation | 305d | 2024-08-16 A | 2026-03-23 | DE.KP.S&C.1010 FS+15d | 98% | 6d | 2024-08-16 | 2025-08-23 | 41d | 89d | 98 | K/M/N |
| DE.KP.S&C.1020 |  | Structural | 199d | 2024-09-24 A | 2025-11-18 A | DE.KP.S&C.1010 SS+42d, BE.KP.M.1030 SS+30d | 100% |  | 2024-09-24 | 2025-05-23 |  |  | 96 | K/M/N |
| DE.KP.S&C.1030 |  | Civil | 60d | 2024-10-24 A | 2026-01-14 A | DE.KP.S&C.1010 SS+20d, BE.KP.GE.1040 SS+30d, BE.KP.C.1020 SS, BE.KP.C.1030 FS+120d | 100% |  | 2025-06-25 | 2025-09-05 |  |  | 97 | K/M/N |
|  | KP.HBF | **Horizontal Belt Filter Building** |  | 2024-08-31 | 2026-03-28 |  |  |  |  |  |  |  |  |  |
| DE.KP.HBF.1010 |  | Mechanical | 223d | 2024-08-31 A | 2025-08-18 A | A1020 FS+54d | 100% |  | 2024-08-31 | 2025-05-29 |  |  | 100 | K/M/N |
| DE.KP.HBF.1040 |  | Electrical & Instrumentation | 281d | 2024-09-14 A | 2026-03-28 | DE.KP.HBF.1010 FS+100d | 98% | 10d | 2024-09-14 | 2025-08-22 | -44d | 0d | 103 | K/M/N |
| DE.KP.HBF.1020 |  | Structural | 151d | 2024-12-24 A | 2025-09-19 A | DE.KP.HBF.1010 SS+85d, BE.KP.M.1030 SS+30d | 100% |  | 2024-12-14 | 2025-06-13 |  |  | 101 | K/M/N |
| DE.KP.HBF.1030 |  | Civil | 62d | 2025-01-11 A | 2025-12-04 A | DE.KP.HBF.1020 SS+22d, BE.KP.GE.1040 SS+60d, BE.KP.C.1020 SS, BE.KP.C.1030 FS+146d | 100% |  | 2025-07-10 | 2025-09-24 |  |  | 102 | K/M/N |
|  | KP.TC | **Tertiary Crusher Plant** |  | 2024-09-12 | 2026-02-25 |  |  |  |  |  |  |  |  |  |
| DE.KP.TC.1050 |  | Electrical & Instrumentation | 250d | 2024-09-12 A | 2026-02-25 A | A1020 SS+65d | 100% |  | 2024-09-12 | 2025-07-11 |  |  | 109 | K/M/N |
| DE.KP.TC.1010 |  | Mechanical | 90d | 2024-10-11 A | 2025-12-11 A | A1020 FS+50d | 100% |  | 2024-10-11 | 2025-01-30 |  |  | 105 | K/M/N |
| DE.KP.TC.1020 |  | Utility | 200d | 2024-10-15 A | 2026-01-27 A | DE.KP.TC.1010 SS+2d, BE.KP.C.1020 SS, BE.KP.U.1010 SS | 100% |  | 2024-10-15 | 2025-06-12 |  |  | 106 | K/M/N |
| DE.KP.TC.1030 |  | Structural | 100d | 2024-10-30 A | 2025-10-31 A | DE.KP.TC.1020 SS+13d, BE.KP.M.1030 SS+30d | 100% |  | 2024-10-30 | 2025-02-28 |  |  | 107 | K/M/N |
| DE.KP.TC.1040 |  | Civil | 50d | 2024-11-11 A | 2025-10-31 A | DE.KP.TC.1010 SS, BE.KP.GE.1040 SS+25d, BE.KP.C.1020 SS, BE.KP.C.1030 FS+157d | 100% |  | 2025-05-28 | 2025-07-24 |  |  | 108 | K/M/N |
|  | KP.TH3 | **Transfer House 3** |  | 2024-12-11 | 2026-03-30 |  |  |  |  |  |  |  |  |  |
| DE.KP.TH3.1010 |  | Mechanical | 100d | 2024-12-11 A | 2026-01-08 A | A1020 FS+136d | 100% |  | 2024-12-11 | 2025-04-10 |  |  | 111 | K/M/N |
| DE.KP.TH3.1030 |  | Electrical | 115d | 2024-12-21 A | 2026-01-08 A | DE.KP.TH3.1010 SS+9d | 100% |  | 2024-12-21 | 2025-05-09 |  |  | 113 | K/M/N |
| DE.KP.TH3.1020 |  | Structural | 101d | 2025-03-25 A | 2026-03-30 | DE.KP.TH3.1010 FS+36d, BE.KP.M.1030 FS+30d | 90% | 10.1d | 2025-03-25 | 2025-07-21 | 41d | 0d | 112 | K/M/N |

| ID | WBS | Activity | Duration | Start | Finish | Predecessors | Complete | Remaining | Planned start | Planned finish | Total float | Free float | MSP Activity ID | Responsibility |
| --- | --- | --- | --- | --- | --- | --- | --- | --- | --- | --- | --- | --- | --- | --- |
|  | KP.TH4 | **Transfer House 4** |  | 2024-12-05 | 2026-02-17 |  |  |  |  |  |  |  |  |  |
| DE.KP.TH4.1040 |  | Mechanical | 98d | 2024-12-05 A | 2025-11-17 A | A1020 FS+85d, IA.1160 FS+60d | 100% |  | 2024-12-04 | 2025-04-01 |  |  | 115 | K/M/N |
| DE.KP.TH4.1050 |  | Structural | 108d | 2024-12-24 A | 2025-11-22 A | DE.KP.TH4.1040 SS+16d, BE.KP.M.1030 SS+30d | 100% |  | 2024-12-23 | 2025-05-02 |  |  | 116 | K/M/N |
| DE.KP.TH4.1060 |  | Civil | 115d | 2025-01-27 A | 2026-02-17 A | DE.KP.TH4.1050 SS+130d, BE.KP.GE.1040 SS+30d, BE.KP.C.1020 SS, BE.KP.C.1030 | 100% |  | 2025-03-25 | 2025-08-06 |  |  | 117 | K/M/N |
| DE.KP.TH4.1070 |  | Electrical | 143d | 2025-01-27 A | 2025-12-16 A | DE.KP.TH4.1040 SS+32d | 100% |  | 2025-03-25 | 2025-09-11 |  |  | 118 | K/M/N |
|  | KP.TH5 | **Transfer House 5** |  | 2024-10-30 | 2025-06-27 |  |  |  |  |  |  |  |  |  |
| DE.KP.TH5.1080 |  | Mechanical | 99d | 2024-10-30 A | 2025-06-24 A | A1020 FS+102d | 100% |  | 2024-10-30 | 2025-02-27 |  |  | 120 | K/M/N |
| DE.KP.TH5.1090 |  | Structural | 109d | 2024-11-19 A | 2025-03-29 A | DE.KP.TH5.1080 SS+15d, BE.KP.M.1030 SS+30d | 100% |  |  |  |  |  | 121 | K/M/N |
| DE.KP.TH5.1110 |  | Electrical | 143d | 2024-11-19 A | 2025-04-25 A | DE.KP.TH5.1080 SS+15d | 100% |  | 2024-11-19 | 2025-05-09 |  |  | 123 | K/M/N |
| DE.KP.TH5.1100 |  | Civil | 117d | 2024-12-13 A | 2025-06-27 A | DE.KP.TH5.1090 SS+21d, BE.KP.GE.1040 SS+60d, BE.KP.C.1020 SS, BE.KP.C.1030 | 100% |  | 2024-12-13 | 2025-05-03 |  |  | 122 | K/M/N |
|  | KP.TH6 | **Transfer House 6** |  | 2024-12-05 | 2025-04-21 |  |  |  |  |  |  |  |  |  |
| DE.KP.TH6.1010 |  | Mechanical | 100d | 2024-12-05 A | 2025-01-03 A | A1020 FS+118d, IA.1160 FS+60d | 100% |  | 2024-12-04 | 2025-04-03 |  |  | 125 | K/M/N |
| DE.KP.TH6.1040 |  | Electrical | 142d | 2024-12-05 A | 2025-04-21 A | DE.KP.TH6.1010 SS | 100% |  | 2024-12-04 | 2025-05-23 |  |  | 128 | K/M/N |
| DE.KP.TH6.1020 |  | Structural | 109d | 2024-12-26 A | 2025-03-25 A | DE.KP.TH6.1010 SS+17d, BE.KP.M.1030 SS+30d | 100% |  | 2024-12-26 | 2025-05-06 |  |  | 126 | K/M/N |
| DE.KP.TH6.1030 |  | Civil | 119d | 2024-12-26 A | 2025-04-17 A | DE.KP.TH6.1020 SS+19d, BE.KP.GE.1040 SS+60d, BE.KP.C.1020 SS, BE.KP.C.1030 | 100% |  | 2025-01-20 | 2025-06-09 |  |  | 127 | K/M/N |
|  | KP.C | **Conveyor** |  | 2024-11-02 | 2026-04-07 |  |  |  |  |  |  |  |  |  |
| DE.KP.C.1010 |  | Mechanical | 225d | 2024-11-02 A | 2026-01-28 A | A1020 FS+102d, BE.HT.M.1020, BE.HT.M.1040 SS+30d | 100% |  | 2024-11-02 | 2025-07-29 |  |  | 130 | K/M/N |
| DE.KP.C.1020 |  | Structural | 176d | 2024-12-25 A | 2025-09-25 A | DE.KP.C.1010 SS+46d, BE.KP.M.1030 SS+30d | 100% |  | 2024-12-27 | 2025-07-25 |  |  | 131 | K/M/N |
| DE.KP.C.1030 |  | Civil | 166d | 2024-12-25 A | 2025-07-30 A | DE.KP.C.1020 SS+18d, BE.KP.GE.1040 SS+60d, BE.KP.C.1020 SS, BE.KP.C.1030 | 100% |  | 2025-01-20 | 2025-08-04 |  |  | 132 | K/M/N |
| DE.KP.C.1040 |  | Electrical & Instrumentation | 204d | 2024-12-27 A | 2026-04-07 | DE.KP.C.1010 FS+46d | 95% | 10d | 2024-12-27 | 2025-08-30 | 118d | 0d | 133 | K/M/N |
| DE.KP.C.1050 |  | Utility | 96d | 2025-07-30 A | 2026-01-23 A | DE.KP.C.1040 SS+180d, BE.KP.C.1020 SS, BE.KP.U.1010 | 100% |  | 2025-10-25 | 2026-02-19 |  |  | 81 | K/M/N |
|  | KP.DFDS | **Compressor Cum Dust Suppression Pump House** |  | 2024-09-25 | 2026-02-04 |  |  |  |  |  |  |  |  |  |
| DE.KP.DFDS.1010 |  | Utility | 255d | 2024-09-25 A | 2026-01-21 A | A1020 FS+74d, BE.KP.C.1020 SS, BE.KP.U.1020 SS | 100% |  | 2024-09-25 | 2025-07-29 |  |  | 135 | K/M/N |
| DE.KP.DFDS.1020 |  | Architectural | 101d | 2025-03-26 A | 2026-01-23 A | DE.KP.DFDS.1010 SS+78d | 100% |  | 2025-04-26 | 2025-08-25 |  |  | 136 | K/M/N |
| DE.KP.DFDS.1030 |  | Civil | 131d | 2025-03-26 A | 2026-01-18 A | DE.KP.DFDS.1020 SS, BE.KP.GE.1040 SS+60d, BE.KP.C.1020 SS, BE.KP.C.1030 | 100% |  | 2025-04-26 | 2025-09-30 |  |  | 137 | K/M/N |
| DE.KP.DFDS.1040 |  | Electrical & Instrumentation | 217d | 2025-06-05 A | 2026-02-04 A | DE.KP.DFDS.1030 SS+1d | 100% |  | 2025-06-25 | 2026-03-18 |  |  | 138 | K/M/N |

| ID | WBS | Activity | Duration | Start | Finish | Predecessors | Complete | Remaining | Planned start | Planned finish | Total float | Free float | MSP Activity ID | Responsibility | Remarks |
| --- | --- | --- | --- | --- | --- | --- | --- | --- | --- | --- | --- | --- | --- | --- | --- |
|  | KP.PWPH | **Process Water Tank** |  | 2024-12-16 | 2025-12-15 |  |  |  |  |  |  |  |  |  |  |
| DE.KP.PWPH.1010 |  | Mechanical | 210d | 2024-12-16 A | 2025-12-15 A | A1020 FS+51d, BE.TM.P.1040 SS | 100% |  | 2024-11-29 | 2025-08-06 |  |  | 140 | K/M/N |  |
| DE.KP.PWPH.1020 |  | Civil | 162d | 2025-03-01 A | 2025-12-15 A | DE.KP.PWPH.1010 SS+56d, BE.KP.GE.1040 SS+60d, BE.KP.C.1020 SS, BE.KP.C.1030 | 100% |  | 2025-03-25 | 2025-10-06 |  |  | 141 | K/M/N |  |
| DE.KP.PWPH.1030 |  | Electrical | 190d | 2025-06-05 A | 2025-12-15 A | DE.KP.PWPH.1020 SS+20d | 100% |  | 2025-06-25 | 2026-02-13 |  |  | 142 | K/M/N |  |
|  | KP.WB | **Maintenance workshop** |  | 2024-12-24 | 2026-02-12 |  |  |  |  |  |  |  |  |  |  |
| DE.KP.WB.1040 |  | Electrical | 144d | 2024-12-24 A | 2026-01-19 A | DE.KP.WB.1010 SS+21d | 100% |  | 2024-12-26 | 2025-06-16 |  |  | 147 | K/M/N |  |
| DE.KP.WB.1020 |  | Structural | 102d | 2025-01-14 A | 2025-03-24 A | DE.KP.WB.1010 SS+37d, BE.KP.M.1030 SS+30d | 100% |  | 2025-01-14 | 2025-05-15 |  |  | 145 | K/M/N |  |
| DE.KP.WB.1030 |  | Civil | 102d | 2025-01-14 A | 2025-03-24 A | DE.KP.WB.1020 SS, BE.KP.GE.1040 SS+60d, BE.KP.C.1020 SS, BE.KP.C.1030 | 100% |  | 2025-01-14 | 2025-05-15 |  |  | 146 | K/M/N |  |
| DE.KP.WB.1010 |  | Mechanical | 122d | 2025-05-22 A | 2026-02-12 A | A1020 FS+126d | 100% |  | 2024-11-29 | 2025-04-24 |  |  | 144 | K/M/N |  |
|  | PSTD | **Tailing Dam Pump House** |  | 2024-09-10 | 2026-07-24 |  |  |  |  |  |  |  |  |  |  |
| DE.KP.PSTD.1010 |  | Mechanical | 209d | 2024-09-10 A | 2026-04-15 | A1020 FS+62d | 88% | 25d | 2024-09-10 | 2025-05-22 | -83d | 0d | 149 | K/M/N | It is related to tailing dam Package |
| DE.KP.PSTD.1030 |  | Electrical | 70d | 2026-05-04 | 2026-07-24 | DE.KP.PSTD.1010 FS+15d |  |  |  |  | -24d | 59d | 151 | K/M/N | It is related to tailing dam Package |
| DE.KP.PSTD.1020 |  | Civil | 60d | 2026-05-11 | 2026-07-18 | DE.KP.PSTD.1010 FS+20d, BE.KP.GE.1040 FS+20d, BE.KP.C.1020, BE.KP.C.1030 |  |  |  |  | -83d | 0d | 150 | K/M/N | It is related to tailing dam Package |
|  | KP.TT | **Tailing Thickener** |  | 2024-09-06 | 2025-11-15 |  |  |  |  |  |  |  |  |  |  |
| DE.KP.TT.1010 |  | Mechanical | 266d | 2024-09-06 A | 2025-01-20 A | A1020 FS+59d | 100% |  | 2024-09-06 | 2025-07-24 |  |  | 153 | K/M/N |  |
| DE.KP.TT.1020 |  | Civil | 124d | 2024-11-22 A | 2025-05-12 A | DE.KP.TT.1010 SS+23d, BE.KP.GE.1040 SS+60d, BE.KP.C.1020 SS, BE.KP.C.1030 SS | 100% |  | 2024-10-25 | 2025-03-25 |  |  | 154 | K/M/N |  |
| DE.KP.TT.1030 |  | Electrical | 211d | 2025-03-20 A | 2025-11-15 A | DE.KP.TT.1020 SS+84d | 100% |  | 2025-03-25 | 2025-12-04 |  |  | 155 | K/M/N |  |
|  | KP.TOT | **Thickener Overflow Tank** |  | 2024-11-22 | 2026-02-12 |  |  |  |  |  |  |  |  |  |  |
| DE.KP.TOT.1010 |  | Civil | 208d | 2024-11-22 A | 2025-05-14 A | A1020 FS+82d, BE.KP.GE.1040 SS+60d, BE.KP.C.1020 SS, BE.KP.C.1030 SS | 100% |  | 2024-10-25 | 2025-07-02 |  |  | 157 | K/M/N |  |
| DE.KP.TOT.1020 |  | Electrical | 162d | 2025-03-17 A | 2026-02-12 A | DE.KP.TOT.1010 SS+94d | 100% |  | 2025-03-25 | 2025-10-06 |  |  | 80 | K/M/N |  |
|  | KP.POB | **Plant Office Building** |  | 2024-10-05 | 2026-01-06 |  |  |  |  |  |  |  |  |  |  |
| DE.KP.POB.1010 |  | Architectural | 97d | 2024-10-05 A | 2025-07-17 A | A1020 FS+82d | 100% |  | 2024-10-05 | 2025-02-01 |  |  | 159 | K/M/N |  |
| DE.KP.POB.1020 |  | Civil | 125d | 2024-11-22 A | 2025-05-14 A | DE.KP.POB.1010 SS+19d, BE.KP.GE.1040 SS+60d, BE.KP.C.1020 SS, BE.KP.C.1030 | 100% |  | 2024-11-02 | 2025-04-01 |  |  | 160 | K/M/N |  |
| DE.KP.POB.1030 |  | Electrical | 168d | 2024-12-19 A | 2026-01-06 A | DE.KP.POB.1020 SS+23d | 100% |  | 2024-12-19 | 2025-07-08 |  |  | 161 | K/M/N |  |

| ID | WBS | Activity | Type | Duration | Start | Finish | Predecessors | Complete | Remaining | Planned start | Planned finish | Total float | Free float | Constraint | MSP Activity ID | Responsibility |
| --- | --- | --- | --- | --- | --- | --- | --- | --- | --- | --- | --- | --- | --- | --- | --- | --- |
|  | KP.LCSS | **LCSS Building** |  |  | 2024-09-21 | 2026-04-09 |  |  |  |  |  |  |  |  |  |  |
| DE.KP.LCSS.1010 |  | Architectural |  | 97d | 2024-09-21 A | 2025-12-13 A | A1020 FS+71d | 100% |  | 2024-09-21 | 2025-01-20 |  |  |  | 163 | K/M/N |
| DE.KP.LCSS.1020 |  | Civil |  | 149d | 2024-10-16 A | 2025-09-11 A | DE.KP.LCSS.1010 SS+12d, BE.KP.GE.1040 SS+30d, BE.KP.C.1020 SS, BE.KP.C.1030 SS, BE.KP.E.1040 SS | 100% |  | 2024-10-16 | 2025-04-14 |  |  |  | 164 | K/M/N |
| DE.KP.LCSS.1030 |  | Electrical |  | 284d | 2024-12-16 A | 2026-01-28 A | DE.KP.LCSS.1020 SS+22d, BE.KP.E.1040 SS+60d, BE.KP.E.1060 SS+15d, BE.KP.E.1070 SS | 100% |  | 2024-12-16 | 2025-11-25 |  |  |  | 165 | K/M/N |
| DE.KP.LCSS.1040 |  | Utility |  | 122d | 2025-06-09 A | 2026-04-09 | DE.KP.LCSS.1030 FS+20d, BE.KP.C.1020 SS, BE.KP.U.1010 SS | 84% | 20d | 2025-10-25 | 2026-03-24 | 41d | 65d |  | 166 | K/M/N |
|  | KP.RD | **Roads & Drains** |  |  | 2024-11-11 | 2025-09-11 |  |  |  |  |  |  |  |  |  |  |
| DE.KP.RD.1010 |  | Civil |  | 100d | 2024-11-11 A | 2025-09-11 A | A1020 FS+103d, BE.KP.GE.1040 SS+50d, BE.KP.C.1020 SS, BE.KP.C.1030 | 100% |  | 2024-11-02 | 2025-03-01 |  |  |  | 168 | K/M/N |
|  | KP.PCG | **Pipe & Cable Galleries** |  |  | 2024-11-09 | 2026-01-29 |  |  |  |  |  |  |  |  |  |  |
| DE.KP.PCG.1010 |  | Structural |  | 100d | 2024-11-09 A | 2026-01-14 A | A1020 FS+109d, BE.KP.M.1030 SS+30d | 100% |  | 2024-11-09 | 2025-03-08 |  |  |  | 170 | K/M/N |
| DE.KP.PCG.1020 |  | Civil |  | 99d | 2024-11-30 A | 2026-01-29 A | DE.KP.PCG.1010 SS+18d, BE.KP.GE.1040 SS+60d, BE.KP.C.1020 SS, BE.KP.C.1030 | 100% |  | 2024-11-30 | 2025-03-29 |  |  |  | 171 | K/M/N |
|  | MISC | **Other Miscellaneous** |  |  | 2024-10-16 | 2026-07-13 |  |  |  |  |  |  |  |  |  |  |
| DE.MISC,1010 |  | Mechanical |  | 300d | 2024-10-16 A | 2026-01-24 A | A1020 FS+90d | 100% |  | 2024-10-16 | 2025-10-14 |  |  |  | 173 | K/M/N |
| DE.MISC,1020 |  | Utility |  | 300d | 2024-10-28 A | 2026-04-03 | A1020 FS+100d, BE.KP.C.1020 SS, BE.KP.U.1010 SS, BE.KP.U.1060 FF | 95% | 15d | 2024-10-28 | 2025-10-27 | -14d | 0d |  | 174 | K/M/N |
| DE.MISC,1030 |  | Architectural |  | 300d | 2024-10-28 A | 2026-02-05 A | A1020 FS+100d | 100% |  | 2024-10-28 | 2025-10-27 |  |  |  | 175 | K/M/N |
| DE.MISC,1050 |  | Civil |  | 350d | 2024-12-28 A | 2026-02-03 A | DE.MISC,1030 SS+10d, BE.KP.GE.1040 SS+60d, BE.KP.C.1020 SS, BE.KP.C.1030, DE.MISC,1010 SS+50d | 100% |  | 2025-01-10 | 2026-03-12 |  |  |  | 177 | K/M/N |
| DE.MISC,1040 |  | Structural |  | 300d | 2025-01-10 A | 2026-04-03 | DE.MISC,1030 SS+60d, BE.KP.M.1030 SS+30d, DE.MISC,1010 SS+60d | 95% | 15d | 2025-01-10 | 2026-01-08 | -9d | 0d |  | 176 | K/M/N |
| DE.MISC,1060 |  | Electrical & Instrumentation |  | 400d | 2025-03-25 A | 2026-07-13 | DE.MISC,1050 SS+71d, BE.KP.E.1050 | 75% | 100d | 2025-04-26 | 2026-08-24 | -4d | 0d |  | 82 | K/M/N |
| DE.MISC,1070 |  | Other Misc. Drawings / Docuemtns |  | 400d | 2025-03-26 A | 2026-05-01 | DE.MISC,1050 SS+72d, DE.MISC,1010 SS, DE.MISC,1020 SS, DE.MISC,1030 SS, DE.MISC,1040 SS, DE.MISC,1060 SS | 95% | 39d | 2025-04-26 | 2026-08-24 | 97d | 96d |  | 79 | K/M/N |
|  | P | **Supply / Delivery** |  |  | 2024-06-27 | 2026-07-24 |  |  |  |  |  |  |  |  |  |  |
| MSI7 Delivery Start |  | Delivery Commencement - Other Equipment | milestone | 0d | 2025-03-30 A | 2025-03-30 A | A1020 SS+301d | 100% |  | 2025-06-26 | 2025-06-26 |  |  |  | 263 | K/T/H |
| MSI2 Delivery Start |  | Delivery Commencement - Long Lead / Critical Equipment | milestone | 0d | 2025-06-24 A | 2025-06-24 A | A1020 SS | 100% |  | 2026-01-19 | 2026-01-19 |  |  | start on or after 2025-05-01 | 179 | K/T/H |
| MS3 Delivery1 End |  | Building Steel Structure & Sheeting Delivery Complete | milestone | 0d | 2026-04-23 | 2026-04-23 | P.KP.SS.1030 FF |  |  |  |  | 104.5d | 172.3d |  | 261 | K |
| MS4 Delivery2 End |  | Mechanical & Electrical Delivery Complete | milestone | 0d | 2026-07-24 | 2026-07-24 | P.HT.TT.1050 FF, P.KP.CC1050 FF, P.TM.AF.1050 FF, P.TM.PS.1050 FF, P.TM.SS.1050 FF, P.TM.TS.1050 FF, P.TM.DS.1050 FF, P.KP.HBF.1050 FF, P.TM.TT.1050 FF, P.KP.HVM.1050 FF, P.KP.EOT.1050 FF, P.KP.LTSGP.1050 FF, P.KP.TR1050 FF, P.KP.DGS.1050 FF, P.KP.LTMP.1050 FF, P.KP.VFD.1050 FF, P.HT.BT.1050 FF, P.KP.FDA.1050 FF, P.KP.AS.1050 FF, P.KP.VS1050 FF, P.KP.AC.1050 FF, P.KP.EL.1050 FF, P.KP.V.1050 FF, P.TM.DM.1050 FF, P.TM.SC.1050 FF, P.TM.DESC.1050 FF, P.TM.DENC.1050 FF, P.TM.DESCFP.1050 FF, P.TM.DENCFP.1050 FF, P.TM.VF.1050 FF, P.KP.CBMS.1050 FF, P.HT.BWS.1050 FF, P.KP.PG.1050 FF, P.KP.FG.1050 FF, P.KP.S.1050 FF, P.KP.RG1050 FF, P.KP.SP.1050 FF, P.TM.PU.FR1050 FF, P.TM.PU.PWSW1050 FF, P.TM.PU.SP.DO.TW1050 FF, P.TM.TUP.1050 FF, P.KP.MWP.1050 FF, P.TM.FHSF.1050 FF, P.TM.AG.1050 FF, P.HT.GB.1050 FF, P.HT.LSC.1050 FF, P.HT.HSC.1050 FF, P.HT.BK.1050 FF, P.HT.ID.1050 FF, P.HT.P.1050 FF, P.HT.SC.1050 FF, P.KP.H.1050 FF, P.KP.HTPC.1050 FF, P.KP.LTPC.1050 FF, P.KP.BVM.1050 FF, P.KP.UPS.1050 FF, P.KP.CCTV.1050 FF, P.KP.IN.1050 FF, P.KP.TS.1050 FF, P.KP.DFDS.1050 FF, P.KP.CWS.1060 FF, P.KP.FWS.1050 FF, P.KP.BB&C.1050 FF, P.KP.BCD.1050 FF, P.KP.BD.1050 FF, P.KP.CT.1050 FF, P.KP.CAS.1050 FF, P.KP.E&LM.1050 FF, P.KP.VCB.1050 FF, P.KP.LTCC.1050 FF, P.KP.P&F.1050 FF, P.KP.P(CW).1050 FF, P.KP.WSE.1050 FF, P.KP.L(MN).1050 FF, P.HT.PB.1050 FF, P.HT.B.1050 FF, P.HT.M.1050 FF, P.HT.CF.1050 FF, P.HT.CI.1050 FF, P.KP.MISC.1050 FF |  |  |  |  | 26d | 105d |  | 180 | K/T/H |
|  | 1 | **Long Lead / Critical Equipment** |  |  | 2024-06-27 | 2026-07-24 |  |  |  |  |  |  |  |  |  |  |
|  | HT.TT | **Travelling Tipper** |  |  | 2024-07-16 | 2026-04-03 |  |  |  |  |  |  |  |  |  |  |
| P.HT.TT.1010 |  | Release of Technical Specification |  | 1d | 2024-07-16 A | 2024-07-16 A | A1020 FS+17d | 100% |  |  |  |  |  |  | 266 | H |
| P.HT.TT.1020 |  | Release of RFQ, Evaluation & Order Placement |  | 97d | 2024-07-20 A | 2024-10-21 A | P.HT.TT.1010, BE.KP.GE.1050 SS+14d | 100% |  | 2024-07-20 | 2024-11-19 |  |  |  | 267 | H |
| P.HT.TT.1030 |  | Drawing Submission, Approval & Manufacturing Clearance |  | 127d | 2024-10-18 A | 2024-12-11 A | P.HT.TT.1020 | 100% |  | 2024-10-25 | 2025-03-28 |  |  |  | 268 | H |
| P.HT.TT.1040 |  | Manufacturing & Material Inspection. |  | 173d | 2025-03-08 A | 2026-03-11 A | P.HT.TT.1030 SS+90d | 100% |  | 2025-03-25 | 2025-10-18 |  |  |  | 269 | H |
| P.HT.TT.1050 |  | Dispatch & Delivery at Site. |  | 100d | 2025-11-27 A | 2026-04-03 | P.HT.TT.1040 SS+154d, MA1080 FS+30d, MSI2 Delivery Start SS | 90% | 15d | 2025-11-25 | 2026-03-28 | 16d | 52d |  | 209 | H |

| ID | WBS | Activity | Duration | Start | Finish | Predecessors | Complete | Remaining | Planned start | Planned finish | Total float | Free float | MSP Activity ID | Responsibility | Remarks |
| --- | --- | --- | --- | --- | --- | --- | --- | --- | --- | --- | --- | --- | --- | --- | --- |
|  | KP.CC | **Cone Crusher** |  | 2024-07-05 | 2026-05-08 |  |  |  |  |  |  |  |  |  |  |
| P.KP.CC1010 |  | Release of Technical Specification | 1d | 2024-07-05 A | 2024-07-05 A | A1020 FS+8d | 100% |  |  |  |  |  | 271 | K |  |
| P.KP.CC1020 |  | Release of RFQ, Evaluation & Order Placement | 94d | 2024-07-06 A | 2024-11-26 A | P.KP.CC1010, BE.KP.GE.1050 SS | 100% |  | 2024-07-06 | 2024-10-30 |  |  | 272 | K |  |
| P.KP.CC1030 |  | Drawing Submission, Approval & Manufacturing Clearance | 100d | 2024-12-06 A | 2025-02-28 A | P.KP.CC1020 | 100% |  | 2024-11-29 | 2025-03-31 |  |  | 273 | K |  |
| P.KP.CC1040 |  | Manufacturing & Material Inspection. | 250d | 2025-02-28 A | 2026-01-19 A | P.KP.CC1030 | 100% |  | 2025-10-25 | 2026-08-24 |  |  | 274 | K |  |
| P.KP.CC1050 |  | Dispatch & Delivery at Site. | 90d | 2026-01-26 A | 2026-05-08 | P.KP.CC1040, MA1080 FS+30d, MSI2 Delivery Start SS | 50% | 45d | 2026-02-25 | 2026-06-13 | 11d | 65d | 191 | K | It is as per Schedule(25/05/26) |
|  | TM.AF | **Apron Feeder** |  | 2024-08-31 | 2026-04-27 |  |  |  |  |  |  |  |  |  |  |
| P.TM.AF.1010 |  | Release of Technical Specification | 1d | 2024-08-31 A | 2024-08-31 A | A1020 FS+54d | 100% |  |  |  |  |  | 277 | T |  |
| P.TM.AF.1020 |  | Release of RFQ, Evaluation & Order Placement | 62d | 2024-09-02 A | 2024-11-14 A | P.TM.AF.1010, BE.KP.GE.1050 SS+30d | 100% |  | 2024-09-02 | 2024-11-18 |  |  | 276 | T |  |
| P.TM.AF.1030 |  | Drawing Submission, Approval & Manufacturing Clearance | 60d | 2024-11-25 A | 2025-02-12 A | P.TM.AF.1020 | 100% |  | 2024-11-19 | 2025-01-31 |  |  | 278 | T |  |
| P.TM.AF.1040 |  | Manufacturing & Material Inspection. | 225d | 2025-02-13 A | 2026-03-28 | P.TM.AF.1030 | 96% | 10d | 2025-04-16 | 2026-01-14 | 6d | 0d | 279 | T |  |
| P.TM.AF.1050 |  | Dispatch & Delivery at Site. | 30d | 2025-09-25 A | 2026-04-27 | P.TM.AF.1040 FF+25d, MA1080 FS+30d, MSI2 Delivery Start SS | 90% | 3d | 2026-01-02 | 2026-02-09 | 6d | 0d | 190 | T |  |
|  | TM.PS | **Primary Vibrating Screen** |  | 2024-07-01 | 2025-06-25 |  |  |  |  |  |  |  |  |  |  |
| P.TM.PS.1010 |  | Release of Technical Specification | 1d | 2024-07-01 A | 2024-07-01 A | A1020 FS+4d | 100% |  |  |  |  |  | 281 | T |  |
| P.TM.PS.1020 |  | Release of RFQ, Evaluation & Order Placement | 50d | 2024-08-08 A | 2024-12-06 A | P.TM.PS.1010, BE.KP.GE.1050 SS+30d | 100% |  | 2024-08-08 | 2024-10-10 |  |  | 282 | T |  |
| P.TM.PS.1030 |  | Drawing Submission, Approval & Manufacturing Clearance | 25d | 2024-12-10 A | 2025-02-12 A | P.TM.PS.1020 | 100% |  | 2024-11-30 | 2024-12-30 |  |  | 283 | T |  |
| P.TM.PS.1040 |  | Manufacturing & Material Inspection. | 126d | 2025-02-12 A | 2025-06-20 A | P.TM.PS.1030 | 100% |  | 2025-04-10 | 2025-09-08 |  |  | 284 | T |  |
| P.TM.PS.1050 |  | Dispatch & Delivery at Site. | 25d | 2025-06-20 A | 2025-06-25 A | P.TM.PS.1040, MA1080 FS+30d, MSI2 Delivery Start SS | 100% |  | 2025-09-06 | 2025-10-07 |  |  | 206 | T |  |
|  | TM.SS | **Secondary Vibrating Screen** |  | 2024-07-04 | 2025-11-07 |  |  |  |  |  |  |  |  |  |  |
| P.TM.SS.1010 |  | Release of Technical Specification | 1d | 2024-07-04 A | 2024-07-04 A | A1020 FS+7d | 100% |  |  |  |  |  | 286 | T |  |
| P.TM.SS.1020 |  | Release of RFQ, Evaluation & Order Placement | 50d | 2024-08-08 A | 2024-12-06 A | P.TM.SS.1010, BE.KP.GE.1050 SS+30d | 100% |  | 2024-08-08 | 2024-10-10 |  |  | 287 | T |  |
| P.TM.SS.1030 |  | Drawing Submission, Approval & Manufacturing Clearance | 30d | 2024-12-10 A | 2025-02-20 A | P.TM.SS.1020 | 100% |  | 2024-11-30 | 2025-01-06 |  |  | 288 | T |  |
| P.TM.SS.1040 |  | Manufacturing & Material Inspection. | 160d | 2025-02-20 A | 2025-11-07 A | P.TM.SS.1030 | 100% |  | 2025-04-11 | 2025-10-22 |  |  | 289 | T |  |
| P.TM.SS.1050 |  | Dispatch & Delivery at Site. | 25d | 2025-10-27 A | 2025-11-05 A | P.TM.SS.1040, MA1080 FS+30d, MSI2 Delivery Start SS | 100% |  | 2025-12-26 | 2026-01-27 |  |  | 225 | T |  |

| ID | WBS | Activity | Duration | Start | Finish | Predecessors | Complete | Remaining | Planned start | Planned finish | Total float | Free float | MSP Activity ID | Responsibility |
| --- | --- | --- | --- | --- | --- | --- | --- | --- | --- | --- | --- | --- | --- | --- |
|  | TM.TS | **Tertiary Vibrating Screen** |  | 2024-07-04 | 2025-07-31 |  |  |  |  |  |  |  |  |  |
| P.TM.TS.1010 |  | Release of Technical Specification | 1d | 2024-07-04 A | 2024-07-04 A | A1020 FS+7d | 100% |  |  |  |  |  | 291 | T |
| P.TM.TS.1020 |  | Release of RFQ, Evaluation & Order Placement | 100d | 2024-07-05 A | 2024-12-06 A | P.TM.TS.1010 | 100% |  | 2024-07-05 | 2024-11-07 |  |  | 292 | T |
| P.TM.TS.1030 |  | Drawing Submission, Approval & Manufacturing Clearance | 25d | 2024-12-10 A | 2025-02-12 A | P.TM.TS.1020 | 100% |  | 2024-12-06 | 2025-01-06 |  |  | 293 | T |
| P.TM.TS.1040 |  | Manufacturing & Material Inspection. | 280d | 2025-02-12 A | 2025-07-25 A | P.TM.TS.1030 | 100% |  | 2025-04-11 | 2026-03-18 |  |  | 294 | T |
| P.TM.TS.1050 |  | Dispatch & Delivery at Site. | 25d | 2025-07-25 A | 2025-07-31 A | P.TM.TS.1040, MA1080 FS+30d, MSI2 Delivery Start SS | 100% |  | 2025-10-25 | 2025-11-24 |  |  | 188 | T |
|  | TM.DS | **Dewatering Screen** |  | 2024-06-29 | 2025-07-31 |  |  |  |  |  |  |  |  |  |
| P.TM.DS.1010 |  | Release of Technical Specification | 1d | 2024-06-29 A | 2024-06-29 A | A1020 FS+2d | 100% |  |  |  |  |  | 296 | T |
| P.TM.DS.1020 |  | Release of RFQ, Evaluation & Order Placement. | 55d | 2024-08-08 A | 2024-12-06 A | P.TM.DS.1010 FS+25d, BE.KP.GE.1050 SS+30d | 100% |  | 2024-08-08 | 2024-10-17 |  |  | 297 | T |
| P.TM.DS.1030 |  | Drawing Submission, Approval & Manufacturing Clearance. | 30d | 2024-12-10 A | 2025-01-08 A | P.TM.DS.1020 | 100% |  | 2024-11-30 | 2025-01-07 |  |  | 298 | T |
| P.TM.DS.1040 |  | Manufacturing & Material Inspection. | 225d | 2025-01-08 A | 2025-06-20 A | P.TM.DS.1030 | 100% |  | 2025-03-25 | 2025-12-20 |  |  | 299 | T |
| P.TM.DS.1050 |  | Dispatch & Delivery at Site. | 25d | 2025-06-20 A | 2025-07-31 A | P.TM.DS.1040, MA1080 FS+30d, MSI2 Delivery Start SS | 100% |  | 2026-02-04 | 2026-03-05 |  |  | 205 | T |
|  | KP.HBF | **HBF Equipment** |  | 2024-07-09 | 2026-04-10 |  |  |  |  |  |  |  |  |  |
| P.KP.HBF.1010 |  | Release of Technical Specification | 1d | 2024-07-09 A | 2024-07-09 A | A1020 FS+11d | 100% |  |  |  |  |  | 301 | K |
| P.KP.HBF.1020 |  | Release of RFQ, Evaluation & Order Placement. | 100d | 2024-07-10 A | 2024-12-17 A | P.KP.HBF.1010, BE.KP.GE.1050 SS | 100% |  | 2024-07-10 | 2024-11-12 |  |  | 302 | K |
| P.KP.HBF.1030 |  | Drawing Submission, Approval & Manufacturing Clearance. | 120d | 2024-12-25 A | 2025-03-21 A | P.KP.HBF.1020 | 100% |  | 2024-12-06 | 2025-04-30 |  |  | 303 | K |
| P.KP.HBF.1040 |  | Manufacturing & Material Inspection. | 220d | 2025-04-26 A | 2026-04-03 | P.KP.HBF.1030 | 93% | 15d | 2025-10-25 | 2026-07-18 | 20d | 0d | 304 | K |
| P.KP.HBF.1050 |  | Dispatch & Delivery at Site. | 30d | 2025-09-20 A | 2026-04-10 | P.KP.HBF.1040, MSI2 Delivery Start SS | 80% | 6d | 2026-07-20 | 2026-08-24 | 20d | 13d | 184 | K |
|  | TM.TT | **Tailing Thickener Equipment** |  | 2024-06-27 | 2026-02-28 |  |  |  |  |  |  |  |  |  |
| P.TM.TT.1010 |  | Release of Technical Specification | 1d | 2024-06-27 A | 2024-06-27 A | A1020 | 100% |  |  |  |  |  | 306 | T |
| P.TM.TT.1020 |  | Release of RFQ, Evaluation & Order Placement. | 55d | 2024-07-04 A | 2024-10-15 A | P.TM.TT.1010, BE.KP.GE.1050 SS | 100% |  | 2024-07-04 | 2024-09-09 |  |  | 307 | T |
| P.TM.TT.1030 |  | Drawing Submission, Approval & Manufacturing Clearance. | 55d | 2024-10-15 A | 2024-12-01 A | P.TM.TT.1020 | 100% |  | 2024-10-04 | 2024-12-10 |  |  | 308 | T |
| P.TM.TT.1040 |  | Manufacturing & Material Inspection. | 120d | 2024-12-20 A | 2026-02-24 A | P.TM.TT.1030 | 100% |  | 2024-12-09 | 2025-05-03 |  |  | 309 | T |
| P.TM.TT.1050 |  | Dispatch & Delivery at Site. | 25d | 2026-02-25 A | 2026-02-28 A | P.TM.TT.1040 FF+20d, MA1080 FS+30d, MSI2 Delivery Start SS | 100% |  | 2026-03-04 | 2026-04-03 |  |  | 196 | T |

| ID | WBS | Activity | Duration | Start | Finish | Predecessors | Complete | Remaining | Planned start | Planned finish | Total float | Free float | MSP Activity ID | Responsibility |
| --- | --- | --- | --- | --- | --- | --- | --- | --- | --- | --- | --- | --- | --- | --- |
|  | KP.HVM | **HV MCC** |  | 2024-11-25 | 2026-07-09 |  |  |  |  |  |  |  |  |  |
| P.KP.HVM.1010 |  | Release of Technical Specification | 1d | 2024-11-25 A | 2024-11-25 A | A1020 FS+117d | 100% |  | 2024-11-19 | 2024-11-19 |  |  | 311 | K |
| P.KP.HVM.1020 |  | Release of RFQ, Evaluation & Order Placement. | 77d | 2024-11-25 A | 2025-05-23 A | P.KP.HVM.1010, BE.KP.GE.1050 SS+30d | 100% |  | 2024-11-20 | 2025-02-20 |  |  | 312 | K |
| P.KP.HVM.1030 |  | Drawing Submission, Approval & Manufacturing Clearance. | 75d | 2025-05-24 A | 2026-04-03 | P.KP.HVM.1020 | 90% | 15d | 2025-06-25 | 2025-09-24 | -26d | 0d | 313 | K |
| P.KP.HVM.1040 |  | Manufacturing & Material Inspection. | 70d | 2026-03-18 | 2026-06-10 | P.KP.HVM.1030 FF+57d |  |  |  |  | -26d | 0d | 314 | K |
| P.KP.HVM.1050 |  | Dispatch & Delivery at Site. | 25d | 2026-06-11 | 2026-07-09 | P.KP.HVM.1040 FF+25d, MA1080 FS+30d, MSI2 Delivery Start SS |  |  |  |  | -26d | 3d | 248 | K |
|  | KP.EOT | **EOT Crane** |  | 2024-10-25 | 2026-02-25 |  |  |  |  |  |  |  |  |  |
| P.KP.EOT.1010 |  | Release of Technical Specification | 1d | 2024-10-25 A | 2024-10-25 A | A1020 FS+100d | 100% |  | 2024-10-28 | 2024-10-28 |  |  | 316 | K |
| P.KP.EOT.1020 |  | Release of RFQ, Evaluation & Order Placement. | 76d | 2024-10-25 A | 2025-03-25 A | P.KP.EOT.1010, BE.KP.GE.1050 SS+30d | 100% |  | 2024-10-29 | 2025-01-30 |  |  | 317 | K |
| P.KP.EOT.1030 |  | Drawing Submission, Approval & Manufacturing Clearance. | 88d | 2025-04-05 A | 2025-05-23 A | P.KP.EOT.1020 | 100% |  | 2025-04-26 | 2025-08-06 |  |  | 318 | K |
| P.KP.EOT.1040 |  | Manufacturing & Material Inspection. | 196d | 2025-05-24 A | 2026-01-10 A | P.KP.EOT.1030 | 100% |  | 2025-06-25 | 2026-02-20 |  |  | 319 | K |
| P.KP.EOT.1050 |  | Dispatch & Delivery at Site. | 36d | 2026-02-09 A | 2026-02-25 A | P.KP.EOT.1040, MA1080 FS+30d, MSI2 Delivery Start SS | 100% |  | 2026-03-21 | 2026-05-04 |  |  | 194 | K |
|  | KP.LTSGP | **LT Switch Gear Panel** |  | 2024-12-20 | 2026-04-21 |  |  |  |  |  |  |  |  |  |
| P.KP.LTSGP.1010 |  | Release of Technical Specification | 1d | 2024-12-20 A | 2024-12-20 A | A1020 FS+130d | 100% |  | 2024-12-04 | 2024-12-04 |  |  | 321 | K |
| P.KP.LTSGP.1020 |  | Release of RFQ, Evaluation & Order Placement. | 75d | 2024-12-20 A | 2025-04-03 A | P.KP.LTSGP.1010, BE.KP.GE.1050 SS+30d | 100% |  | 2024-12-05 | 2025-03-05 |  |  | 322 | K |
| P.KP.LTSGP.1030 |  | Drawing Submission, Approval & Manufacturing Clearance. | 75d | 2025-04-04 A | 2025-08-25 A | P.KP.LTSGP.1020 | 100% |  | 2025-04-26 | 2025-07-22 |  |  | 323 | K |
| P.KP.LTSGP.1040 |  | Manufacturing & Material Inspection. | 125d | 2025-08-26 A | 2026-02-25 A | P.KP.LTSGP.1030 | 100% |  | 2025-12-09 | 2026-05-13 |  |  | 324 | K |
| P.KP.LTSGP.1050 |  | Dispatch & Delivery at Site. | 30d | 2026-03-16 | 2026-04-21 | P.KP.LTSGP.1040, MA1080 FS+30d, MSI2 Delivery Start SS |  |  |  |  | 51d | 75d | 185 | K |
|  | KP.TR | **Transformer** |  | 2024-11-29 | 2025-11-19 |  |  |  |  |  |  |  |  |  |
| P.KP.TR1010 |  | Release of Technical Specification | 1d | 2024-11-29 A | 2024-11-29 A | A1020 FS+130d, BE.KP.E.1020 | 100% |  | 2024-12-11 | 2024-12-12 |  |  | 326 | K |
| P.KP.TR1020 |  | Release of RFQ, Evaluation & Order Placement. | 78d | 2024-11-30 A | 2025-04-25 A | P.KP.TR1010, BE.KP.GE.1050 SS+30d | 100% |  | 2024-12-12 | 2025-03-18 |  |  | 327 | K |
| P.KP.TR1030 |  | Drawing Submission, Approval & Manufacturing Clearance. | 75d | 2025-05-02 A | 2025-06-21 A | P.KP.TR1020 | 100% |  | 2025-04-26 | 2025-07-22 |  |  | 328 | K |
| P.KP.TR1040 |  | Manufacturing & Material Inspection. | 105d | 2025-06-21 A | 2025-11-10 A | P.KP.TR1030 | 100% |  | 2025-10-25 | 2026-03-02 |  |  | 329 | K |
| P.KP.TR1050 |  | Dispatch & Delivery at Site. | 30d | 2025-11-11 A | 2025-11-19 A | P.KP.TR1040 FF+25d, MA1080 FS+30d, MSI2 Delivery Start SS | 100% |  | 2025-12-01 | 2026-01-07 |  |  | 224 | K |

| ID | WBS | Activity | Duration | Start | Finish | Predecessors | Complete | Remaining | Planned start | Planned finish | Total float | Free float | MSP Activity ID | Responsibility |
| --- | --- | --- | --- | --- | --- | --- | --- | --- | --- | --- | --- | --- | --- | --- |
|  | KP.DGS | **Diesel Generator Set** |  | 2025-03-25 | 2026-04-21 |  |  |  |  |  |  |  |  |  |
| P.KP.DGS.1010 |  | Release of Technical Specification | 1d | 2025-03-25 A | 2025-03-25 A | A1020 FS+145d | 100% |  |  |  |  |  | 331 | K |
| P.KP.DGS.1020 |  | Release of RFQ, Evaluation & Order Placement. | 75d | 2025-03-25 A | 2025-03-25 A | P.KP.DGS.1010 | 100% |  | 2025-04-26 | 2025-07-22 |  |  | 332 | K |
| P.KP.DGS.1030 |  | Drawing Submission, Approval & Manufacturing Clearance. | 90d | 2025-07-08 A | 2025-11-13 A | P.KP.DGS.1020 | 100% |  | 2025-07-25 | 2025-11-14 |  |  | 333 | K |
| P.KP.DGS.1040 |  | Manufacturing & Material Inspection. | 75d | 2025-11-14 A | 2026-02-23 A | P.KP.DGS.1030 | 100% |  | 2025-12-18 | 2026-03-21 |  |  | 334 | K |
| P.KP.DGS.1050 |  | Dispatch & Delivery at Site. | 30d | 2026-03-16 | 2026-04-21 | P.KP.DGS.1040, MA1080 FS+30d, MSI2 Delivery Start SS |  |  |  |  | 31d | 79d | 193 | K |
|  | KP.LTMP | **LT MCC Panel** |  | 2024-12-19 | 2026-06-13 |  |  |  |  |  |  |  |  |  |
| P.KP.LTMP.1020 |  | Release of RFQ, Evaluation & Order Placement. | 80d | 2024-12-19 A | 2025-04-25 A | P.KP.LTMP.1010 | 100% |  | 2025-04-26 | 2025-07-28 |  |  | 337 | K |
| P.KP.LTMP.1010 |  | Release of Technical Specification | 1d | 2025-03-25 A | 2025-03-25 A | A1020 FS+155d | 100% |  |  |  |  |  | 336 | K |
| P.KP.LTMP.1030 |  | Drawing Submission, Approval & Manufacturing Clearance. | 75d | 2025-07-02 A | 2026-03-05 A | P.KP.LTMP.1020 | 100% |  | 2025-07-25 | 2025-10-27 |  |  | 338 | K |
| P.KP.LTMP.1040 |  | Manufacturing & Material Inspection. | 50d | 2026-03-16 | 2026-05-15 | P.KP.LTMP.1030 |  |  |  |  | 6d | 0d | 339 | K |
| P.KP.LTMP.1050 |  | Dispatch & Delivery at Site. | 30d | 2026-05-11 | 2026-06-13 | P.KP.LTMP.1040 FF+25d, MA1080 FS+30d, MSI2 Delivery Start SS |  |  |  |  | 6d | 30d | 181 | K |
|  | KP.VFD | **VFD Drive** |  | 2024-12-19 | 2026-06-11 |  |  |  |  |  |  |  |  |  |
| P.KP.VFD.1010 |  | Release of Technical Specification | 1d | 2024-12-19 A | 2024-12-19 A | A1020 FS+150d | 100% |  | 2024-12-28 | 2024-12-28 |  |  | 341 | K |
| P.KP.VFD.1020 |  | Release of RFQ, Evaluation & Order Placement. | 70d | 2024-12-19 A | 2025-04-25 A | P.KP.VFD.1010, BE.KP.GE.1050 SS+30d | 100% |  | 2024-12-30 | 2025-03-24 |  |  | 342 | K |
| P.KP.VFD.1030 |  | Drawing Submission, Approval & Manufacturing Clearance. | 65d | 2025-04-26 A | 2026-03-05 A | P.KP.VFD.1020 | 100% |  | 2025-05-24 | 2025-08-07 |  |  | 343 | K |
| P.KP.VFD.1040 |  | Manufacturing & Material Inspection. | 160d | 2025-10-15 A | 2026-05-13 | P.KP.VFD.1030 SS+90d | 70% | 48d | 2025-11-13 | 2026-05-27 | -12d | 0d | 344 | K |
| P.KP.VFD.1050 |  | Dispatch & Delivery at Site. | 30d | 2026-05-07 | 2026-06-11 | P.KP.VFD.1040 FF+25d, MA1080 FS+30d, MSI2 Delivery Start SS |  |  |  |  | -12d | 0d | 192 | K |
|  | HT.BT | **Belt** |  | 2025-02-26 | 2026-03-28 |  |  |  |  |  |  |  |  |  |
| P.HT.BT.1010 |  | Release of Technical Specification | 1d | 2025-02-26 A | 2025-02-26 A | A1020 FS+174d | 100% |  | 2025-03-25 | 2025-03-25 |  |  | 346 | H |
| P.HT.BT.1020 |  | Release of RFQ, Evaluation & Order Placement. | 50d | 2025-02-26 A | 2025-07-10 A | P.HT.BT.1010 FS+3d | 100% |  | 2025-04-30 | 2025-06-27 |  |  | 347 | H |
| P.HT.BT.1030 |  | Drawing Submission, Approval & Manufacturing Clearance. | 39d | 2025-07-11 A | 2025-07-25 A | P.HT.BT.1020 FS+22d | 100% |  | 2025-09-02 | 2025-10-20 |  |  | 348 | H |
| P.HT.BT.1040 |  | Manufacturing & Material Inspection. | 164d | 2025-07-26 A | 2026-02-25 A | P.HT.BT.1030 | 100% |  | 2025-10-25 | 2026-05-14 |  |  | 349 | H |
| P.HT.BT.1050 |  | Dispatch & Delivery at Site. | 40d | 2026-02-05 A | 2026-03-28 | P.HT.BT.1040 FF+24d, MA1080 FS+30d, MSI2 Delivery Start SS | 50% | 5d | 2026-02-05 | 2026-03-25 | 16d | 76d | 244 | H |

| ID | WBS | Activity | Duration | Start | Finish | Predecessors | Complete | Remaining | Planned start | Planned finish | Total float | Free float | MSP Activity ID | Responsibility |
| --- | --- | --- | --- | --- | --- | --- | --- | --- | --- | --- | --- | --- | --- | --- |
|  | KP.FDA | **FDA** |  | 2025-03-19 | 2026-07-18 |  |  |  |  |  |  |  |  |  |
| P.KP.FDA.1010 |  | Release of Technical Specification | 1d | 2025-03-19 A | 2025-03-20 A | A1020 FS+275d, BE.KP.I.1050, DE.KP.SB.1050 SS+60d | 100% |  | 2025-07-07 | 2025-07-08 |  |  | 351 | K |
| P.KP.FDA.1020 |  | Release of RFQ, Evaluation & Order Placement. | 55d | 2025-03-19 A | 2025-08-25 A | P.KP.FDA.1010, BE.KP.GE.1050 SS+30d | 100% |  | 2025-07-07 | 2025-09-12 |  |  | 352 | K |
| P.KP.FDA.1030 |  | Drawing Submission, Approval & Manufacturing Clearance. | 60d | 2025-09-18 A | 2026-03-06 A | P.KP.FDA.1020 | 100% |  | 2025-11-27 | 2026-02-10 |  |  | 353 | K |
| P.KP.FDA.1040 |  | Manufacturing & Material Inspection. | 80d | 2026-03-16 | 2026-06-19 | P.KP.FDA.1030 |  |  |  |  | 31d | 0d | 354 | K |
| P.KP.FDA.1050 |  | Dispatch & Delivery at Site. | 30d | 2026-06-15 | 2026-07-18 | P.KP.FDA.1040 FF+25d, MA1080 FS+30d, MSI2 Delivery Start SS |  |  |  |  | 31d | 5d | 241 | K |
|  | KP.AS | **Automation System** |  | 2025-02-04 | 2026-05-02 |  |  |  |  |  |  |  |  |  |
| P.KP.AS.1010 |  | Release of Technical Specification | 1d | 2025-02-04 A | 2025-02-04 A | A1020 FS+280d, BE.KP.I.1030 FS+50d, BE.KP.I.1070 SS | 100% |  | 2025-08-20 | 2025-08-21 |  |  | 356 | K |
| P.KP.AS.1020 |  | Release of RFQ, Evaluation & Order Placement. | 55d | 2025-02-06 A | 2025-08-25 A | P.KP.AS.1010, BE.KP.GE.1050 SS+30d | 100% |  | 2025-08-21 | 2025-10-28 |  |  | 357 | K |
| P.KP.AS.1030 |  | Drawing Submission, Approval & Manufacturing Clearance. | 40d | 2025-08-26 A | 2026-03-28 | P.KP.AS.1020 | 75% | 10d | 2026-03-14 | 2026-05-02 | 41d | 0d | 358 | K |
| P.KP.AS.1040 |  | Manufacturing & Material Inspection. | 20d | 2026-03-16 | 2026-04-09 | P.KP.AS.1030 SS+44d |  |  |  |  | 41d | 0d | 359 | K |
| P.KP.AS.1050 |  | Dispatch & Delivery at Site. | 25d | 2026-04-04 | 2026-05-02 | P.KP.AS.1040 FF+20d, MA1080 FS+30d, MSI2 Delivery Start SS |  |  |  |  | 41d | 65d | 232 | K |
|  | KP.VS | **Ventilation System** |  | 2025-05-23 | 2026-06-25 |  |  |  |  |  |  |  |  |  |
| P.KP.VS1010 |  | Release of Technical Specification | 1d | 2025-05-23 A | 2025-05-23 A | A1020 FS+220d, BE.KP.U.1030 | 100% |  | 2025-05-31 | 2025-05-31 |  |  | 361 | K |
| P.KP.VS1020 |  | Release of RFQ, Evaluation & Order Placement. | 65d | 2025-05-24 A | 2025-09-15 A | P.KP.VS1010, BE.KP.GE.1050 SS+30d | 100% |  | 2025-07-03 | 2025-09-22 |  |  | 362 | K |
| P.KP.VS1030 |  | Drawing Submission, Approval & Manufacturing Clearance.. | 60d | 2025-11-06 A | 2026-02-23 A | P.KP.VS1020 | 100% |  | 2025-11-25 | 2026-02-06 |  |  | 363 | K |
| P.KP.VS1040 |  | Manufacturing & Material Inspection. | 60d | 2026-03-16 | 2026-05-27 | P.KP.VS1030 SS+100d |  |  |  |  | -24d | 0d | 364 | K |
| P.KP.VS1050 |  | Dispatch & Delivery at Site. | 30d | 2026-05-22 | 2026-06-25 | P.KP.VS1040 FF+25d, MA1080 FS+30d, MSI2 Delivery Start SS |  |  |  |  | -24d | 0d | 221 | K |
|  | KP.AC | **Air Conditioning System** |  | 2025-06-16 | 2026-07-09 |  |  |  |  |  |  |  |  |  |
| P.KP.AC.1010 |  | Release of Technical Specification | 1d | 2025-06-16 A | 2025-06-16 A | A1020 FS+220d, BE.KP.U.1040 | 100% |  | 2025-07-04 | 2025-07-05 |  |  | 366 | K |
| P.KP.AC.1020 |  | Release of RFQ, Evaluation & Order Placement. | 60d | 2025-06-17 A | 2025-11-12 A | P.KP.AC.1010, BE.KP.GE.1050 SS+30d | 100% |  | 2025-07-05 | 2025-09-18 |  |  | 367 | K |
| P.KP.AC.1030 |  | Drawing Submission, Approval & Manufacturing Clearance. | 40d | 2025-11-24 A | 2026-03-31 | P.KP.AC.1020 | 70% | 12d | 2026-01-06 | 2026-02-24 | -18d | 0d | 368 | K |
| P.KP.AC.1040 |  | Manufacturing & Material Inspection. | 60d | 2026-04-01 | 2026-06-10 | P.KP.AC.1030 |  |  |  |  | -18d | 0d | 369 | K |
| P.KP.AC.1050 |  | Dispatch & Delivery at Site. | 25d | 2026-06-11 | 2026-07-09 | P.KP.AC.1040 FF+25d, MA1080 FS+30d, MSI2 Delivery Start SS |  |  |  |  | -18d | 0d | 236 | K |

| ID | WBS | Activity | Duration | Start | Finish | Predecessors | Complete | Remaining | Planned start | Planned finish | Total float | Free float | MSP Activity ID | Responsibility |
| --- | --- | --- | --- | --- | --- | --- | --- | --- | --- | --- | --- | --- | --- | --- |
|  | KP.EL | **Elevator** |  | 2024-12-18 | 2026-06-02 |  |  |  |  |  |  |  |  |  |
| P.KP.EL.1010 |  | Release of Technical Specification | 1d | 2024-12-18 A | 2024-12-18 A | A1020 FS+150d | 100% |  | 2024-12-28 | 2024-12-28 |  |  | 371 | K |
| P.KP.EL.1020 |  | Release of RFQ, Evaluation & Order Placement. | 100d | 2024-12-19 A | 2025-02-21 A | P.KP.EL.1010, BE.KP.GE.1050 SS+30d | 100% |  | 2024-12-30 | 2025-04-29 |  |  | 372 | K |
| P.KP.EL.1030 |  | Drawing Submission, Approval & Manufacturing Clearance. | 115d | 2025-06-03 A | 2026-03-30 | P.KP.EL.1020 | 95% | 11d | 2025-06-25 | 2025-11-13 | -9d | 0d | 373 | K |
| P.KP.EL.1040 |  | Manufacturing & Material Inspection. | 125d | 2025-09-01 A | 2026-05-02 | P.KP.EL.1030 SS+90d | 68% | 40d | 2026-01-03 | 2026-06-05 | -9d | 0d | 374 | K |
| P.KP.EL.1050 |  | Dispatch & Delivery at Site. | 30d | 2026-04-28 | 2026-06-02 | P.KP.EL.1040 FF+25d, MA1080 FS+30d, MSI2 Delivery Start SS |  |  |  |  | -9d | 35d | 239 | K |
|  | KP.V | **Valves** |  | 2025-08-25 | 2026-06-03 |  |  |  |  |  |  |  |  |  |
| P.KP.V.1010 |  | Release of Technical Specification | 100d | 2025-08-25 A | 2025-08-25 A | A1020 FS+264d, BE.KP.U.1010 FS+75d, BE.HT.KP.TM.I.1020 FS+66d | 100% |  | 2026-03-06 | 2026-07-04 |  |  | 376 | K |
| P.KP.V.1020 |  | Release of RFQ, Evaluation & Order Placement. | 100d | 2025-08-26 A | 2026-01-12 A | P.KP.V.1010 SS+30d | 100% |  | 2026-04-13 | 2026-08-08 |  |  | 377 | K |
| P.KP.V.1030 |  | Drawing Submission, Approval & Manufacturing Clearance. | 25d | 2026-01-13 A | 2026-03-30 | P.KP.V.1020 SS+10d | 56% | 11d | 2026-01-27 | 2026-02-24 | 20d | 0d | 378 | K |
| P.KP.V.1040 |  | Manufacturing & Material Inspection. | 30d | 2026-03-31 | 2026-05-04 | P.KP.V.1030 |  |  |  |  | 20d | 0d | 379 | K |
| P.KP.V.1050 |  | Dispatch & Delivery at Site. | 25d | 2026-05-05 | 2026-06-03 | P.KP.V.1040 FF+25d, MSI2 Delivery Start SS |  |  |  |  | 20d | 44d | 208 | K |
|  | TM.DM | **Density Meter** |  | 2025-07-19 | 2026-07-24 |  |  |  |  |  |  |  |  |  |
| P.TM.DM.1010 |  | Release of Technical Specification | 200d | 2025-07-19 A | 2025-07-19 A | A1020 FS+100d | 100% |  | 2025-07-25 | 2026-03-31 |  |  | 381 | T |
| P.TM.DM.1020 |  | Release of RFQ, Evaluation & Order Placement. | 240d | 2025-07-20 A | 2025-10-16 A | P.TM.DM.1010 SS+39d | 100% |  | 2025-09-12 | 2026-07-02 |  |  | 382 | T |
| P.TM.DM.1030 |  | Drawing Submission, Approval & Manufacturing Clearance. | 23d | 2025-11-14 A | 2026-03-06 A | P.TM.DM.1020 | 100% |  | 2025-11-25 | 2025-12-20 |  |  | 383 | T |
| P.TM.DM.1040 |  | Manufacturing & Material Inspection. | 95d | 2026-03-16 | 2026-07-07 | P.TM.DM.1030 |  |  |  |  | 26d | 0d | 384 | T |
| P.TM.DM.1050 |  | Dispatch & Delivery at Site. | 40d | 2026-06-09 | 2026-07-24 | P.TM.DM.1040 FF+15d, MA1080 FS+30d, MSI2 Delivery Start SS |  |  |  |  | 26d | 0d | 251 | T |
|  | TM.SC | **Spiral Classifier** |  | 2024-07-06 | 2026-04-27 |  |  |  |  |  |  |  |  |  |
| P.TM.SC.1010 |  | Release of Technical Specification | 1d | 2024-07-06 A | 2024-07-06 A | A1020 FS+9d | 100% |  |  |  |  |  | 386 | T |
| P.TM.SC.1020 |  | Release of RFQ, Evaluation & Order Placement | 40d | 2024-08-08 A | 2024-09-01 A | P.TM.SC.1010, BE.KP.GE.1050 SS+30d | 100% |  | 2024-08-08 | 2024-09-27 |  |  | 387 | T |
| P.TM.SC.1030 |  | Drawing Submission, Approval & Manufacturing Clearance. | 45d | 2024-10-28 A | 2024-11-12 A | P.TM.SC.1020 | 100% |  | 2024-10-25 | 2024-12-18 |  |  | 388 | T |
| P.TM.SC.1040 |  | Manufacturing & Material Inspection. | 190d | 2024-11-13 A | 2026-03-28 | P.TM.SC.1030 SS | 95% | 9.5d | 2024-12-19 | 2025-08-02 | -0.5d | 0d | 389 | T |
| P.TM.SC.1050 |  | Dispatch & Delivery at Site. | 25d | 2025-12-05 A | 2026-04-27 | P.TM.SC.1040 FF+25d, MA1080 FS+30d, MSI2 Delivery Start SS | 60% | 10d | 2026-02-28 | 2026-04-02 | -0.5d | 11.5d | 210 | T |

| ID | WBS | Activity | Duration | Start | Finish | Predecessors | Complete | Planned start | Planned finish | MSP Activity ID | Responsibility |
| --- | --- | --- | --- | --- | --- | --- | --- | --- | --- | --- | --- |
|  | TM.DESC | **Desliming Cyclones** |  | 2024-07-15 | 2025-09-09 |  |  |  |  |  |  |
| P.TM.DESC.1010 |  | Release of Technical Specification | 1d | 2024-07-15 A | 2024-07-15 A | A1020 FS+2d | 100% | 2024-06-29 | 2024-06-29 | 391 | T |
| P.TM.DESC.1020 |  | Release of RFQ, Evaluation & Order Placement. | 42d | 2024-08-08 A | 2024-09-01 A | P.TM.DESC.1010 | 100% | 2024-06-30 | 2024-08-17 | 392 | T |
| P.TM.DESC.1030 |  | Drawing Submission, Approval & Manufacturing Clearance. | 53d | 2024-09-06 A | 2024-11-01 A | P.TM.DESC.1020 | 100% | 2024-08-20 | 2024-10-24 | 393 | T |
| P.TM.DESC.1040 |  | Manufacturing & Material Inspection. | 180d | 2024-11-22 A | 2025-08-28 A | P.TM.DESC.1030 | 100% | 2024-12-30 | 2025-07-31 | 394 | T |
| P.TM.DESC.1050 |  | Dispatch & Delivery at Site. | 25d | 2025-08-28 A | 2025-09-09 A | P.TM.DESC.1040, MA1080 FS+30d, MSI2 Delivery Start SS | 100% | 2026-02-13 | 2026-03-14 | 195 | T |
|  | TM.DENC | **Densifying Cyclones** |  | 2024-07-15 | 2025-07-25 |  |  |  |  |  |  |
| P.TM.DENC.1010 |  | Release of Technical Specification | 1d | 2024-07-15 A | 2024-07-15 A | A1020 FS+16d | 100% |  |  | 396 | T |
| P.TM.DENC.1020 |  | Release of RFQ, Evaluation & Order Placement. | 51d | 2024-08-08 A | 2024-09-01 A | P.TM.DENC.1010, BE.KP.GE.1050 SS+30d | 100% | 2024-08-08 | 2024-10-11 | 397 | T |
| P.TM.DENC.1030 |  | Drawing Submission, Approval & Manufacturing Clearance. | 50d | 2024-09-06 A | 2024-11-01 A | P.TM.DENC.1020 | 100% | 2024-10-14 | 2024-12-12 | 398 | T |
| P.TM.DENC.1040 |  | Manufacturing & Material Inspection. | 180d | 2024-11-22 A | 2025-07-02 A | P.TM.DENC.1030 | 100% | 2024-12-14 | 2025-07-17 | 399 | T |
| P.TM.DENC.1050 |  | Dispatch & Delivery at Site. | 25d | 2025-06-26 A | 2025-07-25 A | P.TM.DENC.1040, MA1080 FS+30d, MSI2 Delivery Start SS | 100% | 2025-11-17 | 2025-12-15 | 252 | T |
|  | 2 | **Other Equipment** |  | 2024-07-10 | 2026-07-18 |  |  |  |  |  |  |
|  | TM.DESCFP | **Desliming Cyclone Feed Pump** |  | 2024-08-21 | 2025-09-24 |  |  |  |  |  |  |
| P.TM.DESCFP.1010 |  | Release of Technical Specification | 1d | 2024-08-21 A | 2024-08-21 A | A1020 FS+9d | 100% | 2024-07-06 | 2024-07-06 | 402 | T |
| P.TM.DESCFP.1020 |  | Release of RFQ, Evaluation & Order Placement. | 54d | 2024-08-21 A | 2024-09-01 A | P.TM.DESCFP.1010, BE.KP.GE.1050 SS+30d | 100% | 2024-08-08 | 2024-10-16 | 403 | T |
| P.TM.DESCFP.1030 |  | Drawing Submission, Approval & Manufacturing Clearance. | 30d | 2024-09-06 A | 2024-11-13 A | P.TM.DESCFP.1020 | 100% | 2024-10-17 | 2024-11-22 | 404 | T |
| P.TM.DESCFP.1040 |  | Manufacturing & Material Inspection. | 200d | 2024-11-13 A | 2025-09-05 A | P.TM.DESCFP.1030 | 100% | 2024-12-02 | 2025-07-28 | 405 | T |
| P.TM.DESCFP.1050 |  | Dispatch & Delivery at Site. | 25d | 2025-09-12 A | 2025-09-24 A | P.TM.DESCFP.1040, MA1080 FS+30d, MSI7 Delivery Start SS | 100% | 2026-04-16 | 2026-05-15 | 233 | T |
|  | TM.DENCFP | **Densifying Cyclone Feed Pump** |  | 2024-08-21 | 2025-09-24 |  |  |  |  |  |  |
| P.TM.DENCFP.1010 |  | Release of Technical Specification | 1d | 2024-08-21 A | 2024-08-21 A | A1020 FS+87d | 100% | 2024-10-11 | 2024-10-11 | 407 | T |
| P.TM.DENCFP.1020 |  | Release of RFQ, Evaluation & Order Placement. | 52d | 2024-08-21 A | 2024-09-01 A | P.TM.DENCFP.1010, BE.KP.GE.1050 SS+30d | 100% | 2024-10-14 | 2024-12-14 | 408 | T |
| P.TM.DENCFP.1030 |  | Drawing Submission, Approval & Manufacturing Clearance. | 60d | 2024-09-06 A | 2024-11-12 A | P.TM.DENCFP.1020 | 100% | 2024-10-25 | 2025-01-07 | 409 | T |
| P.TM.DENCFP.1040 |  | Manufacturing & Material Inspection. | 200d | 2024-11-13 A | 2025-09-05 A | P.TM.DENCFP.1030 | 100% | 2025-01-08 | 2025-09-04 | 410 | T |
| P.TM.DENCFP.1050 |  | Dispatch & Delivery at Site. | 25d | 2025-09-12 A | 2025-09-24 A | P.TM.DENCFP.1040, MA1080 FS+30d, MSI7 Delivery Start SS | 100% | 2026-04-16 | 2026-05-15 | 235 | T |

| ID | WBS | Activity | Duration | Start | Finish | Predecessors | Complete | Remaining | Planned start | Planned finish | Total float | Free float | MSP Activity ID | Responsibility |
| --- | --- | --- | --- | --- | --- | --- | --- | --- | --- | --- | --- | --- | --- | --- |
|  | TM.VF | **Vibrating Feeder** |  | 2024-07-10 | 2025-03-31 |  |  |  |  |  |  |  |  |  |
| P.TM.VF.1010 |  | Release of Technical Specification | 1d | 2024-07-10 A | 2024-07-10 A | A1020 FS+12d | 100% |  |  |  |  |  | 412 | T |
| P.TM.VF.1020 |  | Release of RFQ, Evaluation & Order Placement. | 60d | 2024-08-08 A | 2024-12-06 A | P.TM.VF.1010, BE.KP.GE.1050 SS+30d | 100% |  | 2024-08-08 | 2024-10-23 |  |  | 413 | T |
| P.TM.VF.1040 |  | Manufacturing & Material Inspection. | 125d | 2024-11-29 A | 2025-03-24 A | P.TM.VF.1030 | 100% |  | 2025-03-25 | 2025-08-21 |  |  | 415 | T |
| P.TM.VF.1030 |  | Drawing Submission, Approval & Manufacturing Clearance. | 30d | 2024-12-10 A | 2025-01-15 A | P.TM.VF.1020 | 100% |  | 2024-12-02 | 2025-01-07 |  |  | 414 | T |
| P.TM.VF.1050 |  | Dispatch & Delivery at Site. | 25d | 2025-03-25 A | 2025-03-31 A | P.TM.VF.1040, MA1080 FS+30d, MSI7 Delivery Start SS | 100% |  | 2025-07-05 | 2025-08-02 |  |  | 189 | T |
|  | KP.CBMS | **Cross Belt Magnetic Separator** |  | 2024-08-13 | 2026-03-31 |  |  |  |  |  |  |  |  |  |
| P.KP.CBMS.1010 |  | Release of Technical Specification | 1d | 2024-08-13 A | 2024-08-13 A | A1020 FS+41d | 100% |  |  |  |  |  | 417 | K |
| P.KP.CBMS.1020 |  | Release of RFQ, Evaluation & Order Placement. | 69d | 2024-08-14 A | 2025-02-04 A | P.KP.CBMS.1010, BE.KP.GE.1050 SS+30d | 100% |  | 2024-08-14 | 2024-11-11 |  |  | 418 | K |
| P.KP.CBMS.1030 |  | Drawing Submission, Approval & Manufacturing Clearance. | 35d | 2025-02-20 A | 2025-09-17 A | P.KP.CBMS.1020 | 100% |  | 2025-04-11 | 2025-05-22 |  |  | 419 | K |
| P.KP.CBMS.1040 |  | Manufacturing & Material Inspection. | 137d | 2025-09-18 A | 2026-01-19 A | P.KP.CBMS.1030 | 100% |  | 2025-11-24 | 2026-05-12 |  |  | 420 | K |
| P.KP.CBMS.1050 |  | Dispatch & Delivery at Site. | 30d | 2026-02-25 A | 2026-03-31 | P.KP.CBMS.1040, MA1080 FS+30d, MSI7 Delivery Start SS | 95% | 12d | 2026-02-05 | 2026-03-12 | -6d | 0d | 215 | K |
|  | HT.BWS | **Belt Weigh Scale** |  | 2025-01-22 | 2026-05-27 |  |  |  |  |  |  |  |  |  |
| P.HT.BWS.1010 |  | Release of Technical Specification | 1d | 2025-01-22 A | 2025-01-22 A | A1020 FS+125d | 100% |  | 2024-12-26 | 2024-12-26 |  |  | 422 | H |
| P.HT.BWS.1020 |  | Release of RFQ, Evaluation & Order Placement. | 100d | 2025-01-23 A | 2025-06-12 A | P.HT.BWS.1010 FS+2d, BE.KP.GE.1050 SS+30d | 100% |  | 2024-12-30 | 2025-04-29 |  |  | 423 | H |
| P.HT.BWS.1030 |  | Drawing Submission, Approval & Manufacturing Clearance. | 50d | 2025-06-25 A | 2026-03-28 | P.HT.BWS.1020 FS+23d | 90% | 10d | 2025-08-29 | 2025-10-29 | -34d | 0d | 424 | H |
| P.HT.BWS.1040 |  | Manufacturing & Material Inspection. | 30d | 2026-03-16 | 2026-04-21 | P.HT.BWS.1030 SS+100d |  |  |  |  | -34d | 0d | 425 | H |
| P.HT.BWS.1050 |  | Dispatch & Delivery at Site. | 38d | 2026-04-13 | 2026-05-27 | P.HT.BWS.1040 FF+30d, MA1080 FS+30d, MSI7 Delivery Start SS |  |  |  |  | -34d | 26d | 203 | H |
|  | KP.PG | **Prism Gate** |  | 2024-10-03 | 2026-01-13 |  |  |  |  |  |  |  |  |  |
| P.KP.PG.1010 |  | Release of Technical Specification | 1d | 2024-10-03 A | 2024-10-03 A | A1020 FS+80d | 100% |  |  |  |  |  | 427 | K |
| P.KP.PG.1020 |  | Release of RFQ, Evaluation & Order Placement. | 76d | 2024-10-04 A | 2025-02-06 A | P.KP.PG.1010, BE.KP.GE.1050 SS+30d | 100% |  | 2024-10-04 | 2025-01-06 |  |  | 428 | K |
| P.KP.PG.1030 |  | Drawing Submission, Approval & Manufacturing Clearance. | 88d | 2025-03-04 A | 2025-03-21 A | P.KP.PG.1020 | 100% |  | 2025-04-11 | 2025-07-23 |  |  | 429 | K |
| P.KP.PG.1040 |  | Manufacturing & Material Inspection. | 125d | 2025-04-22 A | 2025-12-17 A | P.KP.PG.1030 | 100% |  | 2025-04-26 | 2025-09-23 |  |  | 430 | K |
| P.KP.PG.1050 |  | Dispatch & Delivery at Site. | 35d | 2026-01-06 A | 2026-01-13 A | P.KP.PG.1040, MA1080 FS+30d, MSI7 Delivery Start SS | 100% |  | 2026-01-27 | 2026-03-09 |  |  | 237 | K |

| ID | WBS | Activity | Duration | Start | Finish | Predecessors | Complete | Planned start | Planned finish | Total float | Free float | MSP Activity ID | Responsibility |
| --- | --- | --- | --- | --- | --- | --- | --- | --- | --- | --- | --- | --- | --- |
|  | KP.FG | **Flap Gate** |  | 2024-10-03 | 2025-12-24 |  |  |  |  |  |  |  |  |
| P.KP.FG.1010 |  | Release of Technical Specification | 1d | 2024-10-03 A | 2024-10-03 A | A1020 FS+80d | 100% |  |  |  |  | 432 | K |
| P.KP.FG.1020 |  | Release of RFQ, Evaluation & Order Placement. | 76d | 2024-10-04 A | 2025-02-06 A | P.KP.FG.1010, BE.KP.GE.1050 SS+30d | 100% | 2024-10-04 | 2025-01-06 |  |  | 433 | K |
| P.KP.FG.1030 |  | Drawing Submission, Approval & Manufacturing Clearance. | 87d | 2025-02-25 A | 2025-04-17 A | P.KP.FG.1020 | 100% | 2025-04-11 | 2025-07-22 |  |  | 434 | K |
| P.KP.FG.1040 |  | Manufacturing & Material Inspection. | 125d | 2025-04-21 A | 2025-11-25 A | P.KP.FG.1030 | 100% | 2025-05-27 | 2025-10-27 |  |  | 435 | K |
| P.KP.FG.1050 |  | Dispatch & Delivery at Site. | 25d | 2025-12-15 A | 2025-12-24 A | P.KP.FG.1040, MA1080 FS+30d, MSI7 Delivery Start SS | 100% | 2025-12-26 | 2026-01-27 |  |  | 250 | K |
|  | KP.S | **Sampler** |  | 2024-10-24 | 2026-01-12 |  |  |  |  |  |  |  |  |
| P.KP.S.1010 |  | Release of Technical Specification | 1d | 2024-10-24 A | 2024-10-24 A | A1020 FS+117d | 100% | 2024-11-19 | 2024-11-19 |  |  | 437 | K |
| P.KP.S.1020 |  | Release of RFQ, Evaluation & Order Placement. | 52d | 2024-10-24 A | 2025-03-13 A | P.KP.S.1010, BE.KP.GE.1050 SS+30d | 100% | 2024-11-20 | 2025-01-22 |  |  | 438 | K |
| P.KP.S.1030 |  | Drawing Submission, Approval & Manufacturing Clearance. | 61d | 2025-04-17 A | 2025-05-07 A | P.KP.S.1020 | 100% | 2025-04-26 | 2025-07-05 |  |  | 439 | K |
| P.KP.S.1040 |  | Manufacturing & Material Inspection. | 175d | 2025-05-08 A | 2025-12-04 A | P.KP.S.1030 | 100% | 2025-06-25 | 2026-01-27 |  |  | 440 | K |
| P.KP.S.1050 |  | Dispatch & Delivery at Site. | 25d | 2025-12-31 A | 2026-01-12 A | P.KP.S.1040, MA1080 FS+30d, MSI7 Delivery Start SS | 100% | 2026-01-27 | 2026-02-24 |  |  | 230 | K |
|  | KP.RG | **Rod Gate** |  | 2024-11-12 | 2025-12-24 |  |  |  |  |  |  |  |  |
| P.KP.RG1010 |  | Release of Technical Specification | 1d | 2024-11-12 A | 2024-11-12 A | A1020 FS+116d | 100% | 2024-11-18 | 2024-11-18 |  |  | 442 | K |
| P.KP.RG1020 |  | Release of RFQ, Evaluation & Order Placement. | 75d | 2024-11-12 A | 2025-02-06 A | P.KP.RG1010 FS+3d | 100% | 2024-11-22 | 2025-02-20 |  |  | 443 | K |
| P.KP.RG1030 |  | Drawing Submission, Approval & Manufacturing Clearance. | 65d | 2025-03-05 A | 2025-04-10 A | P.KP.RG1020 FS+23d | 100% | 2025-05-19 | 2025-08-01 |  |  | 444 | K |
| P.KP.RG1040 |  | Manufacturing & Material Inspection. | 121d | 2025-04-11 A | 2025-11-25 A | P.KP.RG1030 | 100% | 2025-06-25 | 2025-11-20 |  |  | 445 | K |
| P.KP.RG1050 |  | Dispatch & Delivery at Site. | 58d | 2025-12-15 A | 2025-12-24 A | P.KP.RG1040, MA1080 FS+30d, MSI7 Delivery Start SS | 100% | 2025-12-26 | 2026-03-07 |  |  | 260 | K |
|  | KP.SP | **Sump Pumps** |  | 2025-06-25 | 2026-06-08 |  |  |  |  |  |  |  |  |
| P.KP.SP.1010 |  | Release of Technical Specification | 1d | 2025-06-25 A | 2025-06-25 A | A1020 FS+249d | 100% |  |  |  |  | 447 | K |
| P.KP.SP.1020 |  | Release of RFQ, Evaluation & Order Placement. | 45d | 2025-06-26 A | 2025-12-18 A | P.KP.SP.1010, BE.KP.GE.1050 SS+30d | 100% | 2025-07-25 | 2025-09-19 |  |  | 448 | K |
| P.KP.SP.1030 |  | Drawing Submission, Approval & Manufacturing Clearance. | 15d | 2025-12-19 A | 2026-03-04 A | P.KP.SP.1020 | 100% | 2026-01-27 | 2026-02-12 |  |  | 449 | K |
| P.KP.SP.1040 |  | Manufacturing & Material Inspection. | 45d | 2026-03-16 | 2026-05-08 | P.KP.SP.1030 SS+60d |  |  |  | -14d | 0d | 450 | K |
| P.KP.SP.1050 |  | Dispatch & Delivery at Site. | 24d | 2026-05-12 | 2026-06-08 | P.KP.SP.1040 FF+25d, MA1080 FS+30d, MSI7 Delivery Start SS |  |  |  | -14d | 10d | 242 | K |

| ID | WBS | Activity | Duration | Start | Finish | Predecessors | Complete | Remaining | Planned start | Planned finish | Total float | Free float | MSP Activity ID | Responsibility |
| --- | --- | --- | --- | --- | --- | --- | --- | --- | --- | --- | --- | --- | --- | --- |
|  | TM.PU.FR | **Pump (Filtrate & Return)** |  | 2024-08-23 | 2026-05-25 |  |  |  |  |  |  |  |  |  |
| P.TM.PU.FR1010 |  | Release of Technical Specification | 1d | 2024-08-23 A | 2024-08-23 A | A1020 FS+148d | 100% |  | 2024-12-26 | 2024-12-26 |  |  | 452 | T |
| P.TM.PU.FR1020 |  | Release of RFQ, Evaluation & Order Placement. | 52d | 2024-08-23 A | 2024-10-01 A | P.TM.PU.FR1010, BE.KP.GE.1050 SS+30d | 100% |  | 2024-12-27 | 2025-02-27 |  |  | 453 | T |
| P.TM.PU.FR1030 |  | Drawing Submission, Approval & Manufacturing Clearance. | 60d | 2024-09-06 A | 2024-11-13 A | P.TM.PU.FR1020 | 100% |  | 2025-02-28 | 2025-05-10 |  |  | 454 | T |
| P.TM.PU.FR1040 |  | Manufacturing & Material Inspection. | 224d | 2024-11-13 A | 2026-05-08 | P.TM.PU.FR1030 | 80% | 44.8d | 2025-05-12 | 2026-02-09 | -16.3d | 0d | 455 | T |
| P.TM.PU.FR1050 |  | Dispatch & Delivery at Site. | 25d | 2026-09-25 A | 2026-05-25 | P.TM.PU.FR1040, MA1080 FS+30d, MSI7 Delivery Start SS | 50% | 12.5d | 2026-05-05 | 2026-06-04 | -16.3d | 0d | 238 | T |
|  | TM.PU.PWSW | **Pump (Process Water & Seal Water)** |  | 2024-08-23 | 2025-11-01 |  |  |  |  |  |  |  |  |  |
| P.TM.PU.PWSW1010 |  | Release of Technical Specification | 1d | 2024-08-23 A | 2024-08-23 A | A1020 FS+110d | 100% |  | 2024-11-11 | 2024-11-11 |  |  | 457 | T |
| P.TM.PU.PWSW1020 |  | Release of RFQ, Evaluation & Order Placement. | 53d | 2024-08-23 A | 2025-03-28 A | P.TM.PU.PWSW1010, BE.KP.GE.1050 SS+30d | 100% |  | 2024-11-12 | 2025-01-14 |  |  | 458 | T |
| P.TM.PU.PWSW1030 |  | Drawing Submission, Approval & Manufacturing Clearance. | 60d | 2025-04-24 A | 2025-04-27 A | P.TM.PU.PWSW1020 | 100% |  | 2025-05-17 | 2025-07-25 |  |  | 459 | T |
| P.TM.PU.PWSW1040 |  | Manufacturing & Material Inspection. | 198d | 2025-04-28 A | 2025-10-21 A | P.TM.PU.PWSW1030 | 100% |  | 2025-06-25 | 2026-02-23 |  |  | 460 | T |
| P.TM.PU.PWSW1050 |  | Dispatch & Delivery at Site. | 25d | 2025-07-25 A | 2025-11-01 A | P.TM.PU.PWSW1040, MA1080 FS+30d, MSI7 Delivery Start SS | 100% |  | 2025-10-08 | 2025-11-08 |  |  | 243 | T |
|  | TM.PU.SP.DO.TW | **Pumps (Spillage, Dosing, Transfer Water)** |  | 2024-08-23 | 2026-05-21 |  |  |  |  |  |  |  |  |  |
| P.TM.PU.SP.DO.TW1010 |  | Release of Technical Specification | 1d | 2024-08-23 A | 2024-08-23 A | A1020 FS+121d | 100% |  | 2024-11-23 | 2024-11-23 |  |  | 462 | T |
| P.TM.PU.SP.DO.TW1020 |  | Release of RFQ, Evaluation & Order Placement. | 51d | 2024-08-23 A | 2024-10-01 A | P.TM.PU.SP.DO.TW1010, BE.KP.GE.1050 SS+30d | 100% |  | 2024-11-25 | 2025-01-25 |  |  | 463 | T |
| P.TM.PU.SP.DO.TW1030 |  | Drawing Submission, Approval & Manufacturing Clearance. | 61d | 2024-09-06 A | 2024-11-12 A | P.TM.PU.SP.DO.TW1020 | 100% |  | 2025-01-27 | 2025-04-08 |  |  | 464 | T |
| P.TM.PU.SP.DO.TW1040 |  | Manufacturing & Material Inspection. | 249d | 2024-11-12 A | 2026-04-21 | P.TM.PU.SP.DO.TW1030 | 88% | 30d | 2025-04-09 | 2026-02-06 | -23d | 0d | 465 | T |
| P.TM.PU.SP.DO.TW1050 |  | Dispatch & Delivery at Site. | 25d | 2026-07-01 A | 2026-05-21 | P.TM.PU.SP.DO.TW1040 FF+25d, MA1080 FS+30d, MSI7 Delivery Start SS | 20% | 20d | 2026-05-12 | 2026-06-10 | -23d | 3.5d | 212 | T |
|  | TM.TUP | **Tailing Underflow Pump** |  | 2024-08-21 | 2025-06-25 |  |  |  |  |  |  |  |  |  |
| P.TM.TUP.1010 |  | Release of Technical Specification | 1d | 2024-08-21 A | 2024-08-21 A | A1020 FS+136d | 100% |  | 2024-12-11 | 2024-12-11 |  |  | 467 | T |
| P.TM.TUP.1020 |  | Release of RFQ, Evaluation & Order Placement. | 52d | 2024-08-21 A | 2024-10-28 A | P.TM.TUP.1010, BE.KP.GE.1050 SS+30d | 100% |  | 2024-12-12 | 2025-02-13 |  |  | 468 | T |
| P.TM.TUP.1030 |  | Drawing Submission, Approval & Manufacturing Clearance. | 60d | 2024-09-06 A | 2024-11-12 A | P.TM.TUP.1020 | 100% |  | 2025-02-14 | 2025-04-26 |  |  | 469 | T |
| P.TM.TUP.1040 |  | Manufacturing & Material Inspection. | 224d | 2024-11-13 A | 2025-06-25 A | P.TM.TUP.1030 | 100% |  | 2025-04-28 | 2026-01-24 |  |  | 470 | T |
| P.TM.TUP.1050 |  | Dispatch & Delivery at Site. | 25d | 2025-06-25 A | 2025-06-25 A | P.TM.TUP.1040, MA1080 FS+30d, MSI7 Delivery Start SS | 100% |  | 2025-09-06 | 2025-10-07 |  |  | 183 | T |

| ID | WBS | Activity | Duration | Start | Finish | Predecessors | Complete | Remaining | Planned start | Planned finish | Total float | Free float | MSP Activity ID | Responsibility |
| --- | --- | --- | --- | --- | --- | --- | --- | --- | --- | --- | --- | --- | --- | --- |
|  | KP.MWP | **Makeup Water Pump** |  | 2025-05-23 | 2026-07-09 |  |  |  |  |  |  |  |  |  |
| P.KP.MWP.1010 |  | Release of Technical Specification | 1d | 2025-05-23 A | 2025-05-23 A | A1020 FS+198d | 100% |  | 2025-04-26 | 2025-04-26 |  |  | 472 | K |
| P.KP.MWP.1020 |  | Release of RFQ, Evaluation & Order Placement. | 79d | 2025-05-24 A | 2026-02-25 A | P.KP.MWP.1010, BE.KP.GE.1050 SS+30d | 100% |  | 2025-06-25 | 2025-09-29 |  |  | 473 | K |
| P.KP.MWP.1030 |  | Drawing Submission, Approval & Manufacturing Clearance. | 20d | 2026-03-18 | 2026-04-11 | P.KP.MWP.1020 FS+16d |  |  |  |  | -31d | 0d | 474 | K |
| P.KP.MWP.1040 |  | Manufacturing & Material Inspection. | 50d | 2026-04-13 | 2026-06-10 | P.KP.MWP.1030 |  |  |  |  | -31d | 0d | 475 | K |
| P.KP.MWP.1050 |  | Dispatch & Delivery at Site. | 25d | 2026-06-11 | 2026-07-09 | P.KP.MWP.1040 FF+25d, MA1080 FS+30d, MSI7 Delivery Start SS |  |  |  |  | -31d | 13d | 231 | K |
|  | TM.FHSF | **Flocculant Hopper Screw Feeder** |  | 2024-08-21 | 2026-04-30 |  |  |  |  |  |  |  |  |  |
| P.TM.FHSF.1010 |  | Release of Technical Specification | 1d | 2024-08-21 A | 2024-08-21 A | A1020 FS+139d | 100% |  | 2024-12-14 | 2024-12-14 |  |  | 477 | T |
| P.TM.FHSF.1020 |  | Release of RFQ, Evaluation & Order Placement. | 52d | 2024-08-21 A | 2024-10-15 A | P.TM.FHSF.1010, BE.KP.GE.1050 SS+30d | 100% |  | 2024-12-16 | 2025-02-17 |  |  | 478 | T |
| P.TM.FHSF.1030 |  | Drawing Submission, Approval & Manufacturing Clearance. | 63d | 2024-10-26 A | 2025-05-03 A | P.TM.FHSF.1020 | 100% |  | 2025-02-18 | 2025-05-03 |  |  | 479 | T |
| P.TM.FHSF.1040 |  | Manufacturing & Material Inspection. | 175d | 2025-05-03 A | 2026-04-07 | P.TM.FHSF.1030 | 90% | 17.5d | 2025-10-25 | 2026-05-27 | -26.5d | 0d | 480 | T |
| P.TM.FHSF.1050 |  | Dispatch & Delivery at Site. | 25d | 2026-04-01 | 2026-04-30 | P.TM.FHSF.1040 FF+20d, MA1080 FS+30d, MSI7 Delivery Start SS |  |  |  |  | -26.5d | 0d | 216 | T |
|  | TM.AG | **Agitator(Flocculant Prep Tank)** |  | 2024-08-21 | 2026-05-18 |  |  |  |  |  |  |  |  |  |
| P.TM.AG.1010 |  | Release of Technical Specification | 1d | 2024-08-21 A | 2024-08-21 A | A1020 FS+121d | 100% |  | 2024-11-23 | 2024-11-23 |  |  | 482 | T |
| P.TM.AG.1020 |  | Release of RFQ, Evaluation & Order Placement. | 52d | 2024-08-21 A | 2024-10-15 A | P.TM.AG.1010, BE.KP.GE.1050 SS+30d | 100% |  | 2024-11-25 | 2025-01-27 |  |  | 483 | T |
| P.TM.AG.1030 |  | Drawing Submission, Approval & Manufacturing Clearance. | 64d | 2024-10-26 A | 2025-05-03 A | P.TM.AG.1020 | 100% |  | 2025-01-28 | 2025-04-12 |  |  | 484 | T |
| P.TM.AG.1040 |  | Manufacturing & Material Inspection. | 175d | 2025-05-04 A | 2026-04-17 | P.TM.AG.1030 | 85% | 26.25d | 2025-06-25 | 2026-01-27 | -26.25d | 0d | 485 | T |
| P.TM.AG.1050 |  | Dispatch & Delivery at Site. | 25d | 2026-04-17 | 2026-05-18 | P.TM.AG.1040, MA1080 FS+30d, MSI7 Delivery Start SS |  |  |  |  | -26.25d | 0.25d | 226 | T |
|  | HT.GB | **Gear Box** |  | 2025-01-30 | 2026-03-06 |  |  |  |  |  |  |  |  |  |
| P.HT.GB.1010 |  | Release of Technical Specification | 1d | 2025-01-30 A | 2025-01-30 A | A1020 FS+174d | 100% |  | 2025-03-25 | 2025-03-25 |  |  | 487 | H |
| P.HT.GB.1020 |  | Release of RFQ, Evaluation & Order Placement. | 50d | 2025-01-30 A | 2025-04-22 A | P.HT.GB.1010 FS+3d | 100% |  | 2025-04-30 | 2025-06-27 |  |  | 488 | H |
| P.HT.GB.1030 |  | Drawing Submission, Approval & Manufacturing Clearance. | 39d | 2025-06-09 A | 2025-07-23 A | P.HT.GB.1020 FS+22d | 100% |  | 2025-06-25 | 2025-08-08 |  |  | 489 | H |
| P.HT.GB.1040 |  | Manufacturing & Material Inspection. | 164d | 2025-07-25 A | 2026-01-23 A | P.HT.GB.1030 | 100% |  | 2025-10-25 | 2026-05-14 |  |  | 490 | H |
| P.HT.GB.1050 |  | Dispatch & Delivery at Site. | 25d | 2026-02-25 A | 2026-03-06 A | P.HT.GB.1040 FF+30d, MSI7 Delivery Start SS | 100% |  | 2026-02-25 | 2026-03-28 |  |  | 259 | H |

| ID | WBS | Activity | Duration | Start | Finish | Predecessors | Complete | Remaining | Planned start | Planned finish | Total float | Free float | MSP Activity ID | Responsibility |
| --- | --- | --- | --- | --- | --- | --- | --- | --- | --- | --- | --- | --- | --- | --- |
|  | HT.LSC | **Low Speed Coupling** |  | 2025-02-27 | 2026-03-30 |  |  |  |  |  |  |  |  |  |
| P.HT.LSC.1010 |  | Release of Technical Specification | 1d | 2025-02-27 A | 2025-02-27 A | A1020 FS+200d | 100% |  | 2025-03-25 | 2025-03-25 |  |  | 492 | H |
| P.HT.LSC.1020 |  | Release of RFQ, Evaluation & Order Placement. | 50d | 2025-02-27 A | 2025-04-22 A | P.HT.LSC.1010 FS+2d | 100% |  | 2025-04-29 | 2025-06-26 |  |  | 493 | H |
| P.HT.LSC.1030 |  | Drawing Submission, Approval & Manufacturing Clearance. | 39d | 2025-06-19 A | 2025-07-09 A | P.HT.LSC.1020 FS+23d | 100% |  | 2025-06-25 | 2025-08-08 |  |  | 494 | H |
| P.HT.LSC.1040 |  | Manufacturing & Material Inspection. | 95d | 2025-07-11 A | 2025-12-22 A | P.HT.LSC.1030 | 100% |  | 2025-10-25 | 2026-02-18 |  |  | 495 | H |
| P.HT.LSC.1050 |  | Dispatch & Delivery at Site. | 25d | 2026-02-28 A | 2026-03-30 | P.HT.LSC.1040 FF+25d, MA1080 FS+30d, MSI7 Delivery Start SS | 56% | 11d | 2026-03-23 | 2026-04-21 | 15d | 75d | 234 | H |
|  | HT.HSC | **High Speed Coupling** |  | 2025-02-27 | 2026-04-27 |  |  |  |  |  |  |  |  |  |
| P.HT.HSC.1010 |  | Release of Technical Specification | 1d | 2025-02-27 A | 2025-02-27 A | A1020 FS+200d | 100% |  | 2025-03-25 | 2025-03-25 |  |  | 497 | H |
| P.HT.HSC.1020 |  | Release of RFQ, Evaluation & Order Placement. | 50d | 2025-02-27 A | 2025-04-22 A | P.HT.HSC.1010 FS+2d | 100% |  | 2025-04-29 | 2025-06-26 |  |  | 498 | H |
| P.HT.HSC.1030 |  | Drawing Submission, Approval & Manufacturing Clearance. | 39d | 2025-06-19 A | 2025-07-09 A | P.HT.HSC.1020 FS+23d | 100% |  | 2025-06-25 | 2025-08-08 |  |  | 499 | H |
| P.HT.HSC.1040 |  | Manufacturing & Material Inspection. | 95d | 2025-07-11 A | 2026-03-28 | P.HT.HSC.1030 | 90% | 10d | 2025-10-25 | 2026-02-18 | -9d | 0d | 500 | H |
| P.HT.HSC.1050 |  | Dispatch & Delivery at Site. | 26d | 2026-02-28 A | 2026-04-27 | P.HT.HSC.1040 FF+25d, MA1080 FS+30d, MSI7 Delivery Start SS | 10% | 23.4d | 2026-02-28 | 2026-04-02 | -9d | 51d | 202 | H |
|  | HT.BK | **Brake** |  | 2025-02-27 | 2026-01-20 |  |  |  |  |  |  |  |  |  |
| P.HT.BK.1010 |  | Release of Technical Specification | 1d | 2025-02-27 A | 2025-02-27 A | A1020 FS+200d | 100% |  | 2025-03-25 | 2025-03-25 |  |  | 502 | H |
| P.HT.BK.1020 |  | Release of RFQ, Evaluation & Order Placement. | 50d | 2025-02-27 A | 2025-03-22 A | P.HT.BK.1010 FS+2d | 100% |  | 2025-04-29 | 2025-06-26 |  |  | 503 | H |
| P.HT.BK.1030 |  | Drawing Submission, Approval & Manufacturing Clearance. | 39d | 2025-06-19 A | 2025-07-17 A | P.HT.BK.1020 FS+23d | 100% |  | 2025-06-25 | 2025-08-08 |  |  | 504 | H |
| P.HT.BK.1040 |  | Manufacturing & Material Inspection. | 95d | 2025-07-19 A | 2025-10-25 A | P.HT.BK.1030 | 100% |  | 2025-10-25 | 2026-02-18 |  |  | 505 | H |
| P.HT.BK.1050 |  | Dispatch & Delivery at Site. | 26d | 2025-12-23 A | 2026-01-20 A | P.HT.BK.1040, MA1080 FS+30d, MSI7 Delivery Start SS | 100% |  | 2026-01-27 | 2026-02-25 |  |  | 198 | H |
|  | HT.ID | **Idler** |  | 2025-01-22 | 2026-03-31 |  |  |  |  |  |  |  |  |  |
| P.HT.ID.1010 |  | Release of Technical Specification | 1d | 2025-01-22 A | 2025-01-22 A | A1020 FS+149d | 100% |  | 2024-12-27 | 2024-12-27 |  |  | 507 | H |
| P.HT.ID.1020 |  | Release of RFQ, Evaluation & Order Placement. | 50d | 2025-01-23 A | 2025-02-28 A | P.HT.ID.1010 FS+2d | 100% |  | 2024-12-31 | 2025-02-28 |  |  | 508 | H |
| P.HT.ID.1030 |  | Drawing Submission, Approval & Manufacturing Clearance. | 67d | 2025-03-01 A | 2025-06-14 A | P.HT.ID.1020 FS+22d | 100% |  | 2025-06-25 | 2025-09-13 |  |  | 509 | H |
| P.HT.ID.1040 |  | Manufacturing & Material Inspection. | 148d | 2025-06-15 A | 2026-02-25 A | P.HT.ID.1030 | 100% |  | 2025-07-25 | 2026-01-24 |  |  | 510 | H |
| P.HT.ID.1050 |  | Dispatch & Delivery at Site. | 40d | 2026-02-28 A | 2026-03-31 | P.HT.ID.1040 FF+25d, MA1080 FS+30d, MSI7 Delivery Start SS | 70% | 12d | 2026-02-25 | 2026-04-15 | 3d | 63d | 220 | H |

| ID | WBS | Activity | Duration | Start | Finish | Predecessors | Complete | Remaining | Planned start | Planned finish | Total float | Free float | MSP Activity ID | Responsibility |
| --- | --- | --- | --- | --- | --- | --- | --- | --- | --- | --- | --- | --- | --- | --- |
|  | HT.P | **Pulley** |  | 2025-01-22 | 2026-02-18 |  |  |  |  |  |  |  |  |  |
| P.HT.P.1010 |  | Release of Technical Specification | 1d | 2025-01-22 A | 2025-01-22 A | A1020 FS+149d | 100% |  | 2024-12-27 | 2024-12-27 |  |  | 512 | H |
| P.HT.P.1020 |  | Release of RFQ, Evaluation & Order Placement. | 50d | 2025-01-23 A | 2025-04-18 A | P.HT.P.1010 FS+2d | 100% |  | 2024-12-31 | 2025-02-28 |  |  | 513 | H |
| P.HT.P.1030 |  | Drawing Submission, Approval & Manufacturing Clearance. | 67d | 2025-01-23 A | 2025-04-18 A | P.HT.P.1020 FS+22d | 100% |  | 2025-05-16 | 2025-08-01 |  |  | 514 | H |
| P.HT.P.1040 |  | Manufacturing & Material Inspection. | 123d | 2025-06-15 A | 2026-01-31 A | P.HT.P.1030 | 100% |  | 2025-07-25 | 2025-12-23 |  |  | 515 | H |
| P.HT.P.1050 |  | Dispatch & Delivery at Site. | 122d | 2025-11-24 A | 2026-02-18 A | P.HT.P.1040 SS+75d, MA1080 FS+30d, MSI7 Delivery Start SS | 100% |  | 2025-12-26 | 2026-05-25 |  |  | 258 | H |
|  | HT.SC | **Scrapper** |  | 2025-04-26 | 2026-02-20 |  |  |  |  |  |  |  |  |  |
| P.HT.SC.1010 |  | Release of Technical Specification | 1d | 2025-04-26 A | 2025-04-26 A | A1020 FS+248d | 100% |  |  |  |  |  | 517 | H |
| P.HT.SC.1020 |  | Release of RFQ, Evaluation & Order Placement. | 52d | 2025-04-26 A | 2025-06-12 A | P.HT.SC.1010 FS+2d | 100% |  | 2025-04-30 | 2025-06-28 |  |  | 518 | H |
| P.HT.SC.1030 |  | Drawing Submission, Approval & Manufacturing Clearance. | 38d | 2025-06-25 A | 2025-08-25 A | P.HT.SC.1020 FS+23d | 100% |  | 2025-09-11 | 2025-10-29 |  |  | 519 | H |
| P.HT.SC.1040 |  | Manufacturing & Material Inspection. | 97d | 2025-08-27 A | 2026-02-11 A | P.HT.SC.1030 | 100% |  | 2025-11-18 | 2026-03-16 |  |  | 520 | H |
| P.HT.SC.1050 |  | Dispatch & Delivery at Site. | 25d | 2026-02-17 A | 2026-02-20 A | P.HT.SC.1040 FF+25d, MA1080 FS+30d, MSI7 Delivery Start SS | 100% |  | 2026-03-10 | 2026-04-09 |  |  | 240 | H |
|  | KP.H | **Hoist** |  | 2025-02-19 | 2026-05-18 |  |  |  |  |  |  |  |  |  |
| P.KP.H.1010 |  | Release of Technical Specification | 1d | 2025-02-19 A | 2025-02-19 A | A1020 FS+174d | 100% |  | 2025-03-25 | 2025-03-25 |  |  | 522 | K |
| P.KP.H.1020 |  | Release of RFQ, Evaluation & Order Placement. | 79d | 2025-02-19 A | 2025-06-17 A | P.KP.H.1010 | 100% |  | 2025-03-26 | 2025-06-26 |  |  | 523 | K |
| P.KP.H.1030 |  | Drawing Submission, Approval & Manufacturing Clearance. | 88d | 2025-06-25 A | 2025-08-15 A | P.KP.H.1020 | 100% |  | 2025-07-31 | 2025-11-19 |  |  | 524 | K |
| P.KP.H.1040 |  | Manufacturing & Material Inspection. | 80d | 2025-08-22 A | 2026-04-04 | P.KP.H.1030 | 80% | 16d | 2025-12-26 | 2026-04-04 | -11d | 0d | 525 | K |
| P.KP.H.1050 |  | Dispatch & Delivery at Site. | 36d | 2026-04-06 | 2026-05-18 | P.KP.H.1040, MA1080 FS+30d, MSI7 Delivery Start SS |  |  |  |  | -11d | 0d | 207 | K |
|  | KP.HTPC | **HT Power Cable** |  | 2025-03-24 | 2026-01-08 |  |  |  |  |  |  |  |  |  |
| P.KP.HTPC.1010 |  | Release of Technical Specification | 1d | 2025-03-24 A | 2025-03-24 A | A1020 FS+230d | 100% |  | 2025-04-26 | 2025-04-26 |  |  | 527 | K |
| P.KP.HTPC.1020 |  | Release of RFQ, Evaluation & Order Placement. | 55d | 2025-03-24 A | 2025-08-22 A | P.KP.HTPC.1010, BE.KP.GE.1050 SS+30d | 100% |  | 2025-04-28 | 2025-06-30 |  |  | 528 | K |
| P.KP.HTPC.1030 |  | Drawing Submission, Approval & Manufacturing Clearance. | 50d | 2025-09-02 A | 2025-10-10 A | P.KP.HTPC.1020 | 100% |  | 2025-10-31 | 2025-12-31 |  |  | 529 | K |
| P.KP.HTPC.1040 |  | Manufacturing & Material Inspection. | 102d | 2025-10-11 A | 2025-12-22 A | P.KP.HTPC.1030 | 100% |  | 2025-12-31 | 2026-05-06 |  |  | 530 | K |
| P.KP.HTPC.1050 |  | Dispatch & Delivery at Site. | 30d | 2025-12-30 A | 2026-01-08 A | P.KP.HTPC.1040, MA1080 FS+30d, MSI7 Delivery Start SS | 100% |  | 2026-01-27 | 2026-03-02 |  |  | 257 | K |

| ID | WBS | Activity | Duration | Start | Finish | Predecessors | Complete | Remaining | Planned start | Planned finish | Total float | Free float | MSP Activity ID | Responsibility |
| --- | --- | --- | --- | --- | --- | --- | --- | --- | --- | --- | --- | --- | --- | --- |
|  | KP.LTPC | **LT Power Cable** |  | 2025-03-24 | 2026-02-26 |  |  |  |  |  |  |  |  |  |
| P.KP.LTPC.1010 |  | Release of Technical Specification | 1d | 2025-03-24 A | 2025-03-24 A | A1020 FS+230d, BE.KP.E.1030 FS+50d | 100% |  | 2025-09-02 | 2025-09-03 |  |  | 532 | K |
| P.KP.LTPC.1020 |  | Release of RFQ, Evaluation & Order Placement. | 40d | 2025-03-24 A | 2025-11-25 A | P.KP.LTPC.1010, BE.KP.GE.1050 SS+30d | 100% |  | 2025-09-03 | 2025-10-23 |  |  | 533 | K |
| P.KP.LTPC.1030 |  | Drawing Submission, Approval & Manufacturing Clearance. | 15d | 2025-11-07 A | 2026-01-02 A | P.KP.LTPC.1020 | 100% |  | 2026-03-07 | 2026-03-27 |  |  | 534 | K |
| P.KP.LTPC.1040 |  | Manufacturing & Material Inspection. | 25d | 2026-01-03 A | 2026-02-01 A | P.KP.LTPC.1030 FF+25d | 100% |  | 2026-05-29 | 2026-06-26 |  |  | 535 | K |
| P.KP.LTPC.1050 |  | Dispatch & Delivery at Site. | 30d | 2026-02-10 A | 2026-02-26 A | P.KP.LTPC.1040 FF+10d, MA1080 FS+30d, MSI7 Delivery Start SS | 100% |  | 2026-02-25 | 2026-04-03 |  |  | 186 | K |
|  | KP.BVM | **Belt Vulcanizing Machine** |  | 2025-07-25 | 2026-07-13 |  |  |  |  |  |  |  |  |  |
| P.KP.BVM.1010 |  | Release of Technical Specification | 1d | 2025-07-25 A | 2025-07-25 A | A1020 FS+328d | 100% |  | 2025-07-29 | 2025-07-29 |  |  | 537 | K |
| P.KP.BVM.1020 |  | Release of RFQ, Evaluation & Order Placement. | 58d | 2025-07-26 A | 2026-01-23 A | P.KP.BVM.1010, BE.KP.GE.1050 SS+30d | 100% |  | 2025-10-25 | 2026-01-03 |  |  | 538 | K |
| P.KP.BVM.1030 |  | Drawing Submission, Approval & Manufacturing Clearance. | 50d | 2026-02-27 A | 2026-04-15 | P.KP.BVM.1020 | 50% | 25d | 2026-02-25 | 2026-04-27 | 36d | 0d | 539 | K |
| P.KP.BVM.1040 |  | Manufacturing & Material Inspection. | 50d | 2026-04-16 | 2026-06-13 | P.KP.BVM.1030 |  |  |  |  | 36d | 0d | 540 | K |
| P.KP.BVM.1050 |  | Dispatch & Delivery at Site. | 30d | 2026-06-09 | 2026-07-13 | P.KP.BVM.1040 FF+25d, MA1080 FS+30d, MSI7 Delivery Start SS |  |  |  |  | 36d | 10d | 217 | K |
|  | KP.UPS | **UPS System** |  | 2025-08-25 | 2026-06-25 |  |  |  |  |  |  |  |  |  |
| P.KP.UPS.1010 |  | Release of Technical Specification | 1d | 2025-08-25 A | 2025-08-25 A | A1020 FS+195d | 100% |  | 2025-10-25 | 2025-10-25 |  |  | 542 | K |
| P.KP.UPS.1020 |  | Release of RFQ, Evaluation & Order Placement. | 55d | 2025-08-26 A | 2026-02-25 A | P.KP.UPS.1010, BE.KP.GE.1050 SS+30d | 100% |  | 2025-10-27 | 2025-12-31 |  |  | 543 | K |
| P.KP.UPS.1030 |  | Drawing Submission, Approval & Manufacturing Clearance. | 30d | 2026-03-16 | 2026-04-21 | P.KP.UPS.1020 |  |  |  |  | -24d | 0d | 544 | K |
| P.KP.UPS.1040 |  | Manufacturing & Material Inspection. | 50d | 2026-03-30 | 2026-05-27 | P.KP.UPS.1030 FF+30d |  |  |  |  | -24d | 0d | 545 | K |
| P.KP.UPS.1050 |  | Dispatch & Delivery at Site. | 30d | 2026-05-22 | 2026-06-25 | P.KP.UPS.1040 FF+25d, MA1080 FS+30d, MSI7 Delivery Start SS |  |  |  |  | -24d | 0d | 255 | K |
|  | KP.CCTV | **CCTV** |  | 2025-01-31 | 2026-06-25 |  |  |  |  |  |  |  |  |  |
| P.KP.CCTV.1010 |  | Release of Technical Specification | 1d | 2025-01-31 A | 2025-01-31 A | A1020 FS+300d | 100% |  | 2025-06-26 | 2025-06-26 |  |  | 547 | K |
| P.KP.CCTV.1020 |  | Release of RFQ, Evaluation & Order Placement. | 50d | 2025-02-04 A | 2025-08-25 A | P.KP.CCTV.1010, BE.KP.GE.1050 SS+30d | 100% |  | 2025-06-27 | 2025-08-27 |  |  | 548 | K |
| P.KP.CCTV.1030 |  | Drawing Submission, Approval & Manufacturing Clearance. | 60d | 2025-12-15 A | 2026-03-31 | P.KP.CCTV.1020 | 80% | 12d | 2025-12-26 | 2026-03-10 | -24d | 0d | 549 | K |
| P.KP.CCTV.1040 |  | Manufacturing & Material Inspection. | 60d | 2026-03-16 | 2026-05-27 | P.KP.CCTV.1030 SS+60d |  |  |  |  | -24d | 0d | 550 | K |
| P.KP.CCTV.1050 |  | Dispatch & Delivery at Site. | 30d | 2026-05-22 | 2026-06-25 | P.KP.CCTV.1040 FF+25d, MA1080 FS+30d, MSI7 Delivery Start SS |  |  |  |  | -24d | 25d | 228 | K |

| ID | WBS | Activity | Duration | Start | Finish | Predecessors | Complete | Remaining | Planned start | Planned finish | Total float | Free float | MSP Activity ID | Responsibility |
| --- | --- | --- | --- | --- | --- | --- | --- | --- | --- | --- | --- | --- | --- | --- |
|  | KP.IN | **Instruments** |  | 2025-08-25 | 2026-06-18 |  |  |  |  |  |  |  |  |  |
| P.KP.IN.1010 |  | Release of Technical Specification | 1d | 2025-08-25 A | 2025-08-25 A | A1020 FS+200d, BE.HT.KP.TM.I.1020 FS+25d, BE.KP.TM.I.1040 FS+15d | 100% |  | 2025-12-18 | 2025-12-18 |  |  | 552 | K |
| P.KP.IN.1020 |  | Release of RFQ, Evaluation & Order Placement. | 45d | 2025-08-26 A | 2026-01-23 A | P.KP.IN.1010 | 100% |  | 2025-12-19 | 2026-02-13 |  |  | 553 | K |
| P.KP.IN.1030 |  | Drawing Submission, Approval & Manufacturing Clearance. | 24d | 2026-03-16 | 2026-04-14 | P.KP.IN.1020 |  |  |  |  | -48d | 0d | 554 | K |
| P.KP.IN.1040 |  | Manufacturing & Material Inspection. | 30d | 2026-04-15 | 2026-05-20 | P.KP.IN.1030 |  |  |  |  | -48d | 0d | 555 | K |
| P.KP.IN.1050 |  | Dispatch & Delivery at Site. | 25d | 2026-05-21 | 2026-06-18 | P.KP.IN.1040 FF+25d, MA1080 FS+30d, MSI7 Delivery Start SS |  |  |  |  | -48d | 0d | 204 | K |
|  | KP.BCD | **Belt Changing Device** |  | 2025-07-25 | 2026-07-07 |  |  |  |  |  |  |  |  |  |
| P.KP.BCD.1010 |  | Release of Technical Specification | 1d | 2025-07-25 A | 2025-07-25 A | A1020 FS+316d | 100% |  |  |  |  |  | 557 | K |
| P.KP.BCD.1020 |  | Release of RFQ, Evaluation & Order Placement. | 49d | 2025-07-26 A | 2026-02-25 A | P.KP.BCD.1010 FS+3d | 100% |  | 2025-10-25 | 2025-12-22 |  |  | 558 | K |
| P.KP.BCD.1030 |  | Drawing Submission, Approval & Manufacturing Clearance. | 20d | 2026-03-16 | 2026-04-09 | P.KP.BCD.1020 SS+66d |  |  |  |  | -9d | 0d | 559 | K |
| P.KP.BCD.1040 |  | Manufacturing & Material Inspection. | 50d | 2026-04-10 | 2026-06-08 | P.KP.BCD.1030 |  |  |  |  | -9d | 0d | 560 | K |
| P.KP.BCD.1050 |  | Dispatch & Delivery at Site. | 27d | 2026-06-06 | 2026-07-07 | P.KP.BCD.1040 FF+25d, MA1080 FS+30d, MSI7 Delivery Start SS |  |  |  |  | -9d | 15d | 223 | K |
|  | KP.BB&C | **Battery Bank & Charger** |  | 2024-12-19 | 2026-04-15 |  |  |  |  |  |  |  |  |  |
| P.KP.BB&C.1010 |  | Release of Technical Specification | 1d | 2024-12-19 A | 2024-12-19 A | A1020 FS+153d | 100% |  | 2025-01-02 | 2025-01-02 |  |  | 562 | K |
| P.KP.BB&C.1020 |  | Release of RFQ, Evaluation & Order Placement. | 77d | 2024-12-19 A | 2025-04-04 A | P.KP.BB&C.1010 FS+2d | 100% |  | 2025-01-06 | 2025-04-07 |  |  | 563 | K |
| P.KP.BB&C.1030 |  | Drawing Submission, Approval & Manufacturing Clearance. | 53d | 2025-04-05 A | 2025-11-20 A | P.KP.BB&C.1020 FS+23d | 100% |  | 2025-06-25 | 2025-08-28 |  |  | 564 | K |
| P.KP.BB&C.1040 |  | Manufacturing & Material Inspection. | 50d | 2025-11-21 A | 2026-02-24 A | P.KP.BB&C.1030 FS+5d | 100% |  | 2025-12-26 | 2026-02-25 |  |  | 565 | K |
| P.KP.BB&C.1050 |  | Dispatch & Delivery at Site. | 25d | 2026-03-16 | 2026-04-15 | P.KP.BB&C.1040 FS+4d, MA1080 FS+30d, MSI7 Delivery Start SS |  |  |  |  | 36d | 60d | 211 | K |
|  | KP.FWS | **Fire Fighting System** |  | 2025-05-23 | 2026-05-20 |  |  |  |  |  |  |  |  |  |
| P.KP.FWS.1010 |  | Release of Technical Specification | 1d | 2025-05-23 A | 2025-05-23 A | A1020 FS+220d | 100% |  | 2025-04-26 | 2025-04-26 |  |  | 567 | K |
| P.KP.FWS.1020 |  | Release of RFQ, Evaluation & Order Placement. | 80d | 2025-05-24 A | 2025-09-25 A | P.KP.FWS.1010, BE.KP.GE.1050 SS+30d | 100% |  | 2025-06-25 | 2025-09-30 |  |  | 568 | K |
| P.KP.FWS.1030 |  | Drawing Submission, Approval & Manufacturing Clearance. | 50d | 2025-11-14 A | 2025-12-17 A | P.KP.FWS.1020 | 100% |  | 2025-11-25 | 2026-01-24 |  |  | 569 | K |
| P.KP.FWS.1040 |  | Manufacturing & Material Inspection. | 90d | 2025-12-18 A | 2026-05-20 | P.KP.FWS.1030 | 40% | 54d | 2026-01-27 | 2026-05-15 | 16d | 0d | 570 | K |
| P.KP.FWS.1050 |  | Dispatch & Delivery at Site. | 50d | 2026-03-16 | 2026-05-15 | P.KP.FWS.1040 SS+30d, MA1080 FS+30d, MSI7 Delivery Start SS |  |  |  |  | 16d | 60d | 227 | K |

| ID | WBS | Activity | Duration | Start | Finish | Predecessors | Complete | Remaining | Planned start | Planned finish | Total float | Free float | MSP Activity ID | Responsibility |
| --- | --- | --- | --- | --- | --- | --- | --- | --- | --- | --- | --- | --- | --- | --- |
|  | KP.CWS | **Cooling Water System** |  | 2025-03-25 | 2026-04-15 |  |  |  |  |  |  |  |  |  |
| P.KP.CWS.1010 |  | Release of Technical Specification | 1d | 2025-03-25 A | 2025-03-25 A | A1020 FS+245d | 100% |  | 2025-04-26 | 2025-04-26 |  |  | 572 | K |
| P.KP.CWS.1020 |  | Release of RFQ, Evaluation & Order Placement. | 60d | 2025-03-25 A | 2025-06-25 A | P.KP.CWS.1010, BE.KP.GE.1050 SS+30d | 100% |  | 2025-04-26 | 2025-07-05 |  |  | 573 | K |
| P.KP.CWS.1040 |  | Drawing Submission, Approval & Manufacturing Clearance. | 50d | 2025-07-03 A | 2025-11-03 A | P.KP.CWS.1020 | 100% |  | 2025-07-25 | 2025-09-25 |  |  | 574 | K |
| P.KP.CWS.1050 |  | Manufacturing & Material Inspection. | 70d | 2025-11-04 A | 2026-02-26 A | P.KP.CWS.1040 | 100% |  | 2026-01-27 | 2026-04-21 |  |  | 575 | K |
| P.KP.CWS.1060 |  | Dispatch & Delivery at Site. | 25d | 2026-03-16 | 2026-04-15 | P.KP.CWS.1050, MA1080 FS+30d, MSI7 Delivery Start SS |  |  |  |  | 31d | 55d | 199 | K |
|  | KP.TS | **PA & Telephone System** |  | 2025-01-31 | 2026-06-25 |  |  |  |  |  |  |  |  |  |
| P.KP.TS.1010 |  | Release of Technical Specification | 1d | 2025-01-31 A | 2025-01-31 A | A1020 FS+265d, BE.KP.I.1060 SS+20d, DE.KP.SB.1050 SS+60d | 100% |  | 2025-05-16 | 2025-05-16 |  |  | 577 | K |
| P.KP.TS.1020 |  | Release of RFQ, Evaluation & Order Placement. | 55d | 2025-02-04 A | 2025-08-25 A | P.KP.TS.1010, BE.KP.GE.1050 SS+30d | 100% |  | 2025-05-17 | 2025-07-19 |  |  | 578 | K |
| P.KP.TS.1030 |  | Drawing Submission, Approval & Manufacturing Clearance. | 40d | 2025-12-05 A | 2026-03-07 A | P.KP.TS.1020 | 100% |  | 2025-12-26 | 2026-02-13 |  |  | 579 | K |
| P.KP.TS.1040 |  | Manufacturing & Material Inspection. | 60d | 2026-03-16 | 2026-05-27 | P.KP.TS.1030 |  |  |  |  | -14d | 0d | 580 | K |
| P.KP.TS.1050 |  | Dispatch & Delivery at Site. | 25d | 2026-05-28 | 2026-06-25 | P.KP.TS.1040 FF+25d, MA1080 FS+30d, MSI7 Delivery Start SS |  |  |  |  | -14d | 15d | 254 | K |
|  | KP.DFDS | **DFDS System** |  | 2025-05-23 | 2026-06-19 |  |  |  |  |  |  |  |  |  |
| P.KP.DFDS.1010 |  | Release of Technical Specification | 1d | 2025-05-23 A | 2025-05-23 A | A1020 FS+160d, DE.KP.SB.1050 SS+60d | 100% |  | 2025-04-26 | 2025-04-26 |  |  | 582 | K |
| P.KP.DFDS.1020 |  | Release of RFQ, Evaluation & Order Placement. | 50d | 2025-05-24 A | 2025-09-25 A | P.KP.DFDS.1010, BE.KP.GE.1050 SS+30d | 100% |  | 2025-06-25 | 2025-08-25 |  |  | 583 | K |
| P.KP.DFDS.1030 |  | Drawing Submission, Approval & Manufacturing Clearance.. | 45d | 2025-10-30 A | 2026-02-19 A | P.KP.DFDS.1020 | 100% |  | 2025-11-25 | 2026-01-19 |  |  | 584 | K |
| P.KP.DFDS.1040 |  | Manufacturing & Material Inspection. | 55d | 2026-03-16 | 2026-05-21 | P.KP.DFDS.1030 |  |  |  |  | 6d | 0d | 585 | K |
| P.KP.DFDS.1050 |  | Dispatch & Delivery at Site. | 50d | 2026-04-22 | 2026-06-19 | P.KP.DFDS.1040 FF+25d, MA1080 FS+30d, MSI7 Delivery Start SS |  |  |  |  | 6d | 30d | 219 | K |
|  | KP.BD | **Bus Duct** |  | 2025-01-16 | 2026-05-27 |  |  |  |  |  |  |  |  |  |
| P.KP.BD.1010 |  | Release of Technical Specification | 1d | 2025-01-16 A | 2025-01-16 A | A1020 FS+198d | 100% |  | 2025-03-25 | 2025-03-25 |  |  | 587 | K |
| P.KP.BD.1020 |  | Release of RFQ, Evaluation & Order Placement. | 50d | 2025-01-16 A | 2025-04-25 A | P.KP.BD.1010 FS+3d | 100% |  | 2025-03-29 | 2025-05-27 |  |  | 588 | K |
| P.KP.BD.1030 |  | Drawing Submission, Approval & Manufacturing Clearance. | 52d | 2025-04-26 A | 2026-01-15 A | P.KP.BD.1020 FS+25d | 100% |  | 2025-06-25 | 2025-08-27 |  |  | 589 | K |
| P.KP.BD.1040 |  | Manufacturing & Material Inspection. | 50d | 2026-01-16 A | 2026-04-27 | P.KP.BD.1030 | 30% | 35d | 2026-02-05 | 2026-04-07 | -14d | 0d | 590 | K |
| P.KP.BD.1050 |  | Dispatch & Delivery at Site. | 25d | 2026-04-28 | 2026-05-27 | P.KP.BD.1040 FF+25d, MA1080 FS+30d, MSI7 Delivery Start SS |  |  |  |  | -14d | 25d | 249 | K |

| ID | WBS | Activity | Duration | Start | Finish | Predecessors | Complete | Remaining | Planned start | Planned finish | Total float | Free float | MSP Activity ID | Responsibility |
| --- | --- | --- | --- | --- | --- | --- | --- | --- | --- | --- | --- | --- | --- | --- |
|  | KP.CT | **Cable Tray** |  | 2025-01-16 | 2026-02-20 |  |  |  |  |  |  |  |  |  |
| P.KP.CT.1010 |  | Release of Technical Specification | 1d | 2025-01-16 A | 2025-01-16 A | A1020 FS+211d | 100% |  | 2025-03-25 | 2025-03-25 |  |  | 592 | K |
| P.KP.CT.1020 |  | Release of RFQ, Evaluation & Order Placement. | 78d | 2025-03-27 A | 2025-07-25 A | P.KP.CT.1010 FS+1d | 100% |  | 2025-04-26 | 2025-07-25 |  |  | 593 | K |
| P.KP.CT.1030 |  | Drawing Submission, Approval & Manufacturing Clearance. | 24d | 2025-08-21 A | 2025-09-02 A | P.KP.CT.1020 FS+37d | 100% |  | 2025-10-25 | 2025-11-22 |  |  | 594 | K |
| P.KP.CT.1040 |  | Manufacturing & Material Inspection. | 97d | 2025-09-03 A | 2026-01-19 A | P.KP.CT.1030 FS+5d | 100% |  | 2025-11-29 | 2026-03-30 |  |  | 595 | K |
| P.KP.CT.1050 |  | Dispatch & Delivery at Site. | 25d | 2025-12-05 A | 2026-02-20 A | P.KP.CT.1040 FS+5d, MA1080 FS+30d, MSI7 Delivery Start SS | 100% |  | 2026-01-27 | 2026-02-25 |  |  | 229 | K |
|  | KP.CAS | **Compressed Air System** |  | 2025-06-17 | 2026-04-27 |  |  |  |  |  |  |  |  |  |
| P.KP.CAS.1010 |  | Release of Technical Specification | 1d | 2025-06-17 A | 2025-06-17 A | A1020 FS+196d | 100% |  | 2025-06-25 | 2025-06-25 |  |  | 597 | K |
| P.KP.CAS.1020 |  | Release of RFQ, Evaluation & Order Placement. | 77d | 2025-06-18 A | 2025-10-14 A | P.KP.CAS.1010 FS+5d | 100% |  | 2025-07-02 | 2025-10-04 |  |  | 598 | K |
| P.KP.CAS.1030 |  | Drawing Submission, Approval & Manufacturing Clearance. | 15d | 2025-10-30 A | 2025-12-23 A | P.KP.CAS.1020 FS+15d | 100% |  | 2025-11-25 | 2025-12-11 |  |  | 599 | K |
| P.KP.CAS.1040 |  | Manufacturing & Material Inspection. | 90d | 2025-12-24 A | 2026-04-27 | P.KP.CAS.1030 | 50% | 35d | 2026-02-05 | 2026-05-25 | 36d | 0d | 600 | K |
| P.KP.CAS.1050 |  | Dispatch & Delivery at Site. | 25d | 2026-03-16 | 2026-04-15 | P.KP.CAS.1040 SS+30d, MA1080 FS+30d, MSI7 Delivery Start SS |  |  |  |  | 36d | 65d | 253 | K |
|  | KP.E&LM | **Earthing & Lightning Material** |  | 2025-03-25 | 2026-04-15 |  |  |  |  |  |  |  |  |  |
| P.KP.E&LM.1010 |  | Release of Technical Specification | 1d | 2025-03-25 A | 2025-03-25 A | A1020 FS+213d, BE.KP.E.1080 SS | 100% |  |  |  |  |  | 602 | K |
| P.KP.E&LM.1020 |  | Release of RFQ, Evaluation & Order Placement. | 52d | 2025-03-26 A | 2025-10-25 A | P.KP.E&LM.1010 FS+2d | 100% |  | 2025-06-25 | 2025-08-27 |  |  | 603 | K |
| P.KP.E&LM.1030 |  | Drawing Submission, Approval & Manufacturing Clearance. | 25d | 2025-10-30 A | 2025-12-03 A | P.KP.E&LM.1020 | 100% |  | 2025-11-25 | 2025-12-23 |  |  | 604 | K |
| P.KP.E&LM.1040 |  | Manufacturing & Material Inspection. | 45d | 2025-12-04 A | 2026-02-25 A | P.KP.E&LM.1030 | 100% |  | 2026-01-27 | 2026-03-21 |  |  | 605 | K |
| P.KP.E&LM.1050 |  | Dispatch & Delivery at Site. | 25d | 2026-03-16 | 2026-04-15 | P.KP.E&LM.1040 FF+25d, MA1080 FS+30d, MSI7 Delivery Start SS |  |  |  |  | -39d | 9d | 247 | K |
|  | KP.VCB | **In-out VCB Panel** |  | 2024-11-25 | 2026-05-22 |  |  |  |  |  |  |  |  |  |
| P.KP.VCB.1010 |  | Release of Technical Specification | 1d | 2024-11-25 A | 2024-11-25 A | A1020 FS+156d | 100% |  | 2025-01-06 | 2025-01-06 |  |  | 607 | K |
| P.KP.VCB.1020 |  | Release of RFQ, Evaluation & Order Placement. | 76d | 2024-11-25 A | 2025-05-23 A | P.KP.VCB.1010 FS+3d | 100% |  | 2025-01-10 | 2025-04-10 |  |  | 608 | K |
| P.KP.VCB.1030 |  | Drawing Submission, Approval & Manufacturing Clearance. | 52d | 2025-05-27 A | 2026-03-30 | P.KP.VCB.1020 FS+5d | 80% | 10.4d | 2025-06-25 | 2025-08-27 | -20d | 0d | 609 | K |
| P.KP.VCB.1040 |  | Manufacturing & Material Inspection. | 27d | 2026-03-16 | 2026-04-17 | P.KP.VCB.1030 SS+30d |  |  |  |  | -20d | 0d | 610 | K |
| P.KP.VCB.1050 |  | Dispatch & Delivery at Site. | 24d | 2026-04-24 | 2026-05-22 | P.KP.VCB.1040 FS+5d, MA1080 FS+30d, MSI7 Delivery Start SS |  |  |  |  | -20d | 19d | 182 | K |

| ID | WBS | Activity | Duration | Start | Finish | Predecessors | Complete | Remaining | Planned start | Planned finish | Total float | Free float | MSP Activity ID | Responsibility |
| --- | --- | --- | --- | --- | --- | --- | --- | --- | --- | --- | --- | --- | --- | --- |
|  | KP.LTCC | **LT Control Cable** |  | 2025-08-25 | 2026-02-20 |  |  |  |  |  |  |  |  |  |
| P.KP.LTCC.1010 |  | Release of Technical Specification | 1d | 2025-08-25 A | 2025-08-25 A | A1020 FS+231d | 100% |  | 2025-10-25 | 2025-10-25 |  |  | 612 | K |
| P.KP.LTCC.1020 |  | Release of RFQ, Evaluation & Order Placement. | 52d | 2025-08-26 A | 2025-11-24 A | P.KP.LTCC.1010 FS+2d | 100% |  | 2025-10-29 | 2025-12-30 |  |  | 613 | K |
| P.KP.LTCC.1030 |  | Drawing Submission, Approval & Manufacturing Clearance. | 15d | 2025-12-03 A | 2026-01-02 A | P.KP.LTCC.1020 FS+15d | 100% |  | 2025-12-26 | 2026-01-13 |  |  | 614 | K |
| P.KP.LTCC.1040 |  | Manufacturing & Material Inspection. | 50d | 2026-01-03 A | 2026-01-19 A | P.KP.LTCC.1030 | 100% |  | 2026-01-31 | 2026-04-03 |  |  | 615 | K |
| P.KP.LTCC.1050 |  | Dispatch & Delivery at Site. | 24d | 2026-02-14 A | 2026-02-20 A | P.KP.LTCC.1040, MA1080 FS+30d, MSI7 Delivery Start SS | 100% |  | 2026-02-25 | 2026-03-27 |  |  | 218 | K |
|  | KP.P&F | **Pipe & Fittings** |  | 2025-07-07 | 2026-05-14 |  |  |  |  |  |  |  |  |  |
| P.KP.P&F.1010 |  | Release of Technical Specification | 101d | 2025-07-07 A | 2025-07-07 A | A1020 FS+259d | 100% |  | 2025-07-25 | 2025-11-27 |  |  | 617 | K |
| P.KP.P&F.1020 |  | Release of RFQ, Evaluation & Order Placement. | 101d | 2025-07-08 A | 2025-10-13 A | P.KP.P&F.1010 SS+6d | 100% |  | 2025-10-25 | 2026-02-25 |  |  | 618 | K |
| P.KP.P&F.1030 |  | Drawing Submission, Approval & Manufacturing Clearance. | 40d | 2025-10-13 A | 2025-10-13 A | P.KP.P&F.1020 SS+40d | 100% |  | 2025-11-25 | 2026-01-12 |  |  | 619 | K |
| P.KP.P&F.1040 |  | Manufacturing & Material Inspection. | 80d | 2025-10-14 A | 2026-04-14 | P.KP.P&F.1030 SS+4d | 70% | 24d | 2025-12-26 | 2026-04-04 | 37d | 0d | 620 | K |
| P.KP.P&F.1050 |  | Dispatch & Delivery at Site. | 80d | 2026-01-15 A | 2026-05-14 | P.KP.P&F.1040 FF+25d, MA1080 FS+30d, MSI7 Delivery Start SS | 50% | 40d | 2026-01-27 | 2026-05-02 | 37d | 61d | 214 | K |
|  | KP.P(CW) | **Pump (Clean Water)** |  | 2025-05-23 | 2026-07-18 |  |  |  |  |  |  |  |  |  |
| P.KP.P(CW).1010 |  | Release of Technical Specification | 1d | 2025-05-23 A | 2025-05-23 A | A1020 FS+150d | 100% |  | 2025-04-26 | 2025-04-26 |  |  | 622 | K |
| P.KP.P(CW).1020 |  | Release of RFQ, Evaluation & Order Placement. | 66d | 2025-05-26 A | 2026-02-25 A | P.KP.P(CW).1010 FS+3d | 100% |  | 2025-06-25 | 2025-09-12 |  |  | 623 | K |
| P.KP.P(CW).1030 |  | Drawing Submission, Approval & Manufacturing Clearance. | 25d | 2026-03-16 | 2026-04-15 | P.KP.P(CW).1020 FF+30d |  |  |  |  | -49d | 0d | 624 | K |
| P.KP.P(CW).1040 |  | Manufacturing & Material Inspection. | 60d | 2026-04-16 | 2026-06-25 | P.KP.P(CW).1030 FF+60d |  |  |  |  | -49d | 0d | 625 | K |
| P.KP.P(CW).1050 |  | Dispatch & Delivery at Site. | 40d | 2026-06-03 | 2026-07-18 | P.KP.P(CW).1040 FF+20d, MA1080 FS+30d, MSI7 Delivery Start SS |  |  |  |  | -49d | 0d | 197 | K |
|  | KP.WSE | **Workshop Equipment** |  | 2024-11-30 | 2026-06-30 |  |  |  |  |  |  |  |  |  |
| P.KP.WSE.1010 |  | Release of Technical Specification | 1d | 2024-11-30 A | 2024-11-30 A | A1020 FS+127d | 100% |  |  |  |  |  | 627 | K |
| P.KP.WSE.1020 |  | Release of RFQ, Evaluation & Order Placement. | 75d | 2024-11-30 A | 2025-05-03 A | P.KP.WSE.1010 FS+3d | 100% |  | 2024-12-05 | 2025-03-05 |  |  | 628 | K |
| P.KP.WSE.1030 |  | Drawing Submission, Approval & Manufacturing Clearance. | 51d | 2025-06-25 A | 2026-02-16 A | P.KP.WSE.1020 FS+15d | 100% |  | 2025-06-25 | 2025-08-26 |  |  | 629 | K |
| P.KP.WSE.1040 |  | Manufacturing & Material Inspection. | 60d | 2026-03-16 | 2026-05-27 | P.KP.WSE.1030 |  |  |  |  | -3d | 0d | 630 | K |
| P.KP.WSE.1050 |  | Dispatch & Delivery at Site. | 24d | 2026-06-03 | 2026-06-30 | P.KP.WSE.1040 FS+5d, MA1080 FS+30d, MSI7 Delivery Start SS |  |  |  |  | -3d | 21d | 213 | K |

| ID | WBS | Activity | Duration | Start | Finish | Predecessors | Complete | Remaining | Planned start | Planned finish | Total float | Free float | MSP Activity ID | Responsibility |
| --- | --- | --- | --- | --- | --- | --- | --- | --- | --- | --- | --- | --- | --- | --- |
|  | KP.L(MN) | **Liner (Mn Steel)** |  | 2025-02-05 | 2026-07-01 |  |  |  |  |  |  |  |  |  |
| P.KP.L(MN).1010 |  | Release of Technical Specification/ Drawing | 1d | 2025-02-05 A | 2025-02-05 A | A1020 FS+247d | 100% |  | 2025-04-26 | 2025-04-26 |  |  | 632 | K |
| P.KP.L(MN).1020 |  | Release of RFQ, Evaluation & Order Placement | 50d | 2025-02-07 A | 2025-06-25 A | P.KP.L(MN).1010 FS+2d | 100% |  | 2025-04-29 | 2025-06-26 |  |  | 633 | K |
| P.KP.L(MN).1030 |  | Drawing Submission, Approval & Manufacturing Clearance | 25d | 2025-06-26 A | 2025-06-26 A | P.KP.L(MN).1020 FS+24d | 100% |  | 2025-07-25 | 2025-08-26 |  |  | 634 | K |
| P.KP.L(MN).1040 |  | Manufacturing & Material Inspection. | 150d | 2025-06-27 A | 2026-06-08 | P.KP.L(MN).1030 FS+5d | 100% | 70d | 2025-10-25 | 2026-04-27 | 46d | 0d | 635 | K |
| P.KP.L(MN).1050 |  | Dispatch & Delivery at Site. | 150d | 2025-11-24 A | 2026-07-01 | P.KP.L(MN).1040 SS+50d, MA1080 FS+30d, MSI7 Delivery Start SS | 40% | 90d | 2025-12-26 | 2026-06-26 | 46d | 20d | 201 | K |
|  | HT.PB | **Plummer Block** |  | 2025-01-22 | 2026-01-05 |  |  |  |  |  |  |  |  |  |
| P.HT.PB.1010 |  | Release of Technical Specification | 1d | 2025-01-22 A | 2025-01-25 A | A1020 FS+172d | 100% |  | 2025-01-25 | 2025-01-25 |  |  | 637 | H |
| P.HT.PB.1020 |  | Release of RFQ, Evaluation & Order Placement. | 51d | 2025-01-23 A | 2025-04-18 A | P.HT.PB.1010 FS+3d | 100% |  | 2025-03-25 | 2025-05-23 |  |  | 638 | H |
| P.HT.PB.1030 |  | Drawing Submission, Approval & Manufacturing Clearance. | 68d | 2025-04-19 A | 2025-06-14 A | P.HT.PB.1020 FS+21d | 100% |  | 2025-06-25 | 2025-09-15 |  |  | 639 | H |
| P.HT.PB.1040 |  | Manufacturing & Material Inspection. | 124d | 2025-06-16 A | 2025-12-24 A | P.HT.PB.1030 | 100% |  | 2025-10-25 | 2026-03-27 |  |  | 640 | H |
| P.HT.PB.1050 |  | Dispatch & Delivery at Site. | 30d | 2025-12-30 A | 2026-01-05 A | P.HT.PB.1040 SS+74d, MA1080 FS+30d, MSI7 Delivery Start SS | 100% |  | 2026-02-05 | 2026-03-12 |  |  | 246 | H |
|  | HT.B | **Bearing** |  | 2025-02-28 | 2025-12-30 |  |  |  |  |  |  |  |  |  |
| P.HT.B.1020 |  | Release of RFQ, Evaluation & Order Placement. | 52d | 2025-02-28 A | 2025-04-23 A | P.HT.B.1010 FS+2d | 100% |  | 2025-04-30 | 2025-06-28 |  |  | 643 | H |
| P.HT.B.1010 |  | Release of Technical Specification | 1d | 2025-04-10 A | 2025-04-10 A | A1020 FS+248d | 100% |  | 2025-04-26 | 2025-04-26 |  |  | 642 | H |
| P.HT.B.1030 |  | Drawing Submission, Approval & Manufacturing Clearance. | 63d | 2025-04-26 A | 2025-04-26 A | P.HT.B.1020 FS+23d | 100% |  | 2025-07-26 | 2025-10-13 |  |  | 644 | H |
| P.HT.B.1040 |  | Manufacturing & Material Inspection. | 96d | 2025-06-16 A | 2025-12-26 A | P.HT.B.1030 | 100% |  | 2025-10-25 | 2026-02-19 |  |  | 645 | H |
| P.HT.B.1050 |  | Dispatch & Delivery at Site. | 38d | 2025-12-29 A | 2025-12-30 A | P.HT.B.1040 SS+65d, MA1080 FS+30d, MSI7 Delivery Start SS | 100% |  | 2026-01-27 | 2026-03-12 |  |  | 222 | H |
|  | HT.M | **Motor** |  | 2025-04-26 | 2026-07-08 |  |  |  |  |  |  |  |  |  |
| P.HT.M.1010 |  | Release of Technical Specification | 1d | 2025-04-26 A | 2025-04-26 A | A1020 FS+248d | 100% |  |  |  |  |  | 647 | H |
| P.HT.M.1020 |  | Release of RFQ, Evaluation & Order Placement. | 52d | 2025-04-26 A | 2025-05-22 A | P.HT.M.1010 FS+2d | 100% |  | 2025-04-30 | 2025-06-28 |  |  | 648 | H |
| P.HT.M.1030 |  | Drawing Submission, Approval & Manufacturing Clearance. | 38d | 2025-06-04 A | 2025-12-16 A | P.HT.M.1020 FS+15d | 100% |  | 2025-07-25 | 2025-09-10 |  |  | 649 | H |
| P.HT.M.1040 |  | Manufacturing & Material Inspection. | 60d | 2025-12-17 A | 2026-03-31 | P.HT.M.1030 FS+10d | 80% | 12d | 2026-02-05 | 2026-04-18 | -60d | 0d | 650 | H |
| P.HT.M.1050 |  | Dispatch & Delivery at Site. | 25d | 2026-01-12 A | 2026-07-08 | P.HT.M.1040 FF+84d, MA1080 FS+30d, MSI7 Delivery Start SS | 60% | 10d | 2026-04-08 | 2026-05-06 | -60d | 0d | 245 | H |

| ID | WBS | Activity | Type | Duration | Start | Finish | Predecessors | Complete | Remaining | Planned start | Planned finish | Total float | Free float | Constraint | MSP Activity ID | Responsibility |
| --- | --- | --- | --- | --- | --- | --- | --- | --- | --- | --- | --- | --- | --- | --- | --- | --- |
|  | HT.CF | **Hood, Chutes, Skirts, Frames for Conveyors (Tech. Structure)** |  |  | 2025-04-26 | 2026-06-03 |  |  |  |  |  |  |  |  |  |  |
| P.HT.CF.1010 |  | Release of Technical Specification |  | 1d | 2025-04-26 A | 2025-04-26 A | A1020 FS+248d | 100% |  |  |  |  |  |  | 652 | H |
| P.HT.CF.1020 |  | Release of RFQ, Evaluation & Order Placement. |  | 52d | 2025-04-26 A | 2025-05-21 A | P.HT.CF.1010 FS+2d | 100% |  | 2025-04-30 | 2025-06-28 |  |  |  | 653 | H |
| P.HT.CF.1030 |  | Drawing Submission, Approval & Manufacturing Clearance. |  | 38d | 2025-06-04 A | 2025-07-25 A | P.HT.CF.1020 FS+23d | 100% |  | 2025-06-25 | 2025-08-07 |  |  |  | 654 | H |
| P.HT.CF.1040 |  | Manufacturing & Material Inspection. |  | 97d | 2025-07-27 A | 2026-04-28 | P.HT.CF.1030 FS+208d | 85% | 15d | 2025-11-18 | 2026-03-16 | -49.34d | 0d |  | 655 | H |
| P.HT.CF.1050 |  | Dispatch & Delivery at Site. |  | 133d | 2025-09-30 A | 2026-06-03 | P.HT.CF.1040 FF+30d, MA1080 FS+30d, MSI7 Delivery Start SS | 77% | 30d | 2025-11-18 | 2026-04-29 | -49.34d | 0d |  | 187 | H |
|  | HT.CI | **Instruments for Conveyors** |  |  | 2025-06-25 | 2026-06-02 |  |  |  |  |  |  |  |  |  |  |
| P.HT.CI.1010 |  | Release of Technical Specification |  | 1d | 2025-06-25 A | 2025-06-25 A | A1020 FS+299d | 100% |  |  |  |  |  |  | 657 | H |
| P.HT.CI.1020 |  | Release of RFQ, Evaluation & Order Placement. |  | 49d | 2025-06-25 A | 2025-07-15 A | P.HT.CI.1010 FS+2d | 100% |  | 2025-06-28 | 2025-08-27 |  |  |  | 658 | H |
| P.HT.CI.1030 |  | Drawing Submission, Approval & Manufacturing Clearance. |  | 63d | 2025-07-16 A | 2026-03-31 | P.HT.CI.1020 | 81% | 12d | 2025-10-25 | 2026-01-09 | 21d | 0d |  | 659 | H |
| P.HT.CI.1040 |  | Manufacturing & Material Inspection. |  | 40d | 2026-03-16 | 2026-05-02 | P.HT.CI.1030 SS+10d |  |  |  |  | 21d | 0d |  | 660 | H |
| P.HT.CI.1050 |  | Dispatch & Delivery at Site. |  | 50d | 2026-04-04 | 2026-06-02 | P.HT.CI.1040 FF+25d, MA1080 FS+30d, MSI7 Delivery Start SS |  |  |  |  | 21d | 45d |  | 200 | H |
|  | MISC | **Misc. Items** |  |  | 2025-08-25 | 2026-06-08 |  |  |  |  |  |  |  |  |  |  |
| P.KP.MISC.1010 |  | Release of Technical Specification |  | 1d | 2025-08-25 A | 2025-08-25 A | A1020 FS+326d | 100% |  | 2025-10-25 | 2025-10-25 |  |  |  | 662 | K |
| P.KP.MISC.1020 |  | Release of RFQ, Evaluation & Order Placement. |  | 40d | 2025-08-26 A | 2025-12-10 A | P.KP.MISC.1010, BE.KP.GE.1050 SS+30d | 100% |  | 2026-02-25 | 2026-04-15 |  |  |  | 663 | K |
| P.KP.MISC.1030 |  | Drawing Submission, Approval & Manufacturing Clearance. |  | 45d | 2026-01-09 A | 2026-02-13 A | P.KP.MISC.1020 SS+30d | 100% |  | 2026-04-04 | 2026-05-27 |  |  |  | 664 | K |
| P.KP.MISC.1040 |  | Manufacturing & Material Inspection. |  | 45d | 2026-03-16 | 2026-05-08 | P.KP.MISC.1030 SS+43d |  |  |  |  | 66d | 0d |  | 665 | K |
| P.KP.MISC.1050 |  | Delivery at Site. |  | 30d | 2026-05-04 | 2026-06-08 | P.KP.MISC.1040 FF+25d, MA1080 FS+30d, MSI7 Delivery Start SS |  |  |  |  | 66d | 40d |  | 256 | K |
|  | SS | **Building Steel Structure & Sheeting** |  |  | 2025-01-10 | 2026-04-23 |  |  |  |  |  |  |  |  |  |  |
| P.KP.SS.1010 |  | Order Placement of Steel Structure & Sheeting |  | 315d | 2025-01-10 A | 2025-03-06 A | A1020 FS+200d | 100% |  | 2025-03-25 | 2026-04-13 |  |  |  | 668 | K |
| P.KP.SS.1020 |  | Fabricaiton |  | 315d | 2025-03-05 A | 2026-04-23 | P.KP.SS.1010 SS+15d | 90% | 31.5d | 2025-04-11 | 2026-04-30 | -77.8d | 0d |  | 667 | K |
| P.KP.SS.1030 |  | Supply of Fabricated Material |  | 315d | 2025-04-10 A | 2026-04-23 | P.KP.SS.1020 SS+5d | 90% | 31.5d | 2025-04-26 | 2026-05-15 | -77.8d | 0d |  | 262 | K |
|  | C | **Construction** |  |  | 2024-10-04 | 2026-11-26 |  |  |  |  |  |  |  |  |  |  |
| MSI3 - Civil Start |  | Civil works Start | milestone | 0d | 2024-10-04 A | 2024-10-04 A | A1020 SS | 100% |  | 2024-11-25 | 2024-11-25 |  |  | start on or after 2024-11-11 | 797 | K |
| MS7 - Erec.Mech.PESt |  | Erection - Mechanical Plant & Equipment Start | milestone | 0d | 2026-03-16 | 2026-03-16 | A1020 SS+376d |  |  |  |  | -4d | 42.94d |  | 798 | K |
| MS8 - Erec.Electr.St |  | Erection - Electrical Plant & Equipment Start | milestone | 0d | 2026-03-16 | 2026-03-16 | A1020 SS+376d |  |  |  |  | -4d | 42.94d |  | 799 | K |
| MSI5 - Erec.Inst.St. |  | Erection - Instrumentation & Automation Start | milestone | 0d | 2026-03-16 | 2026-03-16 | A1020 SS+376d |  |  |  |  | -4d | 42.94d |  | 800 | K |
| MSI6 - Erec.UtilityS |  | Erection - Utility Equipment Start | milestone | 0d | 2026-03-16 | 2026-03-16 | A1020 SS+335d |  |  |  |  | -54d | 0d |  | 801 |  |
| MSI6 - Erec.UtilityE |  | Erection - Utility Equipment | milestone | 0d | 2026-11-03 | 2026-11-03 | C.KP.MOB.MEP.1020 FF+140d, C.KP.MOB.MEP.1040 FF, C.KP.OAB.MEP.1020 FF+100d, C.KP.SO.MEP.1020 FF+100d |  |  |  |  | -60d | 20d |  | 672 | K |
| MS6 - Erec.Str.Steel |  | Erection - Steel Structure & Sheeting | milestone | 0d | 2026-11-12 | 2026-11-12 | C.KP.SC.SSW.1190 FF+50d, C.KP.SC.SSW.1200 FF+10d, C.KP.SC.SSW.1210 FF+10d, C.KP.SC.SSW.1230 FF, C.KP.CB.SSW.1120 FF+25d, C.KP.CB.SSW.1130 FF, C.KP.CB.SSW.1140 FF, C.KP.CB.SSW.1160 FF+75d, C.KP.HBF.SSW.1110 FF+20d, C.KP.HBF.SSW.1120 FF+25d, C.KP.HBF.SSW.1140 FF+20d, C.KP.TCP.SSW.1200 FF+40d, C.KP.TCP.SSW.1230 FF+30d, C.KP.TH4.SSW.1070 FF+50d, C.KP.TH5.SSW.1070 FF+180d, C.KP.TH5.SSW.1090 FF+150d, C.KP.TH6.SSW.1060 FF+50d, C.KP.C801.SSW.1050 FF+60d, C.KP.DH.SSW.1050 FF+150d, C.KP.C806.SSW.1050 FF+90d, C.KP.C809.SSW.1050 FF+70d, C.KP.C810.SSW.1050 FF+25d, C.KP.C823.SSW.1050 FF+40d, C.KP.C829.SSW.1050 FF+50d, C.KP.C832.SSW.1050 FF+50d, C.KP.WB.SSW.1080 FF+150d, MS3 Delivery1 End FF |  |  |  |  | -67.8d | 12.2d |  | 673 | K |
| MS7 - Erec.Mech.PE |  | Erection - Mechanical Plant & Equipment | milestone | 0d | 2026-11-25 | 2026-11-25 | C.KP.SB.EI.1010 FF, KP.SC.EI.1010 FF, C.KP.CB.EI.1010 FF, C.KP.HBF.EI.1010 FF, C.KP.TCP.EI.1010 FF, C.KP.TH3.EI.1010 FF, C.KP.TH5.EI.1010 FF, C.KP.TH6.EI.1010 FF, C.KP.C801.EI.1010 FF, C.KP.DH.EI.1010 FF, C.KP.C806.EI.1010 FF, C.KP.C809.EI.1010 FF, C.KP.C810.EI.1010 FF, C.KP.C823.EI.1010 FF, C.KP.C829.EI.1010 FF, C.KP.C832.EI.1010 FF, C.KP.DFDS.EI.1010 FF, C.KP.FFPH.EI.1010 FF, C.KP.PWPH.EI.1010 FF, C.KP.WB.EI.1010 FF, C.KP.CWS.EI.1010 FF, C.KP.PSTD.EI.1010 FF, C.KP.TT.EI.1010 FF, C.KP.MIS.CP.1040 FF+15d, C.MIS.ET.1020 FF, C.MIS.CG.1030 FF, C.KP.LCSS.MEP.1130 FF, C.MIS.OGPS.1020 FF, C.KP.RW.MEP.1020 FF, MS4 Delivery2 End FF |  |  |  |  | -79d | 1d |  | 677 | K |
| MS8 - Erec.Electr.Ed |  | Erection - Electrical Plant & Equipment | milestone | 0d | 2026-11-25 | 2026-11-25 | C.KP.MOB.MEP.1010 FF+75d, C.KP.MOB.MEP.1030 FF+100d, C.KP.MOB.MEP.1050 FF+80d, C.KP.OAB.MEP.1010 FF+75d, C.KP.SO.MEP.1010 FF+100d, C.KP.LCSS.MEP.1150 FF+40d, C.KP.SB.EI.1010 FF, KP.SC.EI.1010 FF, C.KP.CB.EI.1010 FF, C.KP.HBF.EI.1010 FF, C.KP.TCP.EI.1010 FF, C.KP.TH3.EI.1010 FF, C.KP.TH5.EI.1010 FF, C.KP.TH6.EI.1010 FF, C.KP.C801.EI.1010 FF, C.KP.DH.EI.1010 FF, C.KP.C806.EI.1010 FF, C.KP.C809.EI.1010 FF, C.KP.C810.EI.1010 FF, C.KP.C823.EI.1010 FF, C.KP.C829.EI.1010 FF, C.KP.C832.EI.1010 FF, C.KP.DFDS.EI.1010 FF, C.KP.FFPH.EI.1010 FF, C.KP.PWPH.EI.1010 FF, C.KP.WB.EI.1010 FF, C.KP.CWS.EI.1010 FF, C.KP.PSTD.EI.1010 FF, C.KP.TT.EI.1010 FF, C.KP.MIS.CP.1040 FF, C.MIS.ET.1020 FF, C.MIS.CG.1030 FF, C.KP.RW.MEP.1020 FF, MS4 Delivery2 End FF |  |  |  |  | -79d | 1d |  | 675 | K |
| MSI5 - Erec.Inst.Aut |  | Erection - Instrumentation & Automation | milestone | 0d | 2026-11-25 | 2026-11-25 | C.KP.LCSS.MEP.1150 FF, C.KP.SB.EI.1010 FF, KP.SC.EI.1010 FF, C.KP.CB.EI.1010 FF, C.KP.HBF.EI.1010 FF, C.KP.TCP.EI.1010 FF, C.KP.TH3.EI.1010 FF, C.KP.TH5.EI.1010 FF, C.KP.TH6.EI.1010 FF, C.KP.C801.EI.1010 FF, C.KP.DH.EI.1010 FF, C.KP.C806.EI.1010 FF, C.KP.C809.EI.1010 FF, C.KP.C810.EI.1010 FF, C.KP.C823.EI.1010 FF, C.KP.C829.EI.1010 FF, C.KP.C832.EI.1010 FF, C.KP.DFDS.EI.1010 FF, C.KP.FFPH.EI.1010 FF, C.KP.PWPH.EI.1010 FF, C.KP.WB.EI.1010 FF, C.KP.CWS.EI.1010 FF, C.KP.PSTD.EI.1010 FF, C.KP.TT.EI.1010 FF, C.KP.MIS.CP.1040 FF, C.MIS.ET.1020 FF, C.MIS.CG.1030 FF |  |  |  |  | -79d | 1d |  | 671 | K |
| MS5 - Const.Comp. |  | Construction Completion (Civil works) | milestone | 0d | 2026-11-26 | 2026-11-26 | MSI4 - Civil End FF, MS6 - Erec.Str.Steel FF, MS7 - Erec.Mech.PE FF, MS8 - Erec.Electr.Ed FF, MSI6 - Erec.UtilityE FF, MSI5 - Erec.Inst.Aut FF, C.KP.FFPH.WW.1030 FF+100d |  |  |  |  | -80d | 0d |  | 670 | K |
| MSI4 - Civil End |  | Civil works Completion | milestone | 0d | 2026-11-26 | 2026-11-26 | C.KP.EW.1320 FF, C.KP.RW.CW.1040 FF, C.KP.SB.CVRCC.1120 FF, C.KP.SC.CVRCC.1150 FF+50d, C.KP.CB.CVRCC.1100 FF+80d, C.KP.HBF.CVRCC.1090 FF, C.KP.TCP.CVRCC.1070 FF+100d, C.KP.TH3.CVRCC.1030 FF+150d, C.KP.TH4.CVRCC.1050 FF+30d, C.KP.TH5.CVRCC.1050 FF+200d, C.KP.TH6.CVRCC.1050 FF+80d, C.KP.DH.CVRCC.1050 FF+150d, C.KP.C806.CVRCC.1040 FF+30d, C.KP.C809.CVRCC.1040 FF+80d, C.KP.C810.CVRCC.1040 FF+140d, C.KP.C823.CVRCC.1040 FF+100d, C.KP.C829.CVRCC.1050 FF+120d, C.KP.C832.CVRCC.1040 FF+100d, C.KP.DFDS.CVRCC.1080 FF, C.KP.FFPH.CVRCC.1090 FF, C.KP.PWPH.CVRCC.1080 FF, C.KP.WB.CVRCC.1060 FF+120d, C.KP.CWS.CVRCC.1060 FF+100d, C.KP.PSTD.CVRCC.1060 FF+20d, C.KP.TT.CVRCC.1080 FF, C.KP.MOB.CVRCC.1100 FF, C.KP.OAB.CVRCC.1080 FF, C.KP.SO.CVRCC.1090 FF+150d, C.KP.LCSS.CVRCC.1120 FF, C.MIS.ET.1010 FF, C.MIS.CG.1010 FF, C.MIS.OGPS.1010 FF, C.MIS.DN.1010 FF+30d, C.KP.DFDS.WW.1030 FF+45d, C.KP.FFPH.FW.1040 FF+60d, C.KP.FFPH.FW.1050 FF+80d, C.KP.PWPH.WW.1030 FF+150d, C.KP.PSTD.WP.1020 FF+15d, C.KP.TT.WW.1020 FF+130d, C.KP.MOB.FW.1060 FF+150d, C.KP.MOB.FW.1080 FF+100d, C.KP.MOB.WW.1020 FF+150d, C.KP.MOB.WW.1030 FF+150d, C.KP.OAB.FW.1040 FF+75d, C.KP.OAB.FW.1050 FF+75d, C.KP.OAB.WW.1030 FF+125d, C.KP.SO.FW.1040 FF+80d, C.KP.SO.FW.1050 FF+80d, C.KP.SO.WW.1030 FF+120d, C.KP.LCSS.FW.1040 FF+50d, C.KP.LCSS.FW.1050 FF+50d, C.KP.LCSS.FW.1070 FF+50d, C.KP.LCSS.WW.1020 FF+45d |  |  |  |  | -80d | 0d |  | 676 | K |

| ID | WBS | Activity | Duration | Start | Finish | Predecessors | Complete | Planned start | Planned finish | Total float | Free float | MSP Activity ID | Responsibility |
| --- | --- | --- | --- | --- | --- | --- | --- | --- | --- | --- | --- | --- | --- |
|  | EW | **Earth work** |  | 2024-10-04 | 2026-09-04 |  |  |  |  |  |  |  |  |
| C.KP.EW.1010 |  | Mass Excavation & Bakfill | 200d | 2024-10-04 A | 2026-03-10 A | DE.KP.GE.1040 SS+45d, IA.1130, IA.1150 FS+45d, BE.KP.C.1010, MSI1 - IA, MA1020 FS+15d, MSI3 - Civil Start SS, C.KP.EW.1310 SS+10d | 100% | 2024-11-11 | 2025-07-07 |  |  | 803 | K |
| C.KP.EW.1020 |  | Silo Building | 30d | 2024-10-12 A | 2024-12-11 A | DE.KP.GE.1040 SS+45d, IA.1150 | 100% | 2025-01-29 | 2025-03-05 |  |  | 805 | K |
| C.KP.EW.1110 |  | Conveyor 801 | 60d | 2024-10-18 A | 2026-02-05 A | DE.KP.GE.1040 SS+45d, IA.1150 | 100% | 2024-10-25 | 2025-01-07 |  |  | 814 | K |
| C.KP.EW.1290 |  | LCSS Building | 30d | 2024-10-26 A | 2026-02-05 A | DE.KP.GE.1040 SS+45d, IA.1150, DE.KP.LCSS.1020 SS+310d | 100% | 2024-10-25 | 2024-11-30 |  |  | 832 | K |
| C.KP.EW.1310 |  | Zone 1 - Area Grading | 30d | 2024-11-04 A | 2025-04-25 A | DE.KP.GE.1040 | 100% | 2024-12-16 | 2025-01-22 |  |  | 804 | K |
| C.KP.EW.1070 |  | Transfer house 3 | 5d | 2024-11-11 A | 2024-11-15 A | DE.KP.GE.1040 SS+45d, IA.1150 FS+70d | 100% |  |  |  |  | 810 | K |
| C.KP.EW.1210 |  | Process Water Storage Tank | 20d | 2024-12-11 A | 2025-06-25 A | DE.KP.GE.1040 SS+45d, IA.1150 | 100% | 2025-03-05 | 2025-03-29 |  |  | 824 | K |
| C.KP.EW.1130 |  | Conveyor 806 (A,B,C&D) | 10d | 2024-12-16 A | 2024-12-27 A | DE.KP.GE.1040 SS+45d, IA.1150 | 100% | 2025-02-24 | 2025-03-06 |  |  | 816 | K |
| C.KP.EW.1260 |  | Plant Office Building | 20d | 2024-12-18 A | 2024-12-28 A | DE.KP.GE.1040 SS+45d, IA.1140, IA.1150 | 100% | 2025-06-03 | 2025-06-25 |  |  | 829 | K |
| C.KP.EW.1140 |  | Conveyor 809, 812 & 813 | 60d | 2024-12-28 A | 2025-01-09 A | DE.KP.GE.1040 SS+195d, IA.1150 | 100% | 2026-01-19 | 2026-04-02 |  |  | 817 | K |
| C.KP.EW.1250 |  | Tailing Thickner | 20d | 2025-01-07 A | 2025-06-15 A | DE.KP.GE.1040 SS+45d, IA.1150 | 100% | 2025-07-02 | 2025-07-24 |  |  | 828 | K |
| C.KP.EW.1090 |  | Transfer House 5 | 15d | 2025-02-05 A | 2025-02-25 A | DE.KP.GE.1040 SS+159d, IA.1150 | 100% | 2025-03-25 | 2025-04-10 |  |  | 812 | K |
| C.KP.EW.1120 |  | Drive House | 10d | 2025-02-15 A | 2025-02-26 A | DE.KP.GE.1040 SS+159d, IA.1150 | 100% | 2025-10-25 | 2025-11-06 |  |  | 815 | K |
| C.KP.EW.1280 |  | Security Check Post | 10d | 2025-03-18 A | 2025-03-28 A | DE.KP.GE.1040 SS+184d, IA.1150, DE.MISC,1050 SS+330d | 100% | 2026-02-04 | 2026-02-16 |  |  | 831 | K |
| C.KP.EW.1040 |  | Classifier & Hydrocyclone | 40d | 2025-05-26 A | 2025-12-17 A | DE.KP.S&C.1030 SS+310d, DE.KP.GE.1040 SS+220d, IA.1140, IA.1150 | 100% | 2025-06-25 | 2025-08-11 |  |  | 807 | K |
| C.KP.EW.1270 |  | Outdoor ablution block | 10d | 2025-06-05 A | 2025-06-12 A | DE.KP.GE.1040 SS, IA.1140, IA.1150, DE.MISC,1050 SS+330d | 100% | 2026-02-04 | 2026-02-16 |  |  | 830 | K |
| C.KP.EW.1220 |  | Maintanance workshop | 20d | 2025-06-28 A | 2025-07-17 A | DE.KP.GE.1040 SS+224d, IA.1140, IA.1150 | 100% | 2025-07-25 | 2025-08-20 |  |  | 825 | K |
| C.KP.EW.1170 |  | Conveyor 829 | 15d | 2025-07-19 A | 2025-10-25 A | DE.KP.GE.1040 SS+183d, IA.1150, DE.KP.C.1030 SS | 100% | 2025-10-25 | 2025-11-12 |  |  | 820 | K |
| C.KP.EW.1050 |  | HBF Building | 30d | 2025-08-06 A | 2026-01-02 A | DE.KP.HBF.1030 SS+1d, DE.KP.GE.1040 SS+254d, IA.1140, IA.1150 | 100% | 2025-09-25 | 2025-10-31 |  |  | 808 | K |
| C.KP.EW.1030 |  | Screen Building | 40d | 2025-08-23 A | 2026-01-06 A | DE.KP.S&C.1030 SS, DE.KP.GE.1040 SS+174d, IA.1150 | 100% | 2025-08-29 | 2025-10-17 |  |  | 806 | K |
| C.KP.EW.1060 |  | Tertiary Crusher Builiding | 25d | 2025-09-01 A | 2025-10-25 A | DE.KP.TC.1040 SS+150d, DE.KP.GE.1040 SS, IA.1150, C.KP.EW.1310 SS | 100% | 2025-09-25 | 2025-10-25 |  |  | 809 | K |
| C.KP.EW.1300 |  | Thickner Overflow Tank | 10d | 2025-10-10 A | 2025-10-20 A | DE.KP.GE.1040 SS+254d, C.KP.EW.1250 FF+15d, IA.1150 | 100% | 2025-10-25 | 2025-11-06 |  |  | 833 | K |
| C.KP.EW.1100 |  | Transfer House 6 | 15d | 2025-10-15 A | 2026-01-30 A | DE.KP.GE.1040 SS+189d, IA.1150, DE.KP.TH6.1030 SS | 100% | 2025-10-25 | 2025-11-12 |  |  | 813 | K |
| C.KP.EW.1160 |  | Conveyor 823 | 50d | 2025-11-27 A | 2025-12-16 A | DE.KP.GE.1040 SS+153d, IA.1150, DE.KP.C.1030 SS+275d | 100% | 2026-01-19 | 2026-03-20 |  |  | 819 | K |
| C.KP.EW.1150 |  | Conveyor 810 | 10d | 2025-12-01 A | 2025-12-16 A | DE.KP.GE.1040 SS+186d, IA.1150, DE.KP.C.1030 SS+295d | 100% | 2026-01-19 | 2026-01-30 |  |  | 818 | K |
| C.KP.EW.1080 |  | Transfer House 4 | 40d | 2026-01-02 A | 2026-02-06 A | DE.KP.GE.1040 SS+208d, IA.1150, DE.KP.TH4.1060 SS+250d | 100% | 2026-01-19 | 2026-03-07 |  |  | 811 | K |
| C.KP.EW.1190 |  | DFDS Pump cum Central Compressor House | 30d | 2026-01-05 A | 2026-01-12 A | DE.KP.DFDS.1030 SS+220d, DE.KP.GE.1040 SS+216d, IA.1150 | 100% | 2026-01-19 | 2026-02-23 |  |  | 822 | K |
| C.KP.EW.1200 |  | Fire Fighting Pump House | 30d | 2026-01-06 A | 2026-02-05 A | DE.KP.GE.1040 SS+200d, DE.MISC,1050 SS+300d | 100% | 2026-01-19 | 2026-02-23 |  |  | 823 | K |
| C.KP.EW.1320 |  | Excavation Complete | 5d | 2026-01-16 A | 2026-03-15 A | C.KP.EW.1220, C.KP.EW.1300, C.KP.EW.1010, C.KP.EW.1020, C.KP.EW.1030, C.KP.EW.1040, C.KP.EW.1050, C.KP.EW.1060, C.KP.EW.1070, C.KP.EW.1080, C.KP.EW.1090, C.KP.EW.1100, C.KP.EW.1110, C.KP.EW.1120, C.KP.EW.1130, C.KP.EW.1140, C.KP.EW.1150, C.KP.EW.1160, C.KP.EW.1170, C.KP.EW.1180, C.KP.EW.1190, C.KP.EW.1200, C.KP.EW.1210, C.KP.EW.1230, C.KP.EW.1240, C.KP.EW.1250, C.KP.EW.1260, C.KP.EW.1270, C.KP.EW.1280, C.KP.EW.1290, C.KP.EW.1310 | 100% | 2026-04-14 | 2026-04-18 |  |  | 679 | K |
| C.KP.EW.1180 |  | Conveyor 832 | 20d | 2026-01-24 A | 2026-02-05 A | DE.KP.GE.1040 SS+178d, IA.1150, DE.KP.C.1030 SS+310d | 100% | 2026-02-05 | 2026-02-27 |  |  | 821 | K |
| C.KP.EW.1230 |  | Cooling water system pumping station | 20d | 2026-02-05 A | 2026-03-15 A | DE.MISC,1050 SS+330d, DE.KP.GE.1040 SS+209d, IA.1150 | 100% | 2026-02-05 | 2026-02-27 |  |  | 826 | K |
| C.KP.EW.1240 |  | Pumping Station at Tailing Dam | 25d | 2026-08-06 | 2026-09-04 | DE.KP.PSTD.1020 FS+15d, DE.KP.GE.1040 SS+194d, IA.1150 |  |  |  | -83d | 0d | 827 | K |

Notes:
- C.KP.EW.1120: Changes: ? / Not Applicable

| ID | WBS | Activity | Duration | Start | Finish | Predecessors | Complete | Remaining | Planned start | Planned finish | Total float | Free float | MSP Activity ID | Responsibility |
| --- | --- | --- | --- | --- | --- | --- | --- | --- | --- | --- | --- | --- | --- | --- |
|  | KP.RW | **Road Works** |  | 2025-02-24 | 2026-09-10 |  |  |  |  |  |  |  |  |  |
|  | CW | **Civil works** |  | 2025-02-24 | 2026-09-08 |  |  |  |  |  |  |  |  |  |
| C.KP.RW.CW.1010 |  | Cutting & Backfill | 150d | 2025-02-24 A | 2026-04-13 | C.KP.EW.1010 | 85% | 23d | 2025-09-06 | 2026-03-10 | -14d | 0d | 837 | K |
| C.KP.RW.CW.1020 |  | Sub base Preparation | 90d | 2026-03-16 | 2026-07-01 | C.KP.RW.CW.1010 SS+10d |  |  |  |  | -14d | 0d | 836 | K |
| C.KP.RW.CW.1030 |  | Services Foundations | 50d | 2026-07-02 | 2026-08-29 | C.KP.RW.CW.1020, MA1040 FS+30d, MA1070 FS+30d |  |  |  |  | -14d | 0d | 838 | K |
| C.KP.RW.CW.1040 |  | Top Layer | 50d | 2026-07-11 | 2026-09-08 | C.KP.RW.CW.1020, C.KP.RW.CW.1030 SS+8d |  |  |  |  | -12d | 68d | 716 | K |
|  | MEP | **MEP works** |  | 2026-07-20 | 2026-09-10 |  |  |  |  |  |  |  |  |  |
| C.KP.RW.MEP.1010 |  | Erection (Light Poles) | 45d | 2026-07-20 | 2026-09-10 | C.KP.RW.CW.1030 SS+15d, DE.MISC,1060 SS+120d |  |  |  |  | -14d | 0d | 840 | K |
| C.KP.RW.MEP.1020 |  | Commissioning | 30d | 2026-08-06 | 2026-09-10 | C.KP.RW.MEP.1010 SS+15d |  |  |  |  | -14d | 65d | 744 | K |
|  | KP.SB | **Silo Building** |  | 2024-12-14 | 2026-08-18 |  |  |  |  |  |  |  |  |  |
|  | CVRCC | **Civil/RCC Works** |  | 2024-12-14 | 2026-06-01 |  |  |  |  |  |  |  |  |  |
| C.KP.SB.CVRCC.1020 |  | Foundation | 45d | 2024-12-14 A | 2025-01-31 A | C.KP.EW.1020, DE.KP.SB.1030 SS+60d, C.KP.EW.1010 SS+109d, MA1040 FS+30d, MA1070 FS+30d | 100% |  | 2025-02-18 | 2025-04-12 |  |  | 843 | K |
| C.KP.SB.CVRCC.1030 |  | Walls L1 up to EL 717.25 | 20d | 2025-01-22 A | 2025-04-14 A | C.KP.SB.CVRCC.1020 | 100% |  | 2025-02-26 | 2025-03-22 |  |  | 844 | K |
| C.KP.SB.CVRCC.1040 |  | Walls L2 up from EL 717.25 to EL 722.25 | 20d | 2025-04-24 A | 2025-05-21 A | C.KP.SB.CVRCC.1030 | 100% |  | 2025-05-16 | 2025-06-07 |  |  | 845 | K |
| C.KP.SB.CVRCC.1050 |  | Slab @ EL 722.25 | 10d | 2025-06-02 A | 2025-06-21 A | C.KP.SB.CVRCC.1040 | 100% |  | 2025-06-25 | 2025-07-05 |  |  | 846 | K |
| C.KP.SB.CVRCC.1060 |  | Walls L3 up from EL 722.25 to EL 738.25 | 50d | 2025-06-22 A | 2025-11-25 A | C.KP.SB.CVRCC.1050 | 100% |  | 2025-07-07 | 2025-09-05 |  |  | 847 | K |
| C.KP.SB.CVRCC.1100 |  | Hopper Wall - Base to Tie Beams | 20d | 2025-10-06 A | 2025-10-10 A | C.KP.SB.CVRCC.1050 FS+150d | 100% |  | 2026-01-19 | 2026-02-11 |  |  | 851 | K |
| C.KP.SB.CVRCC.1110 |  | Hopper Wall - Tie Beams | 10d | 2025-10-06 A | 2025-10-10 A | C.KP.SB.CVRCC.1100, C.KP.SB.CVRCC.1070 FS+40d | 100% |  | 2026-01-27 | 2026-02-06 |  |  | 852 | K |
| C.KP.SB.CVRCC.1070 |  | Slab @ EL 738.25 | 0d | 2025-11-26 A | 2025-12-06 A | C.KP.SB.CVRCC.1060 | 100% |  | 2026-01-21 | 2026-01-21 |  |  | 848 | K |
| C.KP.SB.CVRCC.1080 |  | Walls L4 up from EL 738.25 to EL 762.25 | 90d | 2025-12-23 A | 2026-05-20 | C.KP.SB.CVRCC.1070 | 40% | 54d | 2025-12-26 | 2026-04-16 | -31d | 0d | 849 | K |
| C.KP.SB.CVRCC.1120 |  | Hopper Wall - Tie Beams to EL 739.25 | 35d | 2026-03-05 A | 2026-05-15 | C.KP.SB.CVRCC.1110 FS+7d | 15% | 50d | 2026-03-16 | 2026-04-27 | 6d | 0d | 685 | K |
| C.KP.SB.CVRCC.1090 |  | Slab @ EL 762.25 | 10d | 2026-05-21 | 2026-06-01 | C.KP.SB.CVRCC.1080 |  |  |  |  | -31d | 8d | 850 | K |
|  | SSW | **Structural Steel Works** |  | 2025-12-20 | 2026-08-11 |  |  |  |  |  |  |  |  |  |
| C.KP.SB.SSW.1010 |  | Columns from EL 717.25 to EL 762.25 | 80d | 2025-12-20 A | 2026-04-15 | DE.KP.SB.1020 SS+10d, P.KP.SS.1030 SS, C.KP.SB.CVRCC.1020 | 25% | 25d | 2026-01-19 | 2026-04-25 | -39d | 0d | 854 | K |
| C.KP.SB.SSW.1020 |  | Stair case from EL 717.25 to EL 762.25 | 40d | 2026-03-16 | 2026-05-02 | C.KP.SB.SSW.1010 SS |  |  |  |  | -39d | 0d | 855 | K |
| C.KP.SB.SSW.1030 |  | Platform @ 762.25 M | 15d | 2026-06-20 | 2026-07-07 | C.KP.SB.SSW.1010, C.KP.SB.CVRCC.1090 FS+8d, C.KP.SB.SSW.1020 FS+40d |  |  |  |  | -39d | 0d | 856 | K |
| C.KP.SB.SSW.1040 |  | Columns Above EL 762.25 up to Truss | 10d | 2026-07-08 | 2026-07-18 | C.KP.SB.SSW.1030 |  |  |  |  | -39d | 0d | 857 | K |
| C.KP.SB.SSW.1050 |  | Truss with mono rail | 10d | 2026-07-20 | 2026-07-30 | C.KP.SB.SSW.1040, C.KP.SB.MEE.1040 |  |  |  |  | -39d | 0d | 858 | K |
| C.KP.SB.SSW.1070 |  | Sheeting in Cladding | 10d | 2026-07-28 | 2026-08-07 | C.KP.SB.SSW.1050 FF+7d |  |  |  |  | -36d | 3d | 861 | K |
| C.KP.SB.SSW.1060 |  | Sheeting in Roof | 10d | 2026-07-31 | 2026-08-11 | C.KP.SB.SSW.1050 |  |  |  |  | -39d | 0d | 860 | K |

| ID | WBS | Activity | Duration | Start | Finish | Predecessors | Complete | Remaining | Planned start | Planned finish | Total float | Free float | MSP Activity ID | Responsibility |
| --- | --- | --- | --- | --- | --- | --- | --- | --- | --- | --- | --- | --- | --- | --- |
|  | MEE | **Mechanical/Equipment Erection** |  | 2026-05-16 | 2026-08-18 |  |  |  |  |  |  |  |  |  |
| C.KP.SB.MEE.1020 |  | Apron Feeder (EN 805A - D) | 45d | 2026-05-16 | 2026-07-07 | P.TM.AF.1050, C.KP.SB.CVRCC.1120 |  |  |  |  | 11d | 50d | 864 | K |
| C.KP.SB.MEE.1050 |  | Liner (Mn Steel) | 55d | 2026-05-16 | 2026-07-18 | C.KP.SB.CVRCC.1120, P.KP.L(MN).1050 SS+60d |  |  |  |  | 6d | 45d | 866 | K |
| C.KP.SB.MEE.1040 |  | Travelling tripper (EN 802) | 35d | 2026-06-05 | 2026-07-15 | P.HT.TT.1050, C.KP.SB.SSW.1030 FF+7d, DE.KP.SB.1040 FS+15d |  |  |  |  | -36d | 3d | 859 | K |
| C.KP.SB.MEE.1010 |  | Installation of Elevator | 30d | 2026-07-14 | 2026-08-18 | P.KP.EL.1050, C.KP.SB.SSW.1070 FF+5d, C.KP.SB.SSW.1060 FF+5d |  |  |  |  | -39d | 0d | 863 | K |
| C.KP.SB.MEE.1030 |  | Electric hoist (Silo building) (EN 803) | 10d | 2026-07-31 | 2026-08-11 | P.KP.H.1050, C.KP.SB.SSW.1050 |  |  |  |  | -39d | 0d | 865 | K |
|  | EI | **E&I Works** |  | 2026-07-13 | 2026-08-11 |  |  |  |  |  |  |  |  |  |
| C.KP.SB.EI.1020 |  | Calibration of Equipments | 15d | 2026-07-13 | 2026-07-29 | P.KP.IN.1050 FS+20d |  |  |  |  | -28d | 11d | 869 | K |
| C.KP.SB.EI.1010 |  | E&I works - Silo | 25d | 2026-07-14 | 2026-08-11 | C.KP.SB.MEE.1040 SS, C.KP.SB.MEE.1030 FF, C.KP.SB.MEE.1020 SS, C.KP.SB.MEE.1010 SS, DE.KP.SB.1040 FS+50d, C.KP.SB.EI.1020 FF, MS7 - Erec.Mech.PESt SS, MS8 - Erec.Electr.St SS, MSI5 - Erec.Inst.St. SS |  |  |  |  | -39d | 0d | 734 | K |
|  | KP.SC | **Screen Building** |  | 2025-08-20 | 2026-09-26 |  |  |  |  |  |  |  |  |  |
|  | CVRCC | **Civil/RCC Works** |  | 2025-08-20 | 2026-08-20 |  |  |  |  |  |  |  |  |  |
| C.KP.SC.CVRCC.1040 |  | Retaining wall | 20d | 2025-08-20 A | 2025-09-15 A | C.KP.SC.CVRCC.1030 | 100% |  | 2026-01-31 | 2026-02-23 |  |  | 873 | K |
| C.KP.SC.CVRCC.1030 |  | Foundation | 25d | 2025-08-23 A | 2026-03-28 | C.KP.EW.1030 SS+10d, MA1040 FS+30d, MA1070 FS+30d | 95% | 10d | 2025-11-27 | 2025-12-27 | -71d | 0d | 872 | K |
| C.KP.SC.CVRCC.1050 |  | Pedestals & Tie Beams | 20d | 2025-10-25 A | 2026-04-04 | C.KP.SC.CVRCC.1040, C.KP.SC.CVRCC.1030 | 85% | 6d | 2026-01-27 | 2026-02-18 | -71d | 0d | 874 | K |
| C.KP.SC.CVRCC.1070 |  | Back filling | 30d | 2026-01-01 A | 2026-05-02 | C.KP.SC.CVRCC.1050 FS+14d, C.KP.SC.CVRCC.1040 | 67% | 10d | 2026-03-23 | 2026-04-27 | -20d | 0d | 876 | K |
| C.KP.SC.CVRCC.1080 |  | Deck Slab Conc. @ EL 704.7 | 5d | 2026-05-15 | 2026-05-21 | C.KP.SC.SSW.1020 FS+10d, DE.KP.S&C.1010 |  |  |  |  | -4.8d | 9d | 877 | K |
| C.KP.SC.CVRCC.1060 |  | Trench from EL 700.2 to EL 697.2 | 30d | 2026-05-22 | 2026-06-25 | C.KP.SC.CVRCC.1070 FS+15d, C.KP.SC.CVRCC.1050, C.KP.SC.CVRCC.1030 |  |  |  |  | -5d | 40.8d | 875 | K |
| C.KP.SC.CVRCC.1090 |  | Deck Slab Conc. @ EL 708 | 3d | 2026-06-01 | 2026-06-04 | DE.KP.S&C.1030, C.KP.SC.SSW.1040 FS+10d, C.KP.SC.CVRCC.1080, DE.KP.S&C.1010 |  |  |  |  | -13.8d | 7d | 879 | K |
| C.KP.SC.CVRCC.1100 |  | Deck Slab Conc. @ EL 709 | 5d | 2026-06-12 | 2026-06-18 | C.KP.SC.SSW.1050 FS+10d, C.KP.SC.CVRCC.1090, DE.KP.S&C.1010 |  |  |  |  | -20.8d | 14d | 881 | K |
| C.KP.SC.CVRCC.1110 |  | Deck Slab Conc. @ EL 711 | 3d | 2026-07-04 | 2026-07-08 | C.KP.SC.SSW.1070 FS+7d, C.KP.SC.CVRCC.1100, DE.KP.S&C.1010 |  |  |  |  | -34.8d | 0d | 883 | K |
| C.KP.SC.CVRCC.1120 |  | Deck Slab Conc. @ EL 714 | 6d | 2026-07-08 | 2026-07-15 | C.KP.SC.SSW.1080 FS+7d, C.KP.SC.CVRCC.1110, DE.KP.S&C.1010 |  |  |  |  | -34.8d | 0d | 885 | K |
| C.KP.SC.CVRCC.1130 |  | Deck Slab Conc. @ EL 718 | 6d | 2026-07-15 | 2026-07-22 | C.KP.SC.SSW.1100 FS+7d, C.KP.SC.CVRCC.1120, DE.KP.S&C.1010 |  |  |  |  | -34.8d | 11d | 887 | K |
| C.KP.SC.CVRCC.1140 |  | Deck Slab Conc. @ EL 723.2 | 3d | 2026-08-04 | 2026-08-07 | C.KP.SC.SSW.1120 FS+7d, C.KP.SC.CVRCC.1130, DE.KP.S&C.1010 |  |  |  |  | -45.8d | 0d | 889 | K |
| C.KP.SC.CVRCC.1150 |  | Flooring @ EL 697.2 & 762.25 | 6d | 2026-08-12 | 2026-08-20 | C.KP.SC.CVRCC.1060, C.KP.SC.CVRCC.1070 FS+60d, C.KP.SC.CVRCC.1140 FF+10d, C.KP.SC.CVRCC.1140 |  |  |  |  | -45.8d | 34.2d | 687 | K |

| ID | WBS | Activity | Duration | Start | Finish | Predecessors | Complete | Remaining | Planned start | Planned finish | Total float | Free float | MSP Activity ID | Responsibility |
| --- | --- | --- | --- | --- | --- | --- | --- | --- | --- | --- | --- | --- | --- | --- |
|  | SSW | **Structural Steel Works** |  | 2025-12-17 | 2026-09-21 |  |  |  |  |  |  |  |  |  |
| C.KP.SC.SSW.1010 |  | Columns up to EL 704.7 | 40d | 2025-12-17 A | 2026-04-24 | C.KP.SC.CVRCC.1050 FF+10d, DE.KP.S&C.1020, P.KP.SS.1030 SS | 18% | 32.8d | 2026-02-05 | 2026-03-27 | -77.8d | 0d | 893 | K |
| C.KP.SC.SSW.1030 |  | Columns from EL 704.7 to EL 709 | 11d | 2025-12-23 A | 2026-05-12 | C.KP.SC.SSW.1010, C.KP.SC.SSW.1020 FF+7d | 57% | 4.73d | 2026-05-05 | 2026-05-18 | -77.8d | 0d | 894 | K |
| C.KP.SC.SSW.1020 |  | Beams & Decking @ EL 704.7 | 11d | 2026-04-20 | 2026-05-02 | C.KP.SC.SSW.1010 FF+7d |  |  |  |  | -77.8d | 0d | 878 | K |
| C.KP.SC.SSW.1040 |  | Beams & Decking @ EL 708 | 11d | 2026-05-06 | 2026-05-20 | C.KP.SC.SSW.1030 FF+7d |  |  |  |  | -77.8d | 0d | 880 | K |
| C.KP.SC.SSW.1050 |  | Beams & Decking @ EL 709 | 14d | 2026-05-15 | 2026-06-01 | C.KP.SC.SSW.1040 FF+10d |  |  |  |  | -77.8d | 0d | 882 | K |
| C.KP.SC.SSW.1060 |  | Columns from EL 709 to EL 714 | 11d | 2026-05-27 | 2026-06-09 | C.KP.SC.SSW.1030, C.KP.SC.SSW.1050 FF+7d |  |  |  |  | -77.8d | 0d | 895 | K |
| C.KP.SC.SSW.1080 |  | Beams & Decking @ EL 714 | 11d | 2026-06-04 | 2026-06-17 | C.KP.SC.SSW.1060 FF+7d |  |  |  |  | -77.8d | 0d | 886 | K |
| C.KP.SC.SSW.1090 |  | Columns from EL 714 to EL 718 | 11d | 2026-06-12 | 2026-06-25 | C.KP.SC.SSW.1060, C.KP.SC.SSW.1080 FF+7d |  |  |  |  | -77.8d | 0d | 896 | K |
| C.KP.SC.SSW.1070 |  | Beams & Decking @ EL 711 | 11d | 2026-06-13 | 2026-06-26 | C.KP.SC.SSW.1060 FF+15d |  |  |  |  | -34.8d | 0d | 884 | K |
| C.KP.SC.SSW.1100 |  | Beams & Decking @ EL 718 | 14d | 2026-06-20 | 2026-07-07 | C.KP.SC.SSW.1090 FF+10d |  |  |  |  | -77.8d | 0d | 888 | K |
| C.KP.SC.SSW.1110 |  | Columns from EL 718 to EL 723.2 | 11d | 2026-07-02 | 2026-07-15 | C.KP.SC.SSW.1090, C.KP.SC.SSW.1100 FF+7d |  |  |  |  | -77.8d | 0d | 897 | K |
| C.KP.SC.SSW.1120 |  | Beams & Decking @ EL 723.2 | 14d | 2026-07-10 | 2026-07-27 | C.KP.SC.SSW.1110 FF+10d |  |  |  |  | -77.8d | 0d | 890 | K |
| C.KP.SC.SSW.1130 |  | Columns from EL 723.2 to EL 733.3 | 11d | 2026-07-22 | 2026-08-04 | C.KP.SC.SSW.1110 FF, C.KP.SC.SSW.1120 FF+7d |  |  |  |  | -77.8d | 0d | 898 | K |
| C.KP.SC.SSW.1140 |  | Platform @ EL 726.45 | 14d | 2026-07-27 | 2026-08-12 | C.KP.SC.SSW.1130 FF+7d |  |  |  |  | -58.8d | 0d | 899 | K |
| C.KP.SC.SSW.1170 |  | Columns Above EL 733.3 up to Truss | 11d | 2026-08-03 | 2026-08-17 | C.KP.SC.SSW.1130 FF+10d |  |  |  |  | -77.8d | 0d | 902 | K |
| C.KP.SC.SSW.1150 |  | EOT Crane - Railing & Beams @ EL 733.3 | 14d | 2026-08-04 | 2026-08-21 | C.KP.SC.SSW.1140 FF+7d |  |  |  |  | -58.8d | 0d | 900 | K |
| C.KP.SC.SSW.1190 |  | Hand rails in all levels | 30d | 2026-08-10 | 2026-09-15 | C.KP.SC.SSW.1170 FF+5d, C.KP.SC.SSW.1030, C.KP.SC.SSW.1180 FF+10d |  |  |  |  | -72.8d | 0d | 761 | K |
| C.KP.SC.SSW.1180 |  | Truss @ Roof level | 11d | 2026-08-21 | 2026-09-03 | C.KP.SC.SSW.1170 FF+15d |  |  |  |  | -77.8d | 0d | 903 | K |
| C.KP.SC.SSW.1160 |  | EOT Crane - Platform @ EL 733.3 | 14d | 2026-08-29 | 2026-09-15 | C.KP.SC.SSW.1150 FS+7d |  |  |  |  | -17.8d | 65.2d | 901 | K |
| C.KP.SC.SSW.1200 |  | Stair case 1 | 15d | 2026-09-03 | 2026-09-21 | C.KP.SC.SSW.1030, C.KP.SC.SSW.1190 FF+5d, C.KP.SC.SSW.1170 |  |  |  |  | -72.8d | 0d | 762 | K |
| C.KP.SC.SSW.1210 |  | Stair case 2 | 15d | 2026-09-03 | 2026-09-21 | C.KP.SC.SSW.1030, C.KP.SC.SSW.1190 FF+5d, C.KP.SC.SSW.1170 |  |  |  |  | -72.8d | 0d | 783 | K |
| C.KP.SC.SSW.1220 |  | Sheeting in Roof | 10d | 2026-09-03 | 2026-09-15 | C.KP.SC.SSW.1180 |  |  |  |  | -77.8d | 0d | 891 | K |
| C.KP.SC.SSW.1230 |  | Sheeting in Cladding | 15d | 2026-09-03 | 2026-09-21 | C.KP.SC.SSW.1120, C.KP.SC.SSW.1180 FF+15d |  |  |  |  | -22.8d | 45d | 774 | K |

| ID | WBS | Activity | Duration | Start | Finish | Predecessors | Complete | Remaining | Planned start | Planned finish | Total float | Free float | MSP Activity ID | Responsibility |
| --- | --- | --- | --- | --- | --- | --- | --- | --- | --- | --- | --- | --- | --- | --- |
|  | MEE | **Mechanical/Equipment Erection** |  | 2026-07-24 | 2026-09-23 |  |  |  |  |  |  |  |  |  |
| C.KP.SC.MEE.1050 |  | EOT crane (EN815) | 30d | 2026-07-24 | 2026-08-29 | P.KP.EOT.1050, C.KP.SC.SSW.1150 FF+7d |  |  |  |  | -58.8d | 19d | 912 | K |
| C.KP.SC.MEE.1010 |  | Installation of Elevator | 30d | 2026-08-17 | 2026-09-21 | C.KP.SC.SSW.1210 FF, C.KP.SC.SSW.1200 FF, P.KP.EL.1050 |  |  |  |  | -72.8d | 5d | 905 | K |
| C.KP.SC.MEE.1020 |  | Inlet and outlet chute of Primary Screen | 20d | 2026-08-17 | 2026-09-09 | P.TM.PS.1050 FS+165d, C.KP.SC.MEE.1060 SS |  |  |  |  | -77.8d | 0d | 906 | K |
| C.KP.SC.MEE.1030 |  | Inlet and outlet chute of Secondary Screen | 20d | 2026-08-17 | 2026-09-09 | P.TM.SS.1050 FS+110d, C.KP.SC.MEE.1080 SS |  |  |  |  | -77.8d | 0d | 908 | K |
| C.KP.SC.MEE.1040 |  | Inlet and outlet chute of Tertiary Screen | 15d | 2026-08-17 | 2026-09-03 | P.TM.TS.1050 FS+75d, C.KP.SC.MEE.1090 SS |  |  |  |  | -77.8d | 0d | 910 | K |
| C.KP.SC.MEE.1060 |  | Primary Vibrating Screen A, B, C & D (EN808) | 30d | 2026-08-17 | 2026-09-21 | P.TM.PS.1050 FS+165d, C.KP.SC.SSW.1170 |  |  |  |  | -77.8d | 0d | 907 | K |
| C.KP.SC.MEE.1080 |  | Secondary Vibrating Screen A, B, C & D (EN811) | 30d | 2026-08-17 | 2026-09-21 | P.TM.SS.1050 FS+110d, C.KP.SC.SSW.1170 |  |  |  |  | -77.8d | 0d | 909 | K |
| C.KP.SC.MEE.1090 |  | Tertiary Vibrating Screen A & B (EN824) | 15d | 2026-08-17 | 2026-09-03 | P.TM.TS.1050 FS+75d, C.KP.SC.SSW.1170 |  |  |  |  | -77.8d | 0d | 911 | K |
| C.KP.SC.MEE.1100 |  | Prism Gate | 5d | 2026-08-17 | 2026-08-22 | P.KP.PG.1050 FS+100d, C.KP.SC.MEE.1110 SS |  |  |  |  | -77.8d | 0d | 914 | K |
| C.KP.SC.MEE.1110 |  | Conveyor Components | 25d | 2026-08-17 | 2026-09-15 | C.KP.SC.SSW.1180 FF+10d, P.HT.PB.1050 SS+60d, P.HT.B.1050 SS+10d, P.HT.M.1050 SS+25d, P.HT.BT.1050, P.HT.GB.1050, P.HT.LSC.1050, P.HT.HSC.1050, P.HT.BK.1050, P.HT.ID.1050 SS+35d, P.HT.P.1050 SS+35d, P.HT.SC.1050 SS+15d |  |  |  |  | -77.8d | 0d | 915 | K |
| C.KP.SC.MEE.1120 |  | Sampler | 20d | 2026-08-31 | 2026-09-23 | P.KP.S.1050, C.KP.SC.MEE.1110 FF+7d |  |  |  |  | -74.8d | 3d | 916 | K |
| C.KP.SC.MEE.1070 |  | Make Up Water Pump ( EN 865 A & B) | 15d | 2026-09-03 | 2026-09-21 | P.KP.MWP.1050, C.KP.SC.SSW.1220 FF+5d |  |  |  |  | -77.8d | 0d | 913 | K |
| C.KP.SC.MEE.1130 |  | Hoist | 5d | 2026-09-03 | 2026-09-09 | P.KP.H.1050, C.KP.SC.SSW.1180 |  |  |  |  | -67.8d | 10d | 917 | K |
|  | EI | **E&I Works** |  | 2026-07-24 | 2026-09-26 |  |  |  |  |  |  |  |  |  |
| KP.SC.EI.1020 |  | Calibration of Equipments | 20d | 2026-07-24 | 2026-08-17 | P.KP.IN.1050 FS+30d |  |  |  |  | -43d | 34.8d | 919 | K |
| KP.SC.EI.1010 |  | E&I works - Screen Building | 35d | 2026-08-17 | 2026-09-26 | C.KP.SC.MEE.1130 FF+5d, C.KP.SC.MEE.1120 FF, C.KP.SC.MEE.1110 SS, C.KP.SC.MEE.1100 SS, C.KP.SC.MEE.1090 SS, C.KP.SC.MEE.1080 SS, C.KP.SC.MEE.1070 FF+5d, C.KP.SC.MEE.1060 SS, C.KP.SC.MEE.1050 FF+5d, C.KP.SC.MEE.1040 SS, C.KP.SC.MEE.1030 SS, C.KP.SC.MEE.1020 SS, C.KP.SC.MEE.1010 FF, DE.KP.S&C.1040 SS+70d, KP.SC.EI.1020 FF, MS7 - Erec.Mech.PESt SS, MS8 - Erec.Electr.St SS, MSI5 - Erec.Inst.St. SS |  |  |  |  | -77.8d | 0d | 754 | K |
|  | KP.CHB | **Classifier & Hydrocyclone Building** |  | 2025-06-20 | 2026-08-22 |  |  |  |  |  |  |  |  |  |
|  | CVRCC | **Civil/RCC Works** |  | 2025-06-20 | 2026-07-17 |  |  |  |  |  |  |  |  |  |
| C.KP.CB.CVRCC.1030 |  | Foundation | 20d | 2025-06-20 A | 2025-12-11 A | C.KP.EW.1040, MA1040 FS+30d, MA1070 FS+30d | 100% |  | 2025-07-28 | 2025-08-22 |  |  | 922 | K |
| C.KP.CB.CVRCC.1040 |  | Retaining wall | 20d | 2025-06-20 A | 2025-07-09 A | C.KP.CB.CVRCC.1030 | 100% |  | 2025-08-28 | 2025-09-20 |  |  | 923 | K |
| C.KP.CB.CVRCC.1050 |  | Pedestals & Tie Beams | 15d | 2025-07-14 A | 2026-01-17 A | C.KP.CB.CVRCC.1040 | 100% |  | 2025-11-04 | 2025-11-20 |  |  | 924 | K |
| C.KP.CB.CVRCC.1060 |  | Back filling | 30d | 2025-08-12 A | 2026-01-19 A | C.KP.CB.CVRCC.1050 | 100% |  | 2025-11-05 | 2025-12-10 |  |  | 925 | K |
| C.KP.CB.CVRCC.1100 |  | Flooring @ EL 688.12 & 695.12 | 15d | 2026-02-03 A | 2026-07-17 | C.KP.CB.SSW.1110, C.KP.CB.CVRCC.1060, C.KP.CB.CVRCC.1090 FS+10d | 50% | 7.5d | 2026-07-31 | 2026-08-18 | -47.5d | 32.5d | 729 | K |
| C.KP.CB.CVRCC.1070 |  | Deck Slab Conc. @ EL 699.37 | 15d | 2026-02-05 A | 2026-04-04 | C.KP.CB.SSW.1020 FS+115d | 50% | 10d | 2026-02-05 | 2026-02-21 | -47.5d | 0d | 926 | K |
| C.KP.CB.CVRCC.1080 |  | Deck Slab Conc. @ EL 708 | 15d | 2026-02-17 A | 2026-05-22 | DE.KP.S&C.1030, C.KP.CB.SSW.1040, C.KP.CB.CVRCC.1070 FS+25d |  | 15d | 2026-05-11 | 2026-05-27 | -47.5d | 0d | 928 | K |
| C.KP.CB.CVRCC.1090 |  | Deck Slab Conc. @ EL 717 | 15d | 2026-06-10 | 2026-06-26 | C.KP.CB.SSW.1060, C.KP.CB.CVRCC.1080 FS+15d |  |  |  |  | -47.5d | 0d | 930 | K |

| ID | WBS | Activity | Duration | Start | Finish | Predecessors | Complete | Remaining | Planned start | Planned finish | Total float | Free float | MSP Activity ID | Responsibility |
| --- | --- | --- | --- | --- | --- | --- | --- | --- | --- | --- | --- | --- | --- | --- |
|  | SSW | **Structural Steel Works** |  | 2025-09-26 | 2026-08-18 |  |  |  |  |  |  |  |  |  |
| C.KP.CB.SSW.1010 |  | Columns up to EL 699.37 | 15d | 2025-09-26 A | 2025-10-15 A | C.KP.CB.CVRCC.1050 FS+15d, DE.KP.S&C.1020, P.KP.SS.1030 SS | 100% |  | 2025-12-11 | 2025-12-30 |  |  | 934 | K |
| C.KP.CB.SSW.1030 |  | Columns from EL 699.37 to EL 708 | 15d | 2025-10-16 A | 2025-11-06 A | C.KP.CB.SSW.1010, C.KP.CB.SSW.1020 FF+10d | 100% |  | 2026-02-03 | 2026-02-20 |  |  | 935 | K |
| C.KP.CB.SSW.1020 |  | Beams & Decking @ EL 699.37 | 15d | 2025-10-17 A | 2025-11-01 A | C.KP.CB.SSW.1010 FF+15d | 100% |  | 2025-12-22 | 2026-01-10 |  |  | 927 | K |
| C.KP.CB.SSW.1040 |  | Beams & Decking @ EL 708 | 15d | 2025-11-08 A | 2025-11-24 A | C.KP.CB.SSW.1030 FF+10d | 100% |  | 2026-02-14 | 2026-03-05 |  |  | 929 | K |
| C.KP.CB.SSW.1050 |  | Columns from EL 708 to EL 717 | 15d | 2025-11-08 A | 2025-11-25 A | C.KP.CB.SSW.1030, C.KP.CB.SSW.1040 FF+10d | 100% |  | 2026-02-26 | 2026-03-17 |  |  | 936 | K |
| C.KP.CB.SSW.1070 |  | Columns from EL 717 to EL 728.6 | 15d | 2025-12-03 A | 2026-01-19 A | C.KP.CB.SSW.1050, C.KP.CB.SSW.1060 FF+15d | 100% |  | 2026-01-19 | 2026-02-06 |  |  | 937 | K |
| C.KP.CB.SSW.1080 |  | EOT Crane - Railing & Beams @ EL 728.6 | 10d | 2025-12-03 A | 2026-03-31 | C.KP.CB.SSW.1070 FS+53d | 60% | 4d | 2026-02-10 | 2026-02-21 | -23.5d | 0d | 938 | K |
| C.KP.CB.SSW.1100 |  | Columns Above EL 728.6 up to Truss | 15d | 2025-12-03 A | 2026-04-15 | C.KP.CB.SSW.1070, C.KP.CB.SSW.1090 | 80% | 3d | 2026-02-26 | 2026-03-17 | -23.5d | 0d | 940 | K |
| C.KP.CB.SSW.1060 |  | Beams & Decking @ EL 717 | 15d | 2025-12-10 A | 2026-01-02 A | C.KP.CB.SSW.1050 | 100% |  | 2026-03-17 | 2026-04-06 |  |  | 931 | K |
| C.KP.CB.SSW.1110 |  | Truss @ Roof level | 15d | 2026-02-21 A | 2026-04-27 | C.KP.CB.SSW.1100 FF+10d | 10% | 13.5d | 2026-03-12 | 2026-03-31 | -23.5d | 0d | 932 | K |
| C.KP.CB.SSW.1090 |  | EOT Crane - Platform @ EL 728.6 | 10d | 2026-03-31 | 2026-04-11 | C.KP.CB.SSW.1080 |  |  |  |  | -23.5d | 0d | 939 | K |
| C.KP.CB.SSW.1150 |  | Sheeting in Roof | 25d | 2026-04-27 | 2026-05-27 | C.KP.CB.SSW.1110 |  |  |  |  | -23.5d | 0d | 941 | K |
| C.KP.CB.SSW.1160 |  | Sheeting in Cladding | 25d | 2026-05-27 | 2026-06-25 | C.KP.CB.SSW.1150 |  |  |  |  | -23.5d | 44.3d | 778 | K |
| C.KP.CB.SSW.1120 |  | Hand rails in all levels | 30d | 2026-06-02 | 2026-07-07 | C.KP.CB.SSW.1030, C.KP.CB.SSW.1110 FS+30d |  |  |  |  | 16.5d | 84.3d | 782 | K |
| C.KP.CB.SSW.1130 |  | Stair case 1 | 15d | 2026-07-30 | 2026-08-18 | C.KP.CB.SSW.1110 FS+80d |  |  |  |  | 6.5d | 74.3d | 780 | K |
| C.KP.CB.SSW.1140 |  | Stair case 2 | 15d | 2026-07-30 | 2026-08-18 | C.KP.CB.SSW.1110 FS+80d |  |  |  |  | 6.5d | 74.3d | 779 | K |
|  | MEE | **Mechanical/Equipment Erection** |  | 2026-03-10 | 2026-06-29 |  |  |  |  |  |  |  |  |  |
| C.KP.CB.MEE.1080 |  | Densifying Cyclone | 20d | 2026-03-10 A | 2026-03-15 A | P.TM.DENC.1050 FS+150d, C.KP.CB.SSW.1100 | 100% |  | 2026-04-07 | 2026-04-29 |  |  | 950 | K |
| C.KP.CB.MEE.1120 |  | EOT Crane | 30d | 2026-03-31 | 2026-05-05 | P.KP.EOT.1050, C.KP.CB.SSW.1080 |  |  |  |  | 29.5d | 77.5d | 954 | K |
| C.KP.CB.MEE.1020 |  | Dewatering Screen | 30d | 2026-04-15 | 2026-05-21 | P.TM.DS.1040, C.KP.CB.SSW.1100 |  |  |  |  | 16.5d | 0d | 944 | K |
| C.KP.CB.MEE.1030 |  | Inlet & Outlet Chute of Dewatering Screen | 20d | 2026-04-15 | 2026-05-08 | P.TM.DS.1050 FS+100d, C.KP.CB.MEE.1020 SS |  |  |  |  | 16.5d | 64.5d | 945 | K |
| C.KP.CB.MEE.1050 |  | Desliming Cyclone | 20d | 2026-04-15 | 2026-05-08 | P.TM.DESC.1050 FS+150d, C.KP.CB.SSW.1100 |  |  |  |  | 16.5d | 0d | 947 | K |
| C.KP.CB.MEE.1060 |  | Desliming Cyclone Feed Pump | 10d | 2026-04-15 | 2026-04-27 | P.TM.DESCFP.1050 FS+125d, C.KP.CB.MEE.1050 SS |  |  |  |  | 16.5d | 64.5d | 948 | K |
| C.KP.CB.MEE.1070 |  | Desliming Cyclone Feed Tank | 10d | 2026-04-15 | 2026-04-27 | P.TM.DESC.1050 FS+150d, P.TM.DESCFP.1050 FS+125d, C.KP.CB.MEE.1050 SS |  |  |  |  | 16.5d | 64.5d | 949 | K |
| C.KP.CB.MEE.1090 |  | Densifying Cyclone Feed Pump | 10d | 2026-04-15 | 2026-04-27 | P.TM.DENCFP.1050 FS+75d, C.KP.CB.MEE.1080 SS |  |  |  |  | 16.5d | 64.5d | 951 | K |
| C.KP.CB.MEE.1100 |  | Densifying Cyclone Feed Tank | 10d | 2026-04-15 | 2026-04-27 | P.TM.DENC.1050 FS+150d, P.TM.DENCFP.1050 FS+75d, C.KP.CB.MEE.1080 SS |  |  |  |  | 16.5d | 64.5d | 952 | K |
| C.KP.CB.MEE.1110 |  | Hoist | 5d | 2026-05-19 | 2026-05-23 | P.KP.H.1050, C.KP.CB.SSW.1110 |  |  |  |  | -11d | 37d | 953 | K |
| C.KP.CB.MEE.1010 |  | Spiral Classifier | 35d | 2026-05-20 | 2026-06-29 | P.TM.SC.1050 FS+7d, C.KP.CB.SSW.1100, P.KP.VFD.1050 SS+10d |  |  |  |  | -12d | 0d | 943 | K |
| C.KP.CB.MEE.1040 |  | Piping, Chute of Spiral Classifier | 10d | 2026-05-20 | 2026-05-30 | P.TM.SC.1050 FS+7d, C.KP.CB.MEE.1010 SS |  |  |  |  | -12d | 36d | 946 | K |
| C.KP.CB.MEE.1130 |  | Spillage Pump | 10d | 2026-05-27 | 2026-06-08 | P.TM.PU.SP.DO.TW1050, C.KP.CB.SSW.1150 |  |  |  |  | -18.5d | 29.5d | 955 | K |
| C.KP.CB.MEE.1140 |  | Seal Water Tank | 10d | 2026-05-27 | 2026-06-08 | P.TM.PU.PWSW1050, C.KP.CB.SSW.1150 |  |  |  |  | -18.5d | 29.5d | 956 | K |
| C.KP.CB.MEE.1150 |  | Seal Water Pump | 10d | 2026-05-27 | 2026-06-08 | P.TM.PU.PWSW1050, C.KP.CB.SSW.1150 |  |  |  |  | -18.5d | 29.5d | 957 | K |

| ID | WBS | Activity | Duration | Start | Finish | Predecessors | Complete | Remaining | Planned start | Planned finish | Total float | Free float | MSP Activity ID | Responsibility |
| --- | --- | --- | --- | --- | --- | --- | --- | --- | --- | --- | --- | --- | --- | --- |
|  | EI | **E&I Works** |  | 2026-07-01 | 2026-08-22 |  |  |  |  |  |  |  |  |  |
| C.KP.CB.EI.1010 |  | E&I works - Classifier Building | 45d | 2026-07-01 | 2026-08-22 | C.KP.CB.MEE.1150 SS, C.KP.CB.MEE.1140 SS, C.KP.CB.MEE.1130 SS, C.KP.CB.MEE.1120 SS, C.KP.CB.MEE.1110 SS, C.KP.CB.MEE.1100 SS, C.KP.CB.MEE.1090 SS, C.KP.CB.MEE.1080 SS, C.KP.CB.MEE.1070 SS, C.KP.CB.MEE.1060 SS, C.KP.CB.MEE.1050 SS, C.KP.CB.MEE.1040 SS, C.KP.CB.MEE.1030 SS, C.KP.CB.MEE.1020 SS, C.KP.CB.MEE.1010 SS, DE.KP.S&C.1040 SS+60d, C.KP.CB.EI.1020 FF, MS7 - Erec.Mech.PESt SS, MS8 - Erec.Electr.St SS, MSI5 - Erec.Inst.St. SS |  |  |  |  | -48d | 0d | 737 | K |
| C.KP.CB.EI.1020 |  | Calibration of Equipments | 30d | 2026-07-18 | 2026-08-22 | P.KP.IN.1050 FS+25d |  |  |  |  | -48d | 0d | 959 | K |
|  | KP.HBF | **HBF Building** |  | 2025-08-08 | 2026-08-27 |  |  |  |  |  |  |  |  |  |
|  | CVRCC | **Civil/RCC Works** |  | 2025-08-08 | 2026-08-27 |  |  |  |  |  |  |  |  |  |
| C.KP.HBF.CVRCC.1020 |  | Foundation | 15d | 2025-08-08 A | 2026-01-05 A | C.KP.EW.1050 SS, MA1040 FS+30d, MA1070 FS+30d | 100% |  | 2025-11-06 | 2025-11-22 |  |  | 962 | K |
| C.KP.HBF.CVRCC.1030 |  | Pedestals & Tie Beams | 10d | 2025-08-19 A | 2026-01-17 A | C.KP.HBF.CVRCC.1020 | 100% |  | 2025-11-11 | 2025-11-22 |  |  | 963 | K |
| C.KP.HBF.CVRCC.1040 |  | Back filling | 25d | 2025-09-08 A | 2026-01-19 A | C.KP.HBF.CVRCC.1030 | 100% |  | 2025-11-14 | 2025-12-13 |  |  | 964 | K |
| C.KP.HBF.CVRCC.1050 |  | Deck Slab Conc. @ EL 699.62 | 5d | 2026-03-24 | 2026-03-31 | DE.KP.HBF.1030, C.KP.HBF.SSW.1020 FS+47d |  |  |  |  | -1.25d | 0d | 965 | K |
| C.KP.HBF.CVRCC.1060 |  | Deck Slab Conc. @ EL 702.62 | 5d | 2026-05-12 | 2026-05-18 | C.KP.HBF.SSW.1040, C.KP.HBF.CVRCC.1050 FS+35d |  |  |  |  | -1.25d | 0d | 967 | K |
| C.KP.HBF.CVRCC.1070 |  | Deck Slab Conc. @ EL 706.12 | 8d | 2026-06-27 | 2026-07-07 | C.KP.HBF.SSW.1060, C.KP.HBF.CVRCC.1060 FS+35d |  |  |  |  | -1.25d | 0d | 969 | K |
| C.KP.HBF.CVRCC.1080 |  | Deck Slab Conc. @ EL 710.12 | 5d | 2026-08-11 | 2026-08-18 | C.KP.HBF.SSW.1080, C.KP.HBF.CVRCC.1070 FS+30d |  |  |  |  | -1.25d | 0d | 971 | K |
| C.KP.HBF.CVRCC.1090 |  | Flooring @ EL 696.37 | 8d | 2026-08-18 | 2026-08-27 | C.KP.HBF.SSW.1090, C.KP.HBF.CVRCC.1040, C.KP.HBF.CVRCC.1080 |  |  |  |  | -1.25d | 78.75d | 711 | K |
|  | SSW | **Structural Steel Works** |  | 2025-10-10 | 2026-07-23 |  |  |  |  |  |  |  |  |  |
| C.KP.HBF.SSW.1010 |  | Columns up to EL 699.62 | 25d | 2025-10-10 A | 2026-01-02 A | C.KP.HBF.CVRCC.1030 FS+15d, DE.KP.HBF.1020 SS+120d, P.KP.SS.1030 SS | 100% |  | 2025-12-09 | 2026-01-09 |  |  | 975 | K |
| C.KP.HBF.SSW.1020 |  | Beams & Decking @ EL 699.62 | 20d | 2026-01-05 A | 2026-01-24 A | C.KP.HBF.SSW.1010 FF+7d | 100% |  | 2026-03-09 | 2026-04-03 |  |  | 966 | K |
| C.KP.HBF.SSW.1030 |  | Columns from EL 699.62 to EL 702.62 | 25d | 2026-01-22 A | 2026-03-05 A | C.KP.HBF.SSW.1010, C.KP.HBF.SSW.1020 FF+10d | 100% |  | 2026-02-05 | 2026-03-06 |  |  | 976 | K |
| C.KP.HBF.SSW.1040 |  | Beams & Decking @ EL 702.62 | 20d | 2026-01-26 A | 2026-04-08 | C.KP.HBF.SSW.1030 FF+7d | 95% | 19d | 2026-02-23 | 2026-03-18 | 7d | 0d | 968 | K |
| C.KP.HBF.SSW.1050 |  | Columns from EL 702.62 to EL 706.12 | 25d | 2026-02-03 A | 2026-04-20 | C.KP.HBF.SSW.1030, C.KP.HBF.SSW.1040 FF+10d | 80% | 5d | 2026-03-07 | 2026-04-07 | 7d | 0d | 977 | K |
| C.KP.HBF.SSW.1060 |  | Beams & Decking @ EL 706.12 | 20d | 2026-02-09 A | 2026-04-28 | C.KP.HBF.SSW.1050 FF+7d | 70% | 6d | 2026-04-03 | 2026-04-25 | 10d | 3d | 970 | K |
| C.KP.HBF.SSW.1070 |  | Columns from EL 706.12 to Truss | 25d | 2026-02-16 A | 2026-05-14 | C.KP.HBF.SSW.1050, C.KP.HBF.SSW.1060 FF+10d | 20% | 20d | 2026-04-18 | 2026-05-18 | 7d | 0d | 978 | K |
| C.KP.HBF.SSW.1080 |  | Beams & Decking @ EL 710.12 | 20d | 2026-02-21 A | 2026-05-22 | C.KP.HBF.SSW.1070 FF+7d | 20% | 16d | 2026-04-27 | 2026-05-20 | 7d | 0d | 972 | K |
| C.KP.HBF.SSW.1090 |  | Truss @ Roof level | 20d | 2026-03-02 A | 2026-06-12 | C.KP.HBF.SSW.1080 | 10% | 18d | 2026-05-01 | 2026-05-25 | 7d | 0d | 973 | K |
| C.KP.HBF.SSW.1100 |  | M/ Railing & Beams @ Truss bottom | 20d | 2026-06-13 | 2026-07-06 | C.KP.HBF.SSW.1090 |  |  |  |  | 7d | 0d | 979 | K |
| C.KP.HBF.SSW.1110 |  | Hand rails in all levels | 30d | 2026-06-13 | 2026-07-17 | C.KP.HBF.SSW.1090 |  |  |  |  | 12d | 79.8d | 784 | K |
| C.KP.HBF.SSW.1120 |  | Stair case 1 | 15d | 2026-06-13 | 2026-06-30 | C.KP.HBF.SSW.1090 |  |  |  |  | 22d | 89.8d | 766 | K |
| C.KP.HBF.SSW.1130 |  | Sheeting in Roof | 15d | 2026-06-13 | 2026-06-30 | C.KP.HBF.SSW.1090, C.KP.HBF.SSW.1100 SS |  |  |  |  | 7d | 0d | 980 | K |
| C.KP.HBF.SSW.1140 |  | Sheeting in Cladding | 20d | 2026-07-01 | 2026-07-23 | C.KP.HBF.SSW.1130 |  |  |  |  | 7d | 74.8d | 786 | K |

| ID | WBS | Activity | Duration | Start | Finish | Predecessors | Complete | Remaining | Planned start | Planned finish | Total float | Free float | MSP Activity ID | Responsibility | Remarks |
| --- | --- | --- | --- | --- | --- | --- | --- | --- | --- | --- | --- | --- | --- | --- | --- |
|  | MEE | **Mechanical/Equipment Erection** |  | 2026-04-27 | 2026-07-10 |  |  |  |  |  |  |  |  |  |  |
| C.KP.HBF.MEE.1010 |  | HBF Equipment | 40d | 2026-04-27 | 2026-06-12 | P.KP.HBF.1050, C.KP.HBF.SSW.1070 FF+25d |  |  |  |  | 7d | 18d | 982 | K |  |
| C.KP.HBF.MEE.1020 |  | Hoist | 40d | 2026-05-19 | 2026-07-03 | P.KP.H.1050, C.KP.HBF.MEE.1010 SS |  |  |  |  | -11d | 33d | 983 | K |  |
| C.KP.HBF.MEE.1030 |  | Filtrate Pump | 40d | 2026-05-25 | 2026-07-10 | P.TM.PU.FR1050, C.KP.HBF.MEE.1010 SS |  |  |  |  | -16.3d | 27.7d | 984 | K |  |
|  | EI | **E&I Works** |  | 2026-05-15 | 2026-08-18 |  |  |  |  |  |  |  |  |  |  |
| C.KP.HBF.EI.1020 |  | Calibration of Equipments | 40d | 2026-05-15 | 2026-06-30 | P.KP.IN.1050 FF+10d |  |  |  |  | -3d | 41d | 986 | K |  |
| C.KP.HBF.EI.1010 |  | E&I works - HBF | 45d | 2026-06-26 | 2026-08-18 | C.KP.HBF.MEE.1030 SS, C.KP.HBF.MEE.1020 SS, C.KP.HBF.MEE.1010 SS, DE.KP.HBF.1040 FS+75d, C.KP.HBF.EI.1020 FF, MS7 - Erec.Mech.PESt SS, MS8 - Erec.Electr.St SS, MSI5 - Erec.Inst.St. SS |  |  |  |  | -44d | 0d | 733 | K |  |
|  | KP.TCP | **Tertiary Crusher Plant** |  | 2025-09-03 | 2026-09-23 |  |  |  |  |  |  |  |  |  |  |
|  | CVRCC | **Civil/RCC Works** |  | 2025-09-03 | 2026-05-18 |  |  |  |  |  |  |  |  |  |  |
| C.KP.TCP.CVRCC.1020 |  | Foundation | 30d | 2025-09-03 A | 2026-04-09 | C.KP.EW.1060 SS, DE.KP.TC.1040 SS | 70% | 20d | 2025-11-15 | 2025-12-20 | -57d | 0d | 989 | K | Rev. Dwg received on 17/01/26 |
| C.KP.TCP.CVRCC.1030 |  | Pedestals & Tie Beams | 15d | 2025-10-14 A | 2026-04-17 | C.KP.TCP.CVRCC.1020 | 65% | 7d | 2025-12-12 | 2025-12-30 | -57d | 0d | 990 | K | Rev. Dwg received on 17/01/26 |
| C.KP.TCP.CVRCC.1050 |  | Walls from GF to Crusher | 18d | 2026-01-15 A | 2026-04-24 | C.KP.TCP.CVRCC.1030, DE.KP.TC.1040, C.KP.TCP.CVRCC.1020 | 70% | 5.4d | 2026-02-17 | 2026-03-10 | -8.4d | 0d | 992 | K |  |
| C.KP.TCP.CVRCC.1040 |  | Back filling | 20d | 2026-04-18 | 2026-05-12 | C.KP.TCP.CVRCC.1030 |  |  |  |  | -16d | 0d | 991 | K |  |
| C.KP.TCP.CVRCC.1060 |  | Slab @ Crusher level | 7d | 2026-04-24 | 2026-05-02 | C.KP.TCP.CVRCC.1050 |  |  |  |  | -8.4d | 7.6d | 993 | K |  |
| C.KP.TCP.CVRCC.1070 |  | Flooring @ EL 711.7 | 5d | 2026-05-13 | 2026-05-18 | C.KP.TCP.CVRCC.1040, C.KP.TCP.CVRCC.1060 |  |  |  |  | -16d | 64d | 689 | K |  |
|  | SSW | **Structural Steel Works** |  | 2025-11-24 | 2026-09-23 |  |  |  |  |  |  |  |  |  |  |
| C.KP.TCP.SSW.1020 |  | Columns from EL 711.7 to EL 715.2 (Conveyor Shed) | 10d | 2025-11-24 A | 2026-05-01 | C.KP.TCP.SSW.1010 FF+7d |  | 10d | 2026-04-21 | 2026-05-01 | -57d | 0d | 996 | K |  |
| C.KP.TCP.SSW.1010 |  | Columns from EL 711.7 to EL 723.2 | 21d | 2025-11-24 A | 2026-04-23 | C.KP.TCP.CVRCC.1030 FF+5d, DE.KP.TC.1030 FS+15d, P.KP.SS.1030 SS | 30% | 14.7d | 2025-12-23 | 2026-01-20 | -57d | 0d | 995 | K |  |
| C.KP.TCP.SSW.1030 |  | Platform @ EL 715.2 (Conveyor Shed) | 10d | 2026-04-29 | 2026-05-11 | C.KP.TCP.SSW.1020 FF+7d |  |  |  |  | -57d | 0d | 997 | K |  |
| C.KP.TCP.SSW.1040 |  | Columns from EL 715.2 to Truss (Conveyor Shed) | 10d | 2026-05-05 | 2026-05-16 | C.KP.TCP.SSW.1020 FF+7d, C.KP.TCP.SSW.1030 FF+5d |  |  |  |  | -57d | 0d | 998 | K |  |
| C.KP.TCP.SSW.1050 |  | Truss @ Roof level (Conveyor Shed) | 15d | 2026-05-05 | 2026-05-22 | C.KP.TCP.SSW.1040 FF+5d |  |  |  |  | -57d | 0d | 999 | K |  |
| C.KP.TCP.SSW.1060 |  | Platform @ EL 717.2 (Crusher level) | 10d | 2026-05-20 | 2026-05-30 | C.KP.TCP.SSW.1050 FF+7d |  |  |  |  | -57d | 0d | 1000 | K |  |
| C.KP.TCP.SSW.1070 |  | Platform @ EL 723.2 | 10d | 2026-05-26 | 2026-06-05 | C.KP.TCP.SSW.1060 FF+5d |  |  |  |  | -57d | 0d | 1001 | K |  |
| C.KP.TCP.SSW.1090 |  | Columns from EL 723.2 to EL 726.4 | 10d | 2026-06-06 | 2026-06-17 | C.KP.TCP.SSW.1040, C.KP.TCP.SSW.1070 |  |  |  |  | -57d | 0d | 1002 | K |  |
| C.KP.TCP.SSW.1100 |  | Platform @ EL 726.4 | 10d | 2026-06-12 | 2026-06-23 | C.KP.TCP.SSW.1090 FF+5d |  |  |  |  | -57d | 0d | 1003 | K |  |
| C.KP.TCP.SSW.1110 |  | Columns from EL 726.4 to EL 734 | 10d | 2026-06-18 | 2026-06-29 | C.KP.TCP.SSW.1100 FF+5d |  |  |  |  | -57d | 0d | 1004 | K |  |
| C.KP.TCP.SSW.1120 |  | Platform @ EL 734 | 10d | 2026-06-24 | 2026-07-04 | C.KP.TCP.SSW.1110 FF+5d |  |  |  |  | -57d | 0d | 1005 | K |  |
| C.KP.TCP.SSW.1130 |  | Columns from EL 734 to EL 741 | 10d | 2026-06-30 | 2026-07-10 | C.KP.TCP.SSW.1110, C.KP.TCP.SSW.1120 FF+5d |  |  |  |  | -57d | 0d | 1006 | K |  |
| C.KP.TCP.SSW.1140 |  | EOT Crane - Railing & Beams @ EL 741 | 10d | 2026-07-06 | 2026-07-16 | C.KP.TCP.SSW.1130 FF+5d |  |  |  |  | -57d | 0d | 1007 | K |  |
| C.KP.TCP.SSW.1150 |  | EOT Crane - Platform @ EL 741 | 10d | 2026-07-11 | 2026-07-22 | C.KP.TCP.SSW.1140 FF+5d |  |  |  |  | -57d | 0d | 1008 | K |  |
| C.KP.TCP.SSW.1160 |  | Columns from EL 741 to EL 746 | 10d | 2026-07-23 | 2026-08-03 | C.KP.TCP.SSW.1130, C.KP.TCP.SSW.1150 |  |  |  |  | -57d | 0d | 1009 | K |  |
| C.KP.TCP.SSW.1170 |  | BO MonoRail & Beams @ EL 746 | 10d | 2026-07-29 | 2026-08-08 | C.KP.TCP.SSW.1160 FF+5d |  |  |  |  | -57d | 0d | 1010 | K |  |
| C.KP.TCP.SSW.1180 |  | Columns from EL 746 to Truss | 10d | 2026-08-10 | 2026-08-21 | C.KP.TCP.SSW.1160 FF+10d, C.KP.TCP.SSW.1170 |  |  |  |  | -57d | 0d | 1011 | K |  |
| C.KP.TCP.SSW.1190 |  | Truss @ Roof level | 12d | 2026-08-13 | 2026-08-27 | C.KP.TCP.SSW.1180 FF+5d |  |  |  |  | -57d | 0d | 1012 | K |  |
| C.KP.TCP.SSW.1200 |  | Hand rails in all levels | 12d | 2026-08-22 | 2026-09-04 | C.KP.TCP.SSW.1180 |  |  |  |  | -49d | 18.8d | 768 | K |  |
| C.KP.TCP.SSW.1210 |  | Stair case 1 | 6d | 2026-08-22 | 2026-08-28 | C.KP.TCP.SSW.1020, C.KP.TCP.SSW.1180 |  |  |  |  | -55d | 0d | 1013 | K |  |
| C.KP.TCP.SSW.1220 |  | Sheeting in Roof | 15d | 2026-08-29 | 2026-09-15 | C.KP.TCP.SSW.1190 FF+10d, C.KP.TCP.SSW.1210 |  |  |  |  | -55d | 0d | 1014 | K |  |
| C.KP.TCP.SSW.1230 |  | Sheeting in Cladding | 20d | 2026-09-01 | 2026-09-23 | C.KP.TCP.SSW.1190 FF+7d, C.KP.TCP.SSW.1180, C.KP.TCP.SSW.1220 FF+7d |  |  |  |  | -55d | 12.8d | 773 | K |  |

| ID | WBS | Activity | Duration | Start | Finish | Predecessors | Complete | Planned start | Planned finish | Total float | Free float | MSP Activity ID | Responsibility |
| --- | --- | --- | --- | --- | --- | --- | --- | --- | --- | --- | --- | --- | --- |
|  | MEE | **Mechanical/Equipment Erection** |  | 2026-05-20 | 2026-09-14 |  |  |  |  |  |  |  |  |
| C.KP.TCP.MEE.1030 |  | Vibrating Feeder | 5d | 2026-05-20 | 2026-05-25 | P.TM.VF.1050 FS+200d, C.KP.TCP.MEE.1040 SS |  |  |  | 3d | 60d | 1019 | K |
| C.KP.TCP.MEE.1040 |  | Tertiary Crusher 2 Nos | 85d | 2026-05-20 | 2026-08-27 | P.KP.CC1050 FF+25d, C.KP.TCP.SSW.1180 FF+5d |  |  |  | -57d | 0d | 1020 | K |
| C.KP.TCP.MEE.1080 |  | Hoist | 5d | 2026-05-20 | 2026-05-25 | P.KP.H.1050, C.KP.TCP.MEE.1040 SS |  |  |  | 3d | 60d | 1023 | K |
| C.KP.TCP.MEE.1060 |  | EOT Crane | 30d | 2026-07-17 | 2026-08-21 | P.KP.EOT.1050, C.KP.TCP.SSW.1140 |  |  |  | -47d | 10d | 1021 | K |
| C.KP.TCP.MEE.1020 |  | Rod Gate | 5d | 2026-07-23 | 2026-07-28 | P.KP.RG1050, C.KP.TCP.MEE.1050 SS |  |  |  | -52d | 5d | 1017 | K |
| C.KP.TCP.MEE.1050 |  | Conveyor Components | 45d | 2026-07-23 | 2026-09-14 | C.KP.TCP.SSW.1180 FF+20d, P.HT.PB.1050 SS+60d, P.HT.B.1050 SS+10d, P.HT.M.1050 SS+25d, P.HT.BT.1050, P.HT.GB.1050, P.HT.LSC.1050, P.HT.HSC.1050, P.HT.BK.1050, P.HT.ID.1050 SS+35d, P.HT.P.1050 SS+35d, P.HT.SC.1050 SS+15d |  |  |  | -52d | 0d | 1018 | K |
| C.KP.TCP.MEE.1070 |  | Cross Belt Magnetic Separator | 5d | 2026-07-23 | 2026-07-28 | P.KP.CBMS.1050 FS+50d, C.KP.TCP.MEE.1050 SS |  |  |  | -52d | 5d | 1022 | K |
| C.KP.TCP.MEE.1010 |  | Installation of Elevator | 30d | 2026-07-29 | 2026-09-02 | P.KP.EL.1050, C.KP.TCP.SSW.1190 FF+5d |  |  |  | -57d | 0d | 1016 | K |
|  | EI | **E&I Works** |  | 2026-07-17 | 2026-09-02 |  |  |  |  |  |  |  |  |
| C.KP.TCP.EI.1020 |  | Calibration of Equipments | 40d | 2026-07-17 | 2026-09-02 | C.KP.TCP.MEE.1040 FF+5d |  |  |  | -57d | 0d | 1025 | K |
| C.KP.TCP.EI.1010 |  | E&I works - Crusher Building | 30d | 2026-07-29 | 2026-09-02 | C.KP.TCP.MEE.1080 SS, C.KP.TCP.MEE.1070 SS, C.KP.TCP.MEE.1060 SS, C.KP.TCP.MEE.1050 SS, C.KP.TCP.MEE.1040 FF+5d, C.KP.TCP.MEE.1030 SS, C.KP.TCP.MEE.1020 SS, C.KP.TCP.MEE.1010 SS, DE.KP.TC.1050 SS+75d, C.KP.TCP.EI.1020 FF, MS7 - Erec.Mech.PESt SS, MS8 - Erec.Electr.St SS, MSI5 - Erec.Inst.St. SS |  |  |  | -57d | 0d | 735 | K |
|  | KP.TH3 | **Transfer House 3** |  | 2025-06-17 | 2026-07-09 |  |  |  |  |  |  |  |  |
|  | CVRCC | **Civil/RCC Works** |  | 2025-06-17 | 2025-06-30 |  |  |  |  |  |  |  |  |
| C.KP.TH3.CVRCC.1020 |  | Foundation (For Conveyor) | 7d | 2025-06-17 A | 2025-06-24 A | C.KP.EW.1070, DE.KP.TH3.1020 SS+120d, MA1040 FS+30d, MA1070 FS+30d | 100% | 2026-01-19 | 2026-01-27 |  |  | 1028 | K |
| C.KP.TH3.CVRCC.1030 |  | Back filling | 5d | 2025-06-25 A | 2025-06-30 A | C.KP.TH3.CVRCC.1020 | 100% | 2026-01-28 | 2026-02-02 |  |  | 728 | K |
|  | MEE | **Mechanical/Equipment Erection** |  | 2026-04-28 | 2026-07-08 |  |  |  |  |  |  |  |  |
| C.KP.TH3.MEE.1010 |  | Apron Feeder | 20d | 2026-04-28 | 2026-05-21 | P.TM.AF.1050, C.KP.TH3.CVRCC.1020 |  |  |  | 6d | 7d | 1030 | K |
| C.KP.TH3.MEE.1020 |  | Cross Belt Magnetic Separator | 5d | 2026-05-06 | 2026-05-12 | P.KP.CBMS.1050 FS+30d, C.KP.TH3.MEE.1010 SS |  |  |  | -1d | 10d | 1031 | K |
| C.KP.TH3.MEE.1030 |  | Hoist | 5d | 2026-05-19 | 2026-05-23 | P.KP.H.1050, C.KP.TH3.MEE.1010 SS |  |  |  | -11d | 0d | 1032 | K |
| C.KP.TH3.MEE.1040 |  | Hood, Chutes, Skirts, Frames | 30d | 2026-06-03 | 2026-07-08 | P.HT.CF.1050 |  |  |  | -9.34d | 1.66d | 1033 | K |
|  | EI | **E&I Works** |  | 2026-05-19 | 2026-07-09 |  |  |  |  |  |  |  |  |
| C.KP.TH3.EI.1010 |  | E&I works - TH-3 | 45d | 2026-05-19 | 2026-07-09 | C.KP.TH3.MEE.1030 SS, C.KP.TH3.MEE.1020 SS, C.KP.TH3.MEE.1010 SS, DE.KP.TH3.1030 FS+95d, C.KP.TH3.MEE.1040 FF, C.KP.TH3.EI.1020 FF, MS7 - Erec.Mech.PESt SS, MS8 - Erec.Electr.St SS, MSI5 - Erec.Inst.St. SS |  |  |  | -11d | 37d | 753 | K |
| C.KP.TH3.EI.1020 |  | Calibration of Equipments | 5d | 2026-06-19 | 2026-06-24 | P.KP.IN.1050 |  |  |  | 2d | 13d | 1035 | K |

| ID | WBS | Activity | Duration | Start | Finish | Predecessors | Complete | Remaining | Planned start | Planned finish | Total float | Free float | MSP Activity ID | Responsibility |
| --- | --- | --- | --- | --- | --- | --- | --- | --- | --- | --- | --- | --- | --- | --- |
|  | KP.TH4 | **Transfer House 4** |  | 2026-03-11 | 2026-08-28 |  |  |  |  |  |  |  |  |  |
|  | CVRCC | **Civil/RCC Works** |  | 2026-03-11 | 2026-07-24 |  |  |  |  |  |  |  |  |  |
| C.KP.TH4.CVRCC.1020 |  | Foundation | 30d | 2026-03-11 A | 2026-04-21 | C.KP.EW.1080 FF+10d, DE.KP.TH4.1060 SS+100d, DE.KP.TH4.1050 SS+120d, MA1040 FS+30d, MA1070 FS+30d |  | 30d | 2026-03-16 | 2026-04-21 | -53d | 0d | 1038 | K |
| C.KP.TH4.CVRCC.1030 |  | Pedestals & Tie Beams | 15d | 2026-04-13 | 2026-04-29 | C.KP.TH4.CVRCC.1020 FF+7d |  |  |  |  | -53d | 0d | 1039 | K |
| C.KP.TH4.CVRCC.1040 |  | Back filling | 6d | 2026-04-30 | 2026-05-06 | C.KP.TH4.CVRCC.1030 |  |  |  |  | 50d | 54d | 1040 | K |
| C.KP.TH4.CVRCC.1050 |  | Flooring @ EL 726 | 6d | 2026-07-18 | 2026-07-24 | C.KP.TH4.SSW.1050, C.KP.TH4.CVRCC.1040 FS+7d |  |  |  |  | -4d | 76d | 727 | K |
|  | SSW | **Structural Steel Works** |  | 2026-05-08 | 2026-08-28 |  |  |  |  |  |  |  |  |  |
| C.KP.TH4.SSW.1010 |  | Columns from EL 726 to EL 731.7 | 10d | 2026-05-08 | 2026-05-20 | C.KP.TH4.CVRCC.1030 FS+7d, DE.KP.TH4.1050 SS+120d, P.KP.SS.1030 SS |  |  |  |  | -53d | 0d | 1043 | K |
| C.KP.TH4.SSW.1020 |  | Tie Beams between EL 726 & EL 731.7 | 10d | 2026-05-21 | 2026-06-01 | C.KP.TH4.SSW.1010 |  |  |  |  | -53d | 0d | 1044 | K |
| C.KP.TH4.SSW.1030 |  | Platform @ EL 731.7 | 10d | 2026-06-02 | 2026-06-12 | C.KP.TH4.SSW.1020 |  |  |  |  | -53d | 0d | 1045 | K |
| C.KP.TH4.SSW.1040 |  | Columns from EL 731.7 to Truss | 15d | 2026-06-13 | 2026-06-30 | C.KP.TH4.SSW.1030 |  |  |  |  | -53d | 0d | 1046 | K |
| C.KP.TH4.SSW.1050 |  | Truss @ Roof level | 15d | 2026-07-01 | 2026-07-17 | C.KP.TH4.SSW.1040 |  |  |  |  | -53d | 0d | 1041 | K |
| C.KP.TH4.SSW.1060 |  | Sheeting in Roof | 15d | 2026-07-18 | 2026-08-04 | C.KP.TH4.SSW.1050 |  |  |  |  | -53d | 0d | 1047 | K |
| C.KP.TH4.SSW.1070 |  | Sheeting in Cladding | 20d | 2026-08-05 | 2026-08-28 | C.KP.TH4.SSW.1060 |  |  |  |  | -53d | 14.8d | 785 | K |
|  | MEE | **Mechanical/Equipment Erection** |  | 2026-06-03 | 2026-08-17 |  |  |  |  |  |  |  |  |  |
| C.KP.TH4.MEE.1050 |  | Hood, Chutes, Skirts, Frames | 20d | 2026-06-03 | 2026-06-26 | P.HT.CF.1050 |  |  |  |  | 0.66d | 48.66d | 1053 | K |
| C.KP.TH4.MEE.1010 |  | Sampler | 10d | 2026-07-18 | 2026-07-29 | P.KP.S.1050 SS, C.KP.TH4.MEE.1040 SS |  |  |  |  | -48d | 0d | 1049 | K |
| C.KP.TH4.MEE.1020 |  | Hoist | 5d | 2026-07-18 | 2026-07-23 | P.KP.H.1050, C.KP.TH4.MEE.1040 SS |  |  |  |  | -48d | 0d | 1051 | K |
| C.KP.TH4.MEE.1030 |  | Prism Gate | 5d | 2026-07-18 | 2026-07-23 | P.KP.PG.1050, C.KP.TH4.MEE.1040 SS |  |  |  |  | -48d | 0d | 1052 | K |
| C.KP.TH4.MEE.1040 |  | Conveyor Component | 25d | 2026-07-18 | 2026-08-17 | C.KP.TH4.SSW.1060 FF+10d, C.KP.TH4.SSW.1050, P.HT.PB.1050 SS+60d, P.HT.B.1050 SS+10d, P.HT.M.1050 SS+25d, P.HT.BT.1050, P.HT.GB.1050, P.HT.LSC.1050, P.HT.HSC.1050, P.HT.BK.1050, P.HT.ID.1050 SS+35d, P.HT.P.1050 SS+35d, P.HT.SC.1050 SS+15d |  |  |  |  | -48d | 0d | 1050 | K |
|  | EI | **E&I Works** |  | 2026-06-19 | 2026-08-22 |  |  |  |  |  |  |  |  |  |
| C.KP.TH4.EI.1020 |  | Calibration of Equipments | 5d | 2026-06-19 | 2026-06-24 | P.KP.IN.1050 |  |  |  |  | 2d | 50d | 1055 | K |
| C.KP.TH4.EI.1010 |  | E&I works - TH-4 | 30d | 2026-07-18 | 2026-08-22 | C.KP.TH4.MEE.1040 SS, C.KP.TH4.MEE.1030 SS, C.KP.TH4.MEE.1020 SS, C.KP.TH4.MEE.1010 SS, DE.KP.TH4.1070 FS+90d, C.KP.TH4.MEE.1050 FF, C.KP.TH4.EI.1020 FF, MS7 - Erec.Mech.PESt SS, MS8 - Erec.Electr.St SS, MSI5 - Erec.Inst.St. SS |  |  |  |  | -48d | 0d | 746 | K |
|  | KP.TH5 | **Transfer House 5** |  | 2025-03-06 | 2026-08-19 |  |  |  |  |  |  |  |  |  |
|  | CVRCC | **Civil/RCC Works** |  | 2025-03-06 | 2026-01-20 |  |  |  |  |  |  |  |  |  |
| C.KP.TH5.CVRCC.1020 |  | Foundation | 15d | 2025-03-06 A | 2025-06-04 A | C.KP.EW.1090, DE.KP.TH5.1100 SS+60d, DE.KP.TH5.1090 SS+120d, MA1040 FS+30d, MA1070 FS+30d | 100% |  | 2025-04-12 | 2025-04-30 |  |  | 1058 | K |
| C.KP.TH5.CVRCC.1030 |  | Pedestals & Tie Beams | 10d | 2025-04-04 A | 2025-06-17 A | C.KP.TH5.CVRCC.1020 | 100% |  | 2025-04-30 | 2025-05-10 |  |  | 1059 | K |
| C.KP.TH5.CVRCC.1040 |  | Back filling | 5d | 2025-06-18 A | 2025-06-25 A | C.KP.TH5.CVRCC.1030 | 100% |  | 2025-07-25 | 2025-07-31 |  |  | 1060 | K |
| C.KP.TH5.CVRCC.1050 |  | Flooring @ EL 700.7 | 5d | 2025-12-29 A | 2026-01-20 A | C.KP.TH5.SSW.1060, C.KP.TH5.CVRCC.1040 FS+130d | 100% |  | 2026-02-19 | 2026-02-24 |  |  | 703 | K |

| ID | WBS | Activity | Duration | Start | Finish | Predecessors | Complete | Remaining | Planned start | Planned finish | Total float | Free float | MSP Activity ID | Responsibility |
| --- | --- | --- | --- | --- | --- | --- | --- | --- | --- | --- | --- | --- | --- | --- |
|  | SSW | **Structural Steel Works** |  | 2025-07-03 | 2026-05-08 |  |  |  |  |  |  |  |  |  |
| C.KP.TH5.SSW.1010 |  | Columns from EL 700.7 to EL 704.7 | 25d | 2025-07-03 A | 2025-08-04 A | C.KP.TH5.CVRCC.1030 FS+21d, DE.KP.TH5.1090 SS+120d, P.KP.SS.1030 SS | 100% |  | 2025-07-25 | 2025-08-26 |  |  | 1063 | K |
| C.KP.TH5.SSW.1020 |  | Platform @ EL 704.7 | 20d | 2025-08-06 A | 2025-08-23 A | C.KP.TH5.SSW.1010 | 100% |  | 2025-08-27 | 2025-09-19 |  |  | 1064 | K |
| C.KP.TH5.SSW.1030 |  | Columns from EL 704.7 to EL 710.2 | 25d | 2025-08-25 A | 2025-09-09 A | C.KP.TH5.SSW.1020 | 100% |  | 2025-09-20 | 2025-10-20 |  |  | 1065 | K |
| C.KP.TH5.SSW.1050 |  | Columns from EL 710.2 to Truss | 25d | 2025-09-10 A | 2025-09-27 A | C.KP.TH5.SSW.1040 | 100% |  | 2025-11-17 | 2025-12-15 |  |  | 1067 | K |
| C.KP.TH5.SSW.1060 |  | Truss @ Roof level | 25d | 2025-09-27 A | 2025-10-01 A | C.KP.TH5.SSW.1050 | 100% |  | 2026-01-16 | 2026-02-16 |  |  | 1061 | K |
| C.KP.TH5.SSW.1040 |  | Platform @ EL 710.2 | 20d | 2026-01-05 A | 2026-02-18 A | C.KP.TH5.SSW.1030 | 100% |  | 2026-01-27 | 2026-02-18 |  |  | 1066 | K |
| C.KP.TH5.SSW.1070 |  | Hand rails in all levels | 15d | 2026-03-16 | 2026-04-03 | C.KP.TH5.SSW.1060 |  |  |  |  | -59d | 8.8d | 772 | K |
| C.KP.TH5.SSW.1080 |  | Sheeting in Roof | 20d | 2026-03-16 | 2026-04-09 | C.KP.TH5.SSW.1060 |  |  |  |  | -59d | 0d | 1068 | K |
| C.KP.TH5.SSW.1090 |  | Sheeting in Cladding | 25d | 2026-04-10 | 2026-05-08 | C.KP.TH5.SSW.1080 |  |  |  |  | -59d | 8.8d | 776 | K |
|  | MEE | **Mechanical/Equipment Erection** |  | 2026-05-19 | 2026-08-19 |  |  |  |  |  |  |  |  |  |
| C.KP.TH5.MEE.1010 |  | Hoist | 5d | 2026-05-19 | 2026-05-23 | P.KP.H.1050 |  |  |  |  | -11d | 34d | 1070 | K |
| C.KP.TH5.MEE.1030 |  | Hood, Chutes, Skirts, Frames | 30d | 2026-06-03 | 2026-07-08 | P.HT.CF.1050 |  |  |  |  | -9.34d | 35.66d | 1072 | K |
| C.KP.TH5.MEE.1020 |  | Conveyor Component | 45d | 2026-06-27 | 2026-08-19 | P.HT.PB.1050 SS+60d, P.HT.B.1050 SS+10d, P.HT.M.1050 SS+25d, P.HT.BT.1050, P.HT.GB.1050, P.HT.LSC.1050, P.HT.HSC.1050, P.HT.BK.1050, P.HT.ID.1050 SS+35d, P.HT.P.1050 SS+35d, P.HT.SC.1050 SS+15d |  |  |  |  | -45d | 0d | 1071 | K |
|  | EI | **E&I Works** |  | 2026-06-19 | 2026-08-19 |  |  |  |  |  |  |  |  |  |
| C.KP.TH5.EI.1020 |  | Calibration of Equipments | 5d | 2026-06-19 | 2026-06-24 | P.KP.IN.1050 |  |  |  |  | 2d | 47d | 1074 | K |
| C.KP.TH5.EI.1010 |  | E&I works - TH-5 | 45d | 2026-06-27 | 2026-08-19 | C.KP.TH5.MEE.1020 SS, C.KP.TH5.MEE.1010 SS, DE.KP.TH5.1110 FS+100d, C.KP.TH5.MEE.1030 FF, C.KP.TH5.EI.1020 FF, MS7 - Erec.Mech.PESt SS, MS8 - Erec.Electr.St SS, MSI5 - Erec.Inst.St. SS |  |  |  |  | -45d | 3d | 752 | K |
|  | KP.TH6 | **Transfer House 6** |  | 2026-02-04 | 2026-08-21 |  |  |  |  |  |  |  |  |  |
|  | CVRCC | **Civil/RCC Works** |  | 2026-02-04 | 2026-07-22 |  |  |  |  |  |  |  |  |  |
| C.KP.TH6.CVRCC.1020 |  | Foundation | 45d | 2026-02-04 A | 2026-04-09 | C.KP.EW.1100 FF, DE.KP.TH6.1030 SS+60d, MA1040 FS+30d, MA1070 FS+30d | 70% | 20d | 2026-02-05 | 2026-04-01 | -52d | 0d | 1077 | K |
| C.KP.TH6.CVRCC.1030 |  | Pedestals & Tie Beams | 10d | 2026-02-21 A | 2026-04-18 | C.KP.TH6.CVRCC.1020 | 20% | 8d | 2026-04-04 | 2026-04-15 | -52d | 0d | 1078 | K |
| C.KP.TH6.CVRCC.1040 |  | Back filling | 5d | 2026-04-20 | 2026-04-24 | C.KP.TH6.CVRCC.1030 |  |  |  |  | 18d | 70d | 1079 | K |
| C.KP.TH6.CVRCC.1050 |  | Flooring @ EL 690.74 | 5d | 2026-07-17 | 2026-07-22 | C.KP.TH6.SSW.1040, C.KP.TH6.CVRCC.1040 |  |  |  |  | -52d | 28d | 696 | K |
|  | SSW | **Structural Steel Works** |  | 2026-05-01 | 2026-08-21 |  |  |  |  |  |  |  |  |  |
| C.KP.TH6.SSW.1010 |  | Columns up to EL 696.44 | 25d | 2026-05-01 | 2026-05-30 | C.KP.TH6.CVRCC.1030 FS+10d, DE.KP.TH6.1020 SS+120d, P.KP.SS.1030 SS |  |  |  |  | -52d | 0d | 1082 | K |
| C.KP.TH6.SSW.1020 |  | Platform @ EL 696.44 | 20d | 2026-05-20 | 2026-06-11 | C.KP.TH6.SSW.1010 FF+10d |  |  |  |  | -52d | 0d | 1083 | K |
| C.KP.TH6.SSW.1030 |  | Columns from EL 696.44 to Truss | 20d | 2026-06-12 | 2026-07-04 | C.KP.TH6.SSW.1020 |  |  |  |  | -52d | 0d | 1084 | K |
| C.KP.TH6.SSW.1040 |  | Truss @ Roof level | 20d | 2026-06-24 | 2026-07-16 | C.KP.TH6.SSW.1030 FF+10d |  |  |  |  | -52d | 0d | 1080 | K |
| C.KP.TH6.SSW.1050 |  | Sheeting in Roof | 20d | 2026-07-11 | 2026-08-03 | C.KP.TH6.SSW.1040 FF+15d |  |  |  |  | -47d | 0d | 1085 | K |
| C.KP.TH6.SSW.1060 |  | Sheeting in Cladding | 25d | 2026-07-23 | 2026-08-21 | C.KP.TH6.SSW.1050 FF+15d |  |  |  |  | -47d | 20.8d | 775 | K |

| ID | WBS | Activity | Duration | Start | Finish | Predecessors | Complete | Remaining | Planned start | Planned finish | Total float | Free float | MSP Activity ID | Responsibility |
| --- | --- | --- | --- | --- | --- | --- | --- | --- | --- | --- | --- | --- | --- | --- |
|  | MEE | **Mechanical/Equipment Erection** |  | 2026-03-16 | 2026-07-22 |  |  |  |  |  |  |  |  |  |
| C.KP.TH6.MEE.1010 |  | Sampler | 20d | 2026-03-16 | 2026-04-09 | P.KP.S.1050 |  |  |  |  | 41d | 0d | 1087 | K |
| C.KP.TH6.MEE.1020 |  | Prism Gate | 5d | 2026-04-10 | 2026-04-15 | P.KP.PG.1050, C.KP.TH6.MEE.1010 |  |  |  |  | 41d | 83d | 1088 | K |
| C.KP.TH6.MEE.1040 |  | Hood, Chutes, Skirts, Frames | 30d | 2026-06-03 | 2026-07-08 | P.HT.CF.1050 |  |  |  |  | -9.34d | 32.66d | 1090 | K |
| C.KP.TH6.MEE.1030 |  | Hoist | 5d | 2026-07-17 | 2026-07-22 | P.KP.H.1050, C.KP.TH6.SSW.1040 |  |  |  |  | -42d | 0d | 1089 | K |
|  | EI | **E&I Works** |  | 2026-06-19 | 2026-08-14 |  |  |  |  |  |  |  |  |  |
| C.KP.TH6.EI.1020 |  | Calibration of Equipments | 2d | 2026-06-19 | 2026-06-20 | P.KP.IN.1050 |  |  |  |  | 5d | 47d | 1092 | K |
| C.KP.TH6.EI.1010 |  | E&I works - TH-6 | 25d | 2026-07-17 | 2026-08-14 | C.KP.TH6.MEE.1030 SS, C.KP.TH6.MEE.1020 SS, C.KP.TH6.MEE.1010 SS, DE.KP.TH6.1040 FS+95d, C.KP.TH6.MEE.1040 FF, C.KP.TH6.EI.1020 FF, MS7 - Erec.Mech.PESt SS, MS8 - Erec.Electr.St SS, MSI5 - Erec.Inst.St. SS |  |  |  |  | -42d | 6d | 749 | K |
|  | KP.C801 | **Conveyor 801** |  | 2025-02-24 | 2026-09-17 |  |  |  |  |  |  |  |  |  |
|  | CVRCC | **Civil/RCC Works** |  | 2025-02-24 | 2026-04-22 |  |  |  |  |  |  |  |  |  |
| C.KP.C801.CVRCC.1020 |  | Foundation | 45d | 2025-02-24 A | 2026-03-30 | C.KP.EW.1110, DE.KP.C.1030 SS+60d, MA1040 FS+30d, MA1070 FS+30d | 90% | 11d | 2025-04-30 | 2025-06-20 | -29d | 0d | 1095 | K |
| C.KP.C801.CVRCC.1040 |  | Back filling | 10d | 2025-06-17 A | 2026-04-10 | C.KP.C801.CVRCC.1020, C.KP.C801.CVRCC.1030 FF+7d | 75% | 2.5d | 2026-03-30 | 2026-04-09 | -10d | 0d | 1097 | K |
| C.KP.C801.CVRCC.1030 |  | Pedestals & Tie Beams | 20d | 2025-09-08 A | 2026-04-02 | C.KP.C801.CVRCC.1020 | 85% | 3d | 2026-01-05 | 2026-01-30 | -10d | 0d | 1096 | K |
| C.KP.C801.CVRCC.1050 |  | Platform below Conveyor | 20d | 2026-03-27 A | 2026-04-22 | C.KP.C801.CVRCC.1040 | 80% | 10d | 2026-03-27 | 2026-04-18 | -10d | 35d | 1098 | K |
|  | SSW | **Structural Steel Works** |  | 2026-01-06 | 2026-07-18 |  |  |  |  |  |  |  |  |  |
| C.KP.C801.SSW.1010 |  | Trestle Erection | 45d | 2026-01-06 A | 2026-05-07 | C.KP.C801.CVRCC.1020 FS+15d, DE.KP.C.1020 SS+120d, P.KP.SS.1030 SS | 60% | 18d | 2026-03-16 | 2026-05-11 | -29d | 0d | 1100 | K |
| C.KP.C801.SSW.1020 |  | Gallery Assembling | 80d | 2026-01-06 A | 2026-05-05 | C.KP.C801.SSW.1010 SS | 80% | 16d | 2026-03-16 | 2026-06-20 | -11d | 18d | 1101 | K |
| C.KP.C801.SSW.1030 |  | Gallery Erection | 40d | 2026-01-06 A | 2026-05-27 | C.KP.C801.SSW.1010, C.KP.C801.SSW.1020 SS+40d | 60% | 16d | 2026-05-11 | 2026-06-26 | -29d | 0d | 1102 | K |
| C.KP.C801.SSW.1040 |  | Sheeting in Roof | 20d | 2026-05-28 | 2026-06-19 | C.KP.C801.SSW.1030 |  |  |  |  | -29d | 0d | 1103 | K |
| C.KP.C801.SSW.1050 |  | Sheeting in Cladding | 25d | 2026-06-20 | 2026-07-18 | C.KP.C801.SSW.1040 |  |  |  |  | -29d | 38.8d | 763 | K |
|  | MEE | **Mechanical/Equipment Erection** |  | 2026-06-03 | 2026-09-17 |  |  |  |  |  |  |  |  |  |
| C.KP.C801.MEE.1040 |  | Hood, Chutes, Skirts, Frames | 30d | 2026-06-03 | 2026-07-08 | P.HT.CF.1050 |  |  |  |  | -49.34d | 0d | 1108 | K |
| C.KP.C801.MEE.1010 |  | Belt Weigh Scale | 5d | 2026-06-27 | 2026-07-02 | P.HT.BWS.1050, C.KP.C801.MEE.1020 SS |  |  |  |  | -40d | 9.34d | 1105 | K |
| C.KP.C801.MEE.1020 |  | Conveyor Components | 70d | 2026-06-27 | 2026-09-17 | C.KP.C801.SSW.1030 SS, P.HT.PB.1050 SS+60d, P.HT.B.1050 SS+10d, P.HT.M.1050 SS+25d, P.HT.BT.1050, P.HT.GB.1050, P.HT.LSC.1050, P.HT.HSC.1050, P.HT.BK.1050, P.HT.ID.1050 SS+35d, P.HT.P.1050 SS+35d, P.HT.SC.1050 SS+15d, C.KP.C801.CVRCC.1050 FS+20d |  |  |  |  | -45d | 0d | 1106 | K |
| C.KP.C801.MEE.1030 |  | Flap Gate | 5d | 2026-06-27 | 2026-07-02 | C.KP.C801.MEE.1020 SS, P.KP.FG.1050 FS+75d |  |  |  |  | -45d | 4.34d | 1107 | K |

| ID | WBS | Activity | Duration | Start | Finish | Predecessors | Complete | Planned start | Planned finish | Total float | Free float | MSP Activity ID | Responsibility |
| --- | --- | --- | --- | --- | --- | --- | --- | --- | --- | --- | --- | --- | --- |
|  | EI | **E&I Works** |  | 2026-07-01 | 2026-08-25 |  |  |  |  |  |  |  |  |
| C.KP.C801.EI.1020 |  | Calibration of Equipments | 30d | 2026-07-01 | 2026-08-04 | P.KP.IN.1050 FS+10d |  |  |  | -33d | 16.34d | 1110 | K |
| C.KP.C801.EI.1010 |  | E&I works - Conveyor 801 | 40d | 2026-07-08 | 2026-08-25 | C.KP.C801.MEE.1020 SS, C.KP.C801.MEE.1010 SS, C.KP.C801.MEE.1040, C.KP.C801.EI.1020 FF, C.KP.C801.MEE.1030, MS7 - Erec.Mech.PESt SS, MS8 - Erec.Electr.St SS, MSI5 - Erec.Inst.St. SS |  |  |  | -49.34d | 22.66d | 741 | K |
|  | KP.DH | **Drive House of Conveyor 801** |  | 2025-04-01 | 2026-05-28 |  |  |  |  |  |  |  |  |
|  | CVRCC | **Civil/RCC Works** |  | 2025-04-01 | 2025-07-10 |  |  |  |  |  |  |  |  |
| C.KP.DH.CVRCC.1020 |  | Foundation | 15d | 2025-04-01 A | 2025-04-17 A | C.KP.EW.1120, DE.KP.C.1030 SS+60d, MA1040 FS+30d, MA1070 | 100% | 2025-04-05 | 2025-04-22 |  |  | 1113 | K |
| C.KP.DH.CVRCC.1030 |  | Pedestals & Tie Beams | 10d | 2025-04-18 A | 2025-04-30 A | C.KP.DH.CVRCC.1020 | 100% | 2026-01-19 | 2026-01-30 |  |  | 1114 | K |
| C.KP.DH.CVRCC.1040 |  | Back filling | 5d | 2025-05-01 A | 2025-05-06 A | C.KP.DH.CVRCC.1030 | 100% | 2026-01-31 | 2026-02-05 |  |  | 1115 | K |
| C.KP.DH.CVRCC.1050 |  | Flooring @ EL 722 | 5d | 2025-07-05 A | 2025-07-10 A | C.KP.DH.SSW.1030, C.KP.DH.CVRCC.1040 | 100% | 2026-04-10 | 2026-04-15 |  |  | 681 | K |
|  | SSW | **Structural Steel Works** |  | 2025-05-26 | 2025-08-02 |  |  |  |  |  |  |  |  |
| C.KP.DH.SSW.1010 |  | Columns from EL 722 to Truss | 15d | 2025-05-26 A | 2025-06-11 A | C.KP.DH.CVRCC.1030 FS+21d, DE.KP.C.1020 SS+120d, P.KP.SS.1030 SS | 100% | 2026-02-25 | 2026-03-14 |  |  | 1118 | K |
| C.KP.DH.SSW.1020 |  | Tie beams between EL 722 and Roof | 10d | 2025-06-12 A | 2025-06-23 A | C.KP.DH.SSW.1010 | 100% | 2026-03-16 | 2026-03-28 |  |  | 1119 | K |
| C.KP.DH.SSW.1030 |  | Truss @ Roof level | 10d | 2025-06-24 A | 2025-07-04 A | C.KP.DH.SSW.1020 | 100% | 2026-03-30 | 2026-04-09 |  |  | 1116 | K |
| C.KP.DH.SSW.1040 |  | Sheeting in Roof | 10d | 2025-07-05 A | 2025-07-16 A | C.KP.DH.SSW.1030 | 100% | 2026-04-10 | 2026-04-21 |  |  | 1120 | K |
| C.KP.DH.SSW.1050 |  | Sheeting in Cladding | 15d | 2025-07-17 A | 2025-08-02 A | C.KP.DH.SSW.1040 | 100% | 2026-04-22 | 2026-05-08 |  |  | 777 | K |
|  | MEE | **Mechanical/Equipment Erection** |  | 2026-02-03 | 2026-05-08 |  |  |  |  |  |  |  |  |
| C.KP.DH.MEE.1010 |  | Conveyor Components | 45d | 2026-02-03 A | 2026-03-30 A | C.KP.DH.SSW.1030, P.HT.PB.1050 SS+60d, P.HT.B.1050 SS+10d, P.HT.M.1050 SS+25d, P.HT.BT.1050, P.HT.GB.1050, P.HT.LSC.1050, P.HT.HSC.1050, P.HT.BK.1050, P.HT.ID.1050 SS+35d, P.HT.P.1050 SS+35d, P.HT.SC.1050 SS+15d | 100% | 2026-04-18 | 2026-06-11 |  |  | 1122 | K |
| C.KP.DH.MEE.1020 |  | Hoist | 5d | 2026-02-26 A | 2026-03-04 A | P.KP.H.1050, C.KP.DH.MEE.1010 SS | 100% | 2026-04-18 | 2026-04-24 |  |  | 1123 | K |
| C.KP.DH.MEE.1030 |  | Hood, Chutes, Skirts, Frames | 30d | 2026-04-04 A | 2026-05-08 A | P.HT.CF.1050 FS+25d | 100% | 2026-06-09 | 2026-07-14 |  |  | 1124 | K |
|  | EI | **E&I Works** |  | 2026-02-26 | 2026-05-28 |  |  |  |  |  |  |  |  |
| C.KP.DH.EI.1010 |  | E&I works - Drive House | 30d | 2026-02-26 A | 2026-05-28 A | C.KP.DH.MEE.1020 SS, C.KP.DH.MEE.1010 SS, C.KP.DH.MEE.1030 FF, C.KP.DH.EI.1020 FF, MS7 - Erec.Mech.PESt SS, MS8 - Erec.Electr.St SS, MSI5 - Erec.Inst.St. SS | 100% | 2026-06-25 | 2026-07-30 |  |  | 751 | K |
| C.KP.DH.EI.1020 |  | Calibration of Equipments | 30d | 2026-04-23 A | 2026-05-28 A | P.KP.IN.1050 | 100% | 2026-06-25 | 2026-07-30 |  |  | 1126 | K |
|  | KP.C806 | **Conveyor 806 (A,B,C&D)** |  | 2025-05-30 | 2026-09-05 |  |  |  |  |  |  |  |  |
|  | CVRCC | **Civil/RCC Works** |  | 2025-05-30 | 2025-08-01 |  |  |  |  |  |  |  |  |
| C.KP.C806.CVRCC.1020 |  | Foundation | 30d | 2025-05-30 A | 2025-07-03 A | C.KP.EW.1130, DE.KP.C.1030 SS+60d, C.KP.SB.CVRCC.1020, C.KP.SC.CVRCC.1030, MA1040 FS+30d, MA1070 FS+30d | 100% | 2026-01-31 | 2026-03-07 |  |  | 1129 | K |
| C.KP.C806.CVRCC.1030 |  | Pedestals & Tie Beams | 10d | 2025-07-04 A | 2025-07-15 A | C.KP.C806.CVRCC.1020 | 100% | 2026-03-09 | 2026-03-20 |  |  | 1130 | K |
| C.KP.C806.CVRCC.1040 |  | Back filling | 15d | 2025-07-16 A | 2025-08-01 A | C.KP.C806.CVRCC.1030 | 100% | 2026-03-21 | 2026-04-08 |  |  | 724 | K |

| ID | WBS | Activity | Duration | Start | Finish | Predecessors | Complete | Remaining | Planned start | Planned finish | Total float | Free float | MSP Activity ID | Responsibility |
| --- | --- | --- | --- | --- | --- | --- | --- | --- | --- | --- | --- | --- | --- | --- |
|  | SSW | **Structural Steel Works** |  | 2026-01-24 | 2026-07-03 |  |  |  |  |  |  |  |  |  |
| C.KP.C806.SSW.1020 |  | Gallery Assembling | 25d | 2026-01-24 A | 2026-03-04 A | C.KP.C806.SSW.1010 SS | 100% |  | 2026-03-16 | 2026-04-15 |  |  | 1133 | K |
| C.KP.C806.SSW.1010 |  | Trestle Erection | 40d | 2026-02-17 A | 2026-05-05 | C.KP.C806.CVRCC.1020 FS+21d, DE.KP.C.1020 SS+120d, P.KP.SS.1030 SS | 20% | 32d | 2026-03-30 | 2026-05-15 | -46d | 0d | 1132 | K |
| C.KP.C806.SSW.1030 |  | Gallery Erection | 15d | 2026-05-06 | 2026-05-23 | C.KP.C806.SSW.1010, C.KP.C806.SSW.1020 |  |  |  |  | -46d | 0d | 1134 | K |
| C.KP.C806.SSW.1040 |  | Sheeting in Roof | 15d | 2026-05-25 | 2026-06-10 | C.KP.C806.SSW.1030 |  |  |  |  | -46d | 0d | 1135 | K |
| C.KP.C806.SSW.1050 |  | Sheeting in Cladding | 20d | 2026-06-11 | 2026-07-03 | C.KP.C806.SSW.1040 |  |  |  |  | -46d | 21.8d | 767 | K |
|  | MEE | **Mechanical/Equipment Erection** |  | 2026-06-03 | 2026-08-19 |  |  |  |  |  |  |  |  |  |
| C.KP.C806.MEE.1030 |  | Hood, Chutes, Skirts, Frames | 30d | 2026-06-03 | 2026-07-08 | P.HT.CF.1050 |  |  |  |  | -9.34d | 50.66d | 1139 | K |
| C.KP.C806.MEE.1010 |  | Belt Weigh Scale | 5d | 2026-06-27 | 2026-07-02 | P.HT.BWS.1050, C.KP.C806.MEE.1020 SS |  |  |  |  | -60d | 0d | 1137 | K |
| C.KP.C806.MEE.1020 |  | Conveyor Components | 45d | 2026-06-27 | 2026-08-19 | C.KP.C806.SSW.1030, P.HT.PB.1050 SS+60d, P.HT.B.1050 SS+10d, P.HT.M.1050 SS+25d, P.HT.BT.1050, P.HT.GB.1050, P.HT.LSC.1050, P.HT.HSC.1050, P.HT.BK.1050, P.HT.ID.1050 SS+35d, P.HT.P.1050 SS+35d, P.HT.SC.1050 SS+15d |  |  |  |  | -60d | 0d | 1138 | K |
|  | EI | **E&I Works** |  | 2026-06-19 | 2026-09-05 |  |  |  |  |  |  |  |  |  |
| C.KP.C806.EI.1020 |  | Calibration of Equipments | 15d | 2026-06-19 | 2026-07-06 | P.KP.IN.1050 |  |  |  |  | -8d | 52d | 1141 | K |
| C.KP.C806.EI.1010 |  | E&I works - Conveyor 806 (A,B,C&D) | 60d | 2026-06-27 | 2026-09-05 | C.KP.C806.MEE.1020 SS, C.KP.C806.MEE.1010 SS, C.KP.C806.MEE.1030 FF, C.KP.C806.EI.1020 FF, MS7 - Erec.Mech.PESt SS, MS8 - Erec.Electr.St SS, MSI5 - Erec.Inst.St. SS |  |  |  |  | -60d | 12d | 736 | K |
|  | KP.C809,812 & 813 | **Conveyor 809, 812 & 813** |  | 2025-06-14 | 2026-08-25 |  |  |  |  |  |  |  |  |  |
|  | CVRCC | **Civil/RCC Works** |  | 2025-06-14 | 2025-08-23 |  |  |  |  |  |  |  |  |  |
| C.KP.C809.CVRCC.1020 |  | Foundation | 40d | 2025-06-14 A | 2025-07-12 A | C.KP.EW.1140, DE.KP.C.1030 SS+60d, C.KP.SC.CVRCC.1030, C.KP.TCP.CVRCC.1020, MA1040 FS+30d, MA1070 FS+30d | 100% |  | 2026-02-17 | 2026-04-07 |  |  | 1144 | K |
| C.KP.C809.CVRCC.1030 |  | Pedestals & Tie Beams | 15d | 2025-07-14 A | 2025-07-30 A | C.KP.C809.CVRCC.1020 | 100% |  | 2026-04-08 | 2026-04-24 |  |  | 1145 | K |
| C.KP.C809.CVRCC.1040 |  | Back filling | 18d | 2025-07-31 A | 2025-08-23 A | C.KP.C809.CVRCC.1030 | 100% |  | 2026-04-25 | 2026-05-16 |  |  | 682 | K |
|  | SSW | **Structural Steel Works** |  | 2026-04-10 | 2026-07-13 |  |  |  |  |  |  |  |  |  |
| C.KP.C809.SSW.1010 |  | Trestle Erection | 25d | 2026-04-10 | 2026-05-08 | C.KP.C809.CVRCC.1030 FS+21d, DE.KP.C.1020 SS+120d, P.KP.SS.1030 SS |  |  |  |  | -34d | 0d | 1147 | K |
| C.KP.C809.SSW.1020 |  | Gallery Assembling | 25d | 2026-04-10 | 2026-05-08 | C.KP.C809.SSW.1010 SS |  |  |  |  | -34d | 0d | 1148 | K |
| C.KP.C809.SSW.1030 |  | Gallery Erection | 20d | 2026-05-11 | 2026-06-02 | C.KP.C809.SSW.1010, C.KP.C809.SSW.1020 |  |  |  |  | -34d | 0d | 1149 | K |
| C.KP.C809.SSW.1040 |  | Sheeting in Roof | 15d | 2026-06-03 | 2026-06-19 | C.KP.C809.SSW.1030 |  |  |  |  | -34d | 0d | 1150 | K |
| C.KP.C809.SSW.1050 |  | Sheeting in Cladding | 20d | 2026-06-20 | 2026-07-13 | C.KP.C809.SSW.1040 |  |  |  |  | -34d | 33.8d | 781 | K |

| ID | WBS | Activity | Duration | Start | Finish | Predecessors | Complete | Remaining | Planned start | Planned finish | Total float | Free float | MSP Activity ID | Responsibility |
| --- | --- | --- | --- | --- | --- | --- | --- | --- | --- | --- | --- | --- | --- | --- |
|  | MEE | **Mechanical/Equipment Erection** |  | 2026-06-03 | 2026-08-19 |  |  |  |  |  |  |  |  |  |
| C.KP.C809.MEE.1020 |  | Hood, Chutes, Skirts, Frames | 30d | 2026-06-03 | 2026-07-08 | P.HT.CF.1050 |  |  |  |  | -49.34d | 0d | 1153 | K |
| C.KP.C809.MEE.1010 |  | Conveyor Components | 45d | 2026-06-27 | 2026-08-19 | C.KP.C809.SSW.1040 FF+10d, P.HT.PB.1050 SS+60d, P.HT.B.1050 SS+10d, P.HT.M.1050 SS+15d, P.HT.BT.1050, P.HT.GB.1050, P.HT.LSC.1050, P.HT.HSC.1050, P.HT.BK.1050, P.HT.ID.1050 SS+35d, P.HT.P.1050 SS+35d, P.HT.SC.1050 SS+15d |  |  |  |  | -40d | 9.34d | 1152 | K |
|  | EI | **E&I Works** |  | 2026-06-19 | 2026-08-25 |  |  |  |  |  |  |  |  |  |
| C.KP.C809.EI.1020 |  | Calibration of Equipments | 12d | 2026-06-19 | 2026-07-02 | P.KP.IN.1050 |  |  |  |  | -5d | 44.34d | 1155 | K |
| C.KP.C809.EI.1010 |  | E&I works - Conveyor 809, 812 & 813 | 40d | 2026-07-08 | 2026-08-25 | C.KP.C809.MEE.1010 SS, C.KP.C809.MEE.1020, C.KP.C809.EI.1020 FF, MS7 - Erec.Mech.PESt SS, MS8 - Erec.Electr.St SS, MSI5 - Erec.Inst.St. SS |  |  |  |  | -49.34d | 22.66d | 757 | K |
|  | KP.C810 | **Conveyor 810** |  | 2026-02-02 | 2026-09-19 |  |  |  |  |  |  |  |  |  |
|  | CVRCC | **Civil/RCC Works** |  | 2026-02-02 | 2026-05-19 |  |  |  |  |  |  |  |  |  |
| C.KP.C810.CVRCC.1020 |  | Foundation | 15d | 2026-02-02 A | 2026-04-27 | C.KP.EW.1150, DE.KP.C.1030 SS+60d, MA1040 FS+30d, MA1070 FS+30d | 10% | 35d | 2026-02-05 | 2026-02-21 | -72d | 0d | 1158 | K |
| C.KP.C810.CVRCC.1030 |  | Pedestals & Tie Beams | 10d | 2026-02-03 A | 2026-05-06 | C.KP.C810.CVRCC.1020 |  | 8d | 2026-03-30 | 2026-04-09 | -72d | 0d | 1159 | K |
| C.KP.C810.CVRCC.1040 |  | Back filling | 10d | 2026-05-07 | 2026-05-19 | C.KP.C810.CVRCC.1030 |  |  |  |  | -57d | 23d | 717 | K |
|  | SSW | **Structural Steel Works** |  | 2026-02-11 | 2026-08-27 |  |  |  |  |  |  |  |  |  |
| C.KP.C810.SSW.1020 |  | Gallery Assembling | 50d | 2026-02-11 A | 2026-07-16 | C.KP.C810.SSW.1010 FF+10d | 30% | 10d | 2026-05-15 | 2026-07-11 | -72d | 0d | 1162 | K |
| C.KP.C810.SSW.1030 |  | Gallery Erection | 65d | 2026-05-20 | 2026-08-03 | C.KP.C810.SSW.1010 FF+10d, C.KP.C810.SSW.1020 FF+15d |  |  |  |  | -72d | 0d | 1163 | K |
| C.KP.C810.SSW.1010 |  | Trestle Erection | 35d | 2026-05-26 | 2026-07-04 | C.KP.C810.CVRCC.1030 FS+15d, DE.KP.C.1020 SS+120d, P.KP.SS.1030 SS |  |  |  |  | -72d | 0d | 1161 | K |
| C.KP.C810.SSW.1040 |  | Sheeting in Roof | 15d | 2026-07-29 | 2026-08-14 | C.KP.C810.SSW.1030 FF+10d |  |  |  |  | -27d | 0d | 1164 | K |
| C.KP.C810.SSW.1050 |  | Sheeting in Cladding | 20d | 2026-08-04 | 2026-08-27 | C.KP.C810.SSW.1040 FF+10d |  |  |  |  | -27d | 40.8d | 771 | K |
|  | MEE | **Mechanical/Equipment Erection** |  | 2026-06-03 | 2026-09-14 |  |  |  |  |  |  |  |  |  |
| C.KP.C810.MEE.1030 |  | Hood, Chutes, Skirts, Frames | 30d | 2026-06-03 | 2026-07-08 | P.HT.CF.1050 |  |  |  |  | -9.34d | 62.66d | 1168 | K |
| C.KP.C810.MEE.1020 |  | Conveyor Components | 45d | 2026-07-17 | 2026-09-08 | C.KP.C810.SSW.1030 FF+30d, P.HT.PB.1050 SS+60d, P.HT.B.1050 SS+10d, P.HT.M.1050 SS+25d, P.HT.BT.1050, P.HT.GB.1050, P.HT.LSC.1050, P.HT.HSC.1050, P.HT.BK.1050, P.HT.ID.1050 SS+35d, P.HT.P.1050 SS+35d, P.HT.SC.1050 SS+15d |  |  |  |  | -72d | 0d | 1167 | K |
| C.KP.C810.MEE.1010 |  | Belt Weigh Scale | 5d | 2026-09-09 | 2026-09-14 | P.HT.BWS.1050, C.KP.C810.MEE.1020 |  |  |  |  | -72d | 0d | 1166 | K |
|  | EI | **E&I Works** |  | 2026-07-07 | 2026-09-19 |  |  |  |  |  |  |  |  |  |
| C.KP.C810.EI.1020 |  | Calibration of Equipments | 30d | 2026-07-07 | 2026-08-10 | P.KP.IN.1050 FS+15d |  |  |  |  | -38d | 34d | 1170 | K |
| C.KP.C810.EI.1010 |  | E&I works - Conveyor 810 | 50d | 2026-07-23 | 2026-09-19 | C.KP.C810.MEE.1020 SS, C.KP.C810.MEE.1010 FF+5d, C.KP.C810.MEE.1030 FF, C.KP.C810.EI.1020 FF, MS7 - Erec.Mech.PESt SS, MS8 - Erec.Electr.St SS, MSI5 - Erec.Inst.St. SS |  |  |  |  | -72d | 0d | 756 | K |

| ID | WBS | Activity | Duration | Start | Finish | Predecessors | Complete | Remaining | Planned start | Planned finish | Total float | Free float | MSP Activity ID | Responsibility |
| --- | --- | --- | --- | --- | --- | --- | --- | --- | --- | --- | --- | --- | --- | --- |
|  | KP.C823 | **Conveyor 823** |  | 2026-03-03 | 2026-09-21 |  |  |  |  |  |  |  |  |  |
|  | CVRCC | **Civil/RCC Works** |  | 2026-03-03 | 2026-06-04 |  |  |  |  |  |  |  |  |  |
| C.KP.C823.CVRCC.1020 |  | Foundation | 15d | 2026-03-03 A | 2026-05-12 | C.KP.EW.1160, DE.KP.C.1030 SS+60d, C.KP.C810.CVRCC.1020, MA1040 FS+30d, MA1070 FS+30d | 20% | 12d | 2026-04-28 | 2026-05-15 | -68d | 0d | 1173 | K |
| C.KP.C823.CVRCC.1030 |  | Pedestals & Tie Beams | 10d | 2026-05-13 | 2026-05-23 | C.KP.C823.CVRCC.1020 |  |  |  |  | -68d | 0d | 1174 | K |
| C.KP.C823.CVRCC.1040 |  | Back filling | 10d | 2026-05-25 | 2026-06-04 | C.KP.C823.CVRCC.1030 |  |  |  |  | -31d | 49d | 702 | K |
|  | SSW | **Structural Steel Works** |  | 2026-06-02 | 2026-09-15 |  |  |  |  |  |  |  |  |  |
| C.KP.C823.SSW.1010 |  | Trestle Erection | 50d | 2026-06-02 | 2026-07-29 | C.KP.C823.CVRCC.1030 FS+7d, DE.KP.C.1020 SS+120d, P.KP.SS.1030 SS |  |  |  |  | -68d | 0d | 1176 | K |
| C.KP.C823.SSW.1020 |  | Gallery Assembling | 85d | 2026-06-02 | 2026-09-09 | C.KP.C823.SSW.1010 SS |  |  |  |  | -68d | 0d | 1177 | K |
| C.KP.C823.SSW.1030 |  | Gallery Erection | 45d | 2026-06-13 | 2026-08-04 | C.KP.C823.SSW.1010 FF+5d, C.KP.C823.SSW.1020 SS+10d |  |  |  |  | -68d | 0d | 1178 | K |
| C.KP.C823.SSW.1040 |  | Sheeting in Roof | 15d | 2026-08-05 | 2026-08-22 | C.KP.C823.SSW.1030 |  |  |  |  | -58d | 0d | 1179 | K |
| C.KP.C823.SSW.1050 |  | Sheeting in Cladding | 20d | 2026-08-24 | 2026-09-15 | C.KP.C823.SSW.1040 |  |  |  |  | -58d | 9.8d | 765 | K |
|  | MEE | **Mechanical/Equipment Erection** |  | 2026-06-03 | 2026-09-21 |  |  |  |  |  |  |  |  |  |
| C.KP.C823.MEE.1020 |  | Hood, Chutes, Skirts, Frames | 30d | 2026-06-03 | 2026-07-08 | P.HT.CF.1050 |  |  |  |  | -9.34d | 58.66d | 1182 | K |
| C.KP.C823.MEE.1010 |  | Conveyor Components | 40d | 2026-08-05 | 2026-09-21 | C.KP.C823.SSW.1030, P.HT.PB.1050 SS+60d, P.HT.B.1050 SS+10d, P.HT.M.1050 SS+25d, P.HT.BT.1050, P.HT.GB.1050, P.HT.LSC.1050, P.HT.HSC.1050, P.HT.BK.1050, P.HT.ID.1050 SS+35d, P.HT.P.1050 SS+35d, P.HT.SC.1050 SS+15d |  |  |  |  | -68d | 0d | 1181 | K |
|  | EI | **E&I Works** |  | 2026-07-01 | 2026-09-15 |  |  |  |  |  |  |  |  |  |
| C.KP.C823.EI.1020 |  | Calibration of Equipments | 30d | 2026-07-01 | 2026-08-04 | P.KP.IN.1050 FS+10d |  |  |  |  | -33d | 35d | 1184 | K |
| C.KP.C823.EI.1010 |  | E&I works - Conveyor 823 | 35d | 2026-08-05 | 2026-09-15 | C.KP.C823.MEE.1010 SS, C.KP.C823.MEE.1020 FF, C.KP.C823.EI.1020 FF, MS7 - Erec.Mech.PESt SS, MS8 - Erec.Electr.St SS, MSI5 - Erec.Inst.St. SS |  |  |  |  | -68d | 4d | 739 | K |
|  | KP.C829 | **Conveyor 829** |  | 2026-01-27 | 2026-09-01 |  |  |  |  |  |  |  |  |  |
|  | CVRCC | **Civil/RCC Works** |  | 2026-01-27 | 2026-05-27 |  |  |  |  |  |  |  |  |  |
| C.KP.C829.CVRCC.1020 |  | Foundation | 40d | 2026-01-27 A | 2026-04-21 | C.KP.EW.1170, DE.KP.C.1030 SS+60d, MA1040 FS+30d, MA1070 FS+30d | 40% | 30d | 2026-02-05 | 2026-03-25 | -71d | 0d | 1187 | K |
| C.KP.C829.CVRCC.1030 |  | Pedestals & Tie Beams | 20d | 2026-02-05 A | 2026-04-21 | C.KP.C829.CVRCC.1020 FF | 20% | 5d | 2026-03-28 | 2026-04-20 | -56d | 0d | 1188 | K |
| C.KP.C829.CVRCC.1040 |  | Back filling | 20d | 2026-04-22 | 2026-05-15 | C.KP.C829.CVRCC.1030 |  |  |  |  | -44d | 0d | 1189 | K |
| C.KP.C829.CVRCC.1050 |  | Platform below Conveyor | 20d | 2026-05-04 | 2026-05-27 | C.KP.C829.CVRCC.1040 FF+10d |  |  |  |  | -44d | 36d | 719 | K |
|  | SSW | **Structural Steel Works** |  | 2026-04-30 | 2026-08-07 |  |  |  |  |  |  |  |  |  |
| C.KP.C829.SSW.1010 |  | Trestle Erection | 40d | 2026-04-30 | 2026-06-16 | C.KP.C829.CVRCC.1030 FS+7d, DE.KP.C.1020 SS+120d, P.KP.SS.1030 SS |  |  |  |  | -56d | 0d | 1191 | K |
| C.KP.C829.SSW.1020 |  | Gallery Assembling | 40d | 2026-05-25 | 2026-07-09 | C.KP.C829.SSW.1010 FF+20d |  |  |  |  | -56d | 0d | 1192 | K |
| C.KP.C829.SSW.1030 |  | Gallery Erection | 40d | 2026-05-30 | 2026-07-15 | C.KP.C829.SSW.1010 FF+15d, C.KP.C829.SSW.1020 FF+5d |  |  |  |  | -56d | 0d | 1193 | K |
| C.KP.C829.SSW.1040 |  | Sheeting in Roof | 15d | 2026-07-10 | 2026-07-27 | C.KP.C829.SSW.1030 FF+10d |  |  |  |  | -36d | 0d | 1194 | K |
| C.KP.C829.SSW.1050 |  | Sheeting in Cladding | 20d | 2026-07-16 | 2026-08-07 | C.KP.C829.SSW.1040 FF+10d |  |  |  |  | -36d | 31.8d | 770 | K |

| ID | WBS | Activity | Duration | Start | Finish | Predecessors | Total float | Free float | MSP Activity ID | Responsibility |
| --- | --- | --- | --- | --- | --- | --- | --- | --- | --- | --- |
|  | MEE | **Mechanical/Equipment Erection** |  | 2026-06-03 | 2026-08-26 |  |  |  |  |  |
| C.KP.C829.MEE.1030 |  | Hood, Chutes, Skirts, Frames (Assembly & Erection) | 20d | 2026-06-03 | 2026-06-26 | P.HT.CF.1050 | 0.66d | 56.66d | 1198 | K |
| C.KP.C829.MEE.1010 |  | Belt Weigh Scale | 5d | 2026-07-22 | 2026-07-27 | P.HT.BWS.1050, C.KP.C829.MEE.1020 SS | -36d | 20d | 1196 | K |
| C.KP.C829.MEE.1020 |  | Conveyor Components | 30d | 2026-07-22 | 2026-08-26 | C.KP.C829.SSW.1030 FS+5d, P.HT.PB.1050 SS+60d, P.HT.B.1050 SS+10d, P.HT.M.1050 SS+25d, P.HT.BT.1050, P.HT.GB.1050, P.HT.LSC.1050, P.HT.HSC.1050, P.HT.BK.1050, P.HT.ID.1050 SS+35d, P.HT.P.1050 SS+35d, P.HT.SC.1050 SS+15d | -56d | 0d | 1197 | K |
|  | EI | **E&I Works** |  | 2026-07-10 | 2026-09-01 |  |  |  |  |  |
| C.KP.C829.EI.1010 |  | E&I works - Conveyor 829 | 45d | 2026-07-10 | 2026-09-01 | C.KP.C829.MEE.1020 FF+5d, C.KP.C829.MEE.1010 FF+10d, C.KP.C829.MEE.1030 FF, C.KP.C829.EI.1020 FF, MS7 - Erec.Mech.PESt SS, MS8 - Erec.Electr.St SS, MSI5 - Erec.Inst.St. SS | -56d | 16d | 731 | K |
| C.KP.C829.EI.1020 |  | Calibration of Equipments | 30d | 2026-07-18 | 2026-08-22 | P.KP.IN.1050 FS+25d | -48d | 8d | 1200 | K |
|  | KP.C832 | **Conveyor 832** |  | 2026-04-22 | 2026-09-18 |  |  |  |  |  |
|  | CVRCC | **Civil/RCC Works** |  | 2026-04-22 | 2026-05-11 |  |  |  |  |  |
| C.KP.C832.CVRCC.1020 |  | Foundation | 15d | 2026-04-22 | 2026-05-08 | C.KP.EW.1180, DE.KP.C.1030 SS+60d, C.KP.C829.CVRCC.1020, MA1040 FS+30d, MA1070 FS+30d | -71d | 0d | 1203 | K |
| C.KP.C832.CVRCC.1030 |  | Pedestals & Tie Beams | 10d | 2026-04-22 | 2026-05-02 | C.KP.C832.CVRCC.1020 SS | -71d | 0d | 1204 | K |
| C.KP.C832.CVRCC.1040 |  | Back filling | 6d | 2026-05-04 | 2026-05-11 | C.KP.C832.CVRCC.1030 | -10d | 70d | 692 | K |
|  | SSW | **Structural Steel Works** |  | 2026-05-13 | 2026-09-01 |  |  |  |  |  |
| C.KP.C832.SSW.1010 |  | Trestle Erection | 40d | 2026-05-13 | 2026-06-27 | C.KP.C832.CVRCC.1030 FS+7d, DE.KP.C.1020 SS+120d, P.KP.SS.1030 SS | -71d | 0d | 1206 | K |
| C.KP.C832.SSW.1020 |  | Gallery Assembling | 60d | 2026-05-25 | 2026-08-01 | C.KP.C832.SSW.1010 FF+30d | -71d | 0d | 1207 | K |
| C.KP.C832.SSW.1030 |  | Gallery Erection | 45d | 2026-06-17 | 2026-08-07 | C.KP.C832.SSW.1010 FF+20d, C.KP.C832.SSW.1020 SS+20d | -71d | 0d | 1208 | K |
| C.KP.C832.SSW.1040 |  | Sheeting in Roof | 15d | 2026-08-03 | 2026-08-20 | C.KP.C832.SSW.1030 FF+10d | -56d | 0d | 1209 | K |
| C.KP.C832.SSW.1050 |  | Sheeting in Cladding | 20d | 2026-08-08 | 2026-09-01 | C.KP.C832.SSW.1040 FF+10d | -56d | 11.8d | 764 | K |
|  | MEE | **Mechanical/Equipment Erection** |  | 2026-06-03 | 2026-08-26 |  |  |  |  |  |
| C.KP.C832.MEE.1030 |  | Hood, Chutes, Skirts, Frames | 30d | 2026-06-03 | 2026-07-08 | P.HT.CF.1050 | -9.34d | 61.66d | 1213 | K |
| C.KP.C832.MEE.1020 |  | Conveyor Components | 35d | 2026-07-10 | 2026-08-20 | C.KP.C832.SSW.1030 FF+10d, P.HT.PB.1050 SS+60d, P.HT.B.1050 SS+10d, P.HT.M.1050 SS+25d, P.HT.BT.1050, P.HT.GB.1050, P.HT.LSC.1050, P.HT.HSC.1050, P.HT.BK.1050, P.HT.ID.1050 SS+35d, P.HT.P.1050 SS+35d, P.HT.SC.1050 SS+15d | -71d | 0d | 1212 | K |
| C.KP.C832.MEE.1010 |  | Belt Weigh Scale | 5d | 2026-08-21 | 2026-08-26 | P.HT.BWS.1050, C.KP.C832.MEE.1020 | -61d | 10d | 1211 | K |
|  | EI | **E&I Works** |  | 2026-06-19 | 2026-09-18 |  |  |  |  |  |
| C.KP.C832.EI.1020 |  | Calibration of Equipments | 30d | 2026-06-19 | 2026-07-23 | P.KP.IN.1050 | -23d | 48d | 1215 | K |
| C.KP.C832.EI.1010 |  | E&I works - Conveyor 832 | 40d | 2026-08-03 | 2026-09-18 | C.KP.C832.MEE.1020 SS+20d, C.KP.C832.MEE.1010 FF+10d, C.KP.C832.MEE.1030 FF, C.KP.C832.EI.1020 FF, MS7 - Erec.Mech.PESt SS, MS8 - Erec.Electr.St SS, MSI5 - Erec.Inst.St. SS | -71d | 1d | 748 | K |

| ID | WBS | Activity | Duration | Start | Finish | Predecessors | Total float | Free float | MSP Activity ID | Responsibility |
| --- | --- | --- | --- | --- | --- | --- | --- | --- | --- | --- |
|  | KP.DFDS | **Compressor Cum Dust Suppression Pump House** |  | 2026-04-10 | 2026-07-30 |  |  |  |  |  |
|  | CVRCC | **Civil/RCC Works** |  | 2026-04-10 | 2026-07-07 |  |  |  |  |  |
| C.KP.DFDS.CVRCC.1020 |  | Foundation | 25d | 2026-04-10 | 2026-05-08 | C.KP.EW.1190 FS+70d, DE.KP.DFDS.1030 SS+60d, DE.KP.DFDS.1010 FS+5d | -29d | 0d | 1218 | K |
| C.KP.DFDS.CVRCC.1030 |  | Pedestals & Tie Beams | 10d | 2026-05-04 | 2026-05-15 | C.KP.DFDS.CVRCC.1020 FF+5d | -29d | 0d | 1219 | K |
| C.KP.DFDS.CVRCC.1040 |  | Walls up to Ground Floor | 15d | 2026-05-04 | 2026-05-21 | C.KP.DFDS.CVRCC.1020 FF, C.KP.DFDS.CVRCC.1030 FF+5d | -29d | 0d | 1220 | K |
| C.KP.DFDS.CVRCC.1050 |  | Back filling | 5d | 2026-05-22 | 2026-05-27 | C.KP.DFDS.CVRCC.1040 FF+5d, C.KP.DFDS.CVRCC.1030 FF+5d, C.KP.DFDS.WW.1010 FF+5d | -29d | 0d | 1221 | K |
| C.KP.DFDS.CVRCC.1060 |  | Slab @ Ground Level | 10d | 2026-05-28 | 2026-06-08 | C.KP.DFDS.CVRCC.1050 | -29d | 0d | 1223 | K |
| C.KP.DFDS.CVRCC.1070 |  | Walls up From Ground to Roof Level | 15d | 2026-06-09 | 2026-06-25 | C.KP.DFDS.CVRCC.1060 | -29d | 0d | 1224 | K |
| C.KP.DFDS.CVRCC.1080 |  | Slab @ Roof Level | 10d | 2026-06-26 | 2026-07-07 | C.KP.DFDS.CVRCC.1070 | -29d | 0d | 678 | K |
|  | WW | **Waterproofing Works** |  | 2026-04-16 | 2026-07-24 |  |  |  |  |  |
| C.KP.DFDS.WW.1010 |  | Foundation waterproofing | 0d | 2026-04-16 | 2026-04-16 | C.KP.DFDS.CVRCC.1020 SS+5d | 1d | 30d | 1222 | K |
| C.KP.DFDS.WW.1020 |  | Tank waterproofing | 20d | 2026-06-26 | 2026-07-18 | C.KP.DFDS.CVRCC.1080 FF+10d | -29d | 0d | 1226 | K |
| C.KP.DFDS.WW.1030 |  | Terrace waterproofing | 15d | 2026-07-08 | 2026-07-24 | C.KP.DFDS.CVRCC.1080 | -19d | 61d | 698 | K |
|  | MEE | **Mechanical/Equipment Erection** |  | 2026-06-26 | 2026-07-18 |  |  |  |  |  |
| C.KP.DFDS.MEE.1010 |  | DFDS System ( Pump, Compressor, Air Dryer, Valves, Strainer, Flow Activity Station ) | 20d | 2026-06-26 | 2026-07-18 | P.KP.DFDS.1050 SS+20d, C.KP.DFDS.WW.1020 FF, P.KP.CAS.1050 SS+20d | -29d | 0d | 1228 | K |
|  | EI | **E&I Works** |  | 2026-06-26 | 2026-07-30 |  |  |  |  |  |
| C.KP.DFDS.EI.1010 |  | E&I works - DFDS Pump cum Central Compressor House | 30d | 2026-06-26 | 2026-07-30 | C.KP.DFDS.MEE.1010 SS, DE.KP.DFDS.1040 FS+35d, C.KP.DFDS.EI.1020 FF, MS7 - Erec.Mech.PESt SS, MS8 - Erec.Electr.St SS, MSI5 - Erec.Inst.St. SS | -29d | 0d | 755 | K |
| C.KP.DFDS.EI.1020 |  | Calibration of Equipments | 15d | 2026-07-01 | 2026-07-17 | P.KP.IN.1050 FS+10d | -18d | 11d | 1230 | K |
|  | KP.FFPH | **Fire Fighting Pump House** |  | 2026-03-16 | 2026-08-29 |  |  |  |  |  |
|  | CVRCC | **Civil/RCC Works** |  | 2026-03-16 | 2026-06-22 |  |  |  |  |  |
| C.KP.FFPH.CVRCC.1020 |  | Foundation | 30d | 2026-03-16 | 2026-04-21 | C.KP.EW.1200 FF+15d, DE.MISC,1050 SS+60d, MA1040 FS+30d, MA1070 FS+30d | -64d | 0d | 1233 | K |
| C.KP.FFPH.CVRCC.1040 |  | Walls up to Ground Floor | 15d | 2026-03-23 | 2026-04-09 | C.KP.FFPH.CVRCC.1020 SS+5d | -47d | 17d | 1235 | K |
| C.KP.FFPH.CVRCC.1030 |  | Pedestals & Tie Beams | 15d | 2026-04-13 | 2026-04-29 | C.KP.FFPH.CVRCC.1020 FF+7d | -64d | 0d | 1234 | K |
| C.KP.FFPH.CVRCC.1050 |  | Back filling | 5d | 2026-04-30 | 2026-05-05 | C.KP.FFPH.CVRCC.1040, C.KP.FFPH.CVRCC.1030, C.KP.FFPH.WW.1010 | -64d | 0d | 1236 | K |
| C.KP.FFPH.CVRCC.1060 |  | Slab @ Ground Level | 10d | 2026-05-06 | 2026-05-18 | C.KP.FFPH.CVRCC.1050 | -64d | 0d | 1238 | K |
| C.KP.FFPH.CVRCC.1070 |  | Columns & Walls up From Ground to Roof Level | 15d | 2026-05-19 | 2026-06-04 | C.KP.FFPH.CVRCC.1060 | -64d | 0d | 1239 | K |
| C.KP.FFPH.CVRCC.1080 |  | Slab & Beams @ Roof Level | 10d | 2026-06-05 | 2026-06-16 | C.KP.FFPH.CVRCC.1070 | -64d | 0d | 1240 | K |
| C.KP.FFPH.CVRCC.1090 |  | Above Terrace works | 8d | 2026-06-13 | 2026-06-22 | C.KP.FFPH.CVRCC.1080 FF+5d | -64d | 0d | 705 | K |

| ID | WBS | Activity | Duration | Start | Finish | Predecessors | Complete | Remaining | Planned start | Planned finish | Total float | Free float | MSP Activity ID | Responsibility |
| --- | --- | --- | --- | --- | --- | --- | --- | --- | --- | --- | --- | --- | --- | --- |
|  | WW | **Waterproofing Works** |  | 2026-03-23 | 2026-07-29 |  |  |  |  |  |  |  |  |  |
| C.KP.FFPH.WW.1010 |  | Foundation waterproofing | 20d | 2026-03-23 | 2026-04-15 | C.KP.FFPH.CVRCC.1020 SS+5d |  |  |  |  | -52d | 12d | 1237 | K |
| C.KP.FFPH.WW.1030 |  | Terrace waterproofing | 15d | 2026-06-23 | 2026-07-09 | C.KP.FFPH.CVRCC.1090 |  |  |  |  | -61d | 19d | 674 | K |
| C.KP.FFPH.WW.1020 |  | Tank waterproofing | 30d | 2026-06-25 | 2026-07-29 | C.KP.FFPH.CVRCC.1080 FS+7d |  |  |  |  | -48d | 0d | 1242 | K |
|  | FW | **Finishing Works** |  | 2026-06-23 | 2026-08-29 |  |  |  |  |  |  |  |  |  |
| C.KP.FFPH.FW.1010 |  | Masonry works | 21d | 2026-06-23 | 2026-07-16 | C.KP.FFPH.CVRCC.1090, DE.MISC,1030 SS+60d |  |  |  |  | -64d | 0d | 1244 | K |
| C.KP.FFPH.FW.1020 |  | Plastering works | 20d | 2026-07-02 | 2026-07-24 | C.KP.FFPH.FW.1010 FF+7d |  |  |  |  | -64d | 0d | 1245 | K |
| C.KP.FFPH.FW.1030 |  | Painting works | 15d | 2026-07-25 | 2026-08-11 | C.KP.FFPH.FW.1020 |  |  |  |  | -64d | 0d | 1246 | K |
| C.KP.FFPH.FW.1050 |  | Rolling Shutter | 10d | 2026-07-25 | 2026-08-05 | C.KP.FFPH.FW.1020 |  |  |  |  | -64d | 16d | 707 | K |
| C.KP.FFPH.FW.1040 |  | Joinery works | 15d | 2026-08-12 | 2026-08-29 | C.KP.FFPH.FW.1020, C.KP.FFPH.FW.1030 |  |  |  |  | -64d | 16d | 714 | K |
|  | MEE | **Mechanical / Equipment Erection** |  | 2026-06-25 | 2026-08-10 |  |  |  |  |  |  |  |  |  |
| C.KP.FFHP.MEE.1010 |  | Fire Water System ( Main Pump, Diesel Pump, Jockey Pump, Valves, Strainer, MVWS ) | 40d | 2026-06-25 | 2026-08-10 | P.KP.FWS.1050 SS+20d, C.KP.FFPH.WW.1020 FF+10d, P.KP.DGS.1050 SS+5d |  |  |  |  | -48d | 0d | 1248 | K |
|  | EI | **E&I Works** |  | 2026-05-27 | 2026-08-22 |  |  |  |  |  |  |  |  |  |
| C.KP.FFPH.EI.1020 |  | Calibration of Equipments | 30d | 2026-05-27 | 2026-06-30 | P.KP.IN.1050 FF+10d |  |  |  |  | -3d | 45d | 1250 | K |
| C.KP.FFPH.EI.1010 |  | E&I works - Fire Fighting Pump House | 30d | 2026-07-18 | 2026-08-22 | C.KP.FFHP.MEE.1010 FF+10d, C.KP.FFPH.EI.1020 FF, MS7 - Erec.Mech.PESt SS, MS8 - Erec.Electr.St SS, MSI5 - Erec.Inst.St. SS |  |  |  |  | -48d | 0d | 760 | K |
|  | KP.PWPH | **Process Water Pump House** |  | 2025-07-03 | 2026-06-23 |  |  |  |  |  |  |  |  |  |
|  | CVRCC | **Civil/RCC Works** |  | 2025-07-03 | 2026-04-24 |  |  |  |  |  |  |  |  |  |
| C.KP.PWPH.CVRCC.1020 |  | Foundation | 20d | 2025-07-03 A | 2025-07-28 A | C.KP.EW.1210, DE.KP.PWPH.1020 SS+50d, DE.KP.PWPH.1010 SS+200d, MA1040 FS+30d, MA1070 FS+30d | 100% |  | 2025-08-13 | 2025-09-06 |  |  | 1253 | K |
| C.KP.PWPH.CVRCC.1030 |  | Pedestals & Tie Beams | 20d | 2025-07-31 A | 2025-08-19 A | C.KP.PWPH.CVRCC.1020 FF+7d | 100% |  | 2026-01-27 | 2026-02-18 |  |  | 1254 | K |
| C.KP.PWPH.CVRCC.1040 |  | Walls up to Ground Floor | 15d | 2025-08-20 A | 2025-09-24 A | C.KP.PWPH.CVRCC.1030 FF+7d | 100% |  | 2026-02-10 | 2026-02-26 |  |  | 1255 | K |
| C.KP.PWPH.CVRCC.1060 |  | Slab @ Ground Level | 10d | 2025-09-16 A | 2026-04-08 | C.KP.PWPH.CVRCC.1050 FF+7d | 90% | 1d | 2026-03-27 | 2026-04-08 | -61.94d | 0d | 1258 | K |
| C.KP.PWPH.CVRCC.1070 |  | Walls up From Ground to Roof Level | 15d | 2025-09-24 A | 2026-04-16 | C.KP.PWPH.CVRCC.1060 FF+7d | 60% | 6d | 2026-03-30 | 2026-04-16 | -61.94d | 0d | 1259 | K |
| C.KP.PWPH.CVRCC.1050 |  | Back filling | 6d | 2026-03-23 | 2026-03-31 | C.KP.PWPH.CVRCC.1040 FS+145d, C.KP.PWPH.CVRCC.1030, C.KP.PWPH.WW.1010 |  |  |  |  | -61.94d | 0d | 1256 | K |
| C.KP.PWPH.CVRCC.1080 |  | Slab @ Roof Level | 10d | 2026-04-13 | 2026-04-24 | C.KP.PWPH.CVRCC.1070 FF+7d |  |  |  |  | -61.94d | 0d | 715 | K |

| ID | WBS | Activity | Duration | Start | Finish | Predecessors | Complete | Planned start | Planned finish | Total float | Free float | MSP Activity ID | Responsibility |
| --- | --- | --- | --- | --- | --- | --- | --- | --- | --- | --- | --- | --- | --- |
|  | WW | **Waterproofing Works** |  | 2025-07-03 | 2026-06-11 |  |  |  |  |  |  |  |  |
| C.KP.PWPH.WW.1010 |  | Foundation waterproofing | 20d | 2025-07-03 A | 2025-07-28 A | C.KP.PWPH.CVRCC.1020 SS+5d | 100% | 2026-02-05 | 2026-02-27 |  |  | 1257 | K |
| C.KP.PWPH.WW.1030 |  | Terrace waterproofing | 15d | 2026-04-24 | 2026-05-13 | C.KP.PWPH.CVRCC.1080 |  |  |  | -61.94d | 18.06d | 699 | K |
| C.KP.PWPH.WW.1020 |  | Tank waterproofing | 25d | 2026-05-13 | 2026-06-11 | C.KP.PWPH.CVRCC.1080 FS+15d |  |  |  | 3.06d | 0d | 1261 | K |
|  | MEE | **Mechanical / Equipment Erection** |  | 2026-05-30 | 2026-06-17 |  |  |  |  |  |  |  |  |
| C.KP.PWPH.MEE.1010 |  | Process Water Pump | 15d | 2026-05-30 | 2026-06-17 | P.TM.PU.PWSW1050, C.KP.PWPH.WW.1020 FF+5d |  |  |  | 3.06d | 0d | 1263 | K |
| C.KP.PWPH.MEE.1020 |  | Process Water Storage Tank | 15d | 2026-05-30 | 2026-06-17 | P.TM.PU.PWSW1050, C.KP.PWPH.WW.1020 FF+5d |  |  |  | 3.06d | 0d | 1264 | K |
|  | EI | **E&I Works** |  | 2026-05-06 | 2026-06-23 |  |  |  |  |  |  |  |  |
| C.KP.PWPH.EI.1010 |  | E&I works - Process Water Storage Tank | 40d | 2026-05-06 | 2026-06-23 | C.KP.PWPH.MEE.1020 FF+5d, C.KP.PWPH.MEE.1010 FF+5d, DE.KP.PWPH.1030 FF+10d, C.KP.PWPH.EI.1020 FF, MS7 - Erec.Mech.PESt SS, MS8 - Erec.Electr.St SS, MSI5 - Erec.Inst.St. SS |  |  |  | 3.06d | 52.06d | 738 | K |
| C.KP.PWPH.EI.1020 |  | Calibration of Equipments | 1d | 2026-06-19 | 2026-06-19 | P.KP.IN.1050 |  |  |  | 6d | 2.94d | 1266 | K |
|  | KP.WB | **Maintenance workshop** |  | 2025-07-18 | 2026-07-23 |  |  |  |  |  |  |  |  |
|  | CVRCC | **Civil/RCC Works** |  | 2025-07-18 | 2026-04-03 |  |  |  |  |  |  |  |  |
| C.KP.WB.CVRCC.1020 |  | Foundation | 15d | 2025-07-18 A | 2025-10-14 A | C.KP.EW.1220, DE.KP.WB.1030 SS+100d, MA1040 FS+30d, MA1070 FS+30d | 100% | 2025-07-25 | 2025-08-12 |  |  | 1269 | K |
| C.KP.WB.CVRCC.1030 |  | Pedestals & Tie Beams | 10d | 2025-08-09 A | 2025-11-03 A | C.KP.WB.CVRCC.1020 | 100% | 2025-10-25 | 2025-11-06 |  |  | 1270 | K |
| C.KP.WB.CVRCC.1040 |  | Walls up to Ground Floor | 15d | 2025-09-16 A | 2025-10-24 A | C.KP.WB.CVRCC.1030 | 100% | 2025-10-25 | 2025-11-13 |  |  | 1271 | K |
| C.KP.WB.CVRCC.1050 |  | Back filling | 6d | 2025-11-10 A | 2025-11-17 A | C.KP.WB.CVRCC.1040, C.KP.WB.CVRCC.1030 | 100% | 2025-11-26 | 2025-12-03 |  |  | 1272 | K |
| C.KP.WB.CVRCC.1060 |  | Flooring | 15d | 2026-03-16 | 2026-04-03 | C.KP.WB.CVRCC.1050 |  |  |  | 1d | 81d | 722 | K |
|  | SSW | **Structural Steel Works** |  | 2025-10-15 | 2026-04-27 |  |  |  |  |  |  |  |  |
| C.KP.WB.SSW.1010 |  | Columns up tp +8m Lvl. | 20d | 2025-10-15 A | 2025-12-15 A | C.KP.WB.CVRCC.1030, DE.KP.WB.1020 SS+120d, P.KP.SS.1030 SS | 100% | 2025-10-25 | 2025-11-19 |  |  | 1274 | K |
| C.KP.WB.SSW.1050 |  | Columns Above +8m Lvl. up to Truss | 20d | 2025-12-16 A | 2026-01-06 A | C.KP.WB.SSW.1040 | 100% | 2026-02-27 | 2026-03-24 |  |  | 1278 | K |
| C.KP.WB.SSW.1030 |  | EOT Crane - Railing & Beams @ +8m Lvl. | 10d | 2025-12-20 A | 2025-12-31 A | C.KP.WB.SSW.1020 | 100% | 2026-02-04 | 2026-02-14 |  |  | 1276 | K |
| C.KP.WB.SSW.1020 |  | Truss @ +8m Lvl. | 15d | 2025-12-22 A | 2026-01-09 A | C.KP.WB.SSW.1010 | 100% | 2026-01-10 | 2026-01-29 |  |  | 1275 | K |
| C.KP.WB.SSW.1040 |  | EOT Crane - Platform @ +8m Lvl. | 10d | 2026-01-16 A | 2026-01-23 A | C.KP.WB.SSW.1030 | 100% | 2026-01-16 | 2026-01-28 |  |  | 1277 | K |
| C.KP.WB.SSW.1060 |  | Truss @ Roof level | 15d | 2026-01-16 A | 2026-02-25 A | C.KP.WB.SSW.1050 | 100% | 2026-02-05 | 2026-02-21 |  |  | 1279 | K |
| C.KP.WB.SSW.1070 |  | Sheeting in Roof | 15d | 2026-03-16 | 2026-04-03 | C.KP.WB.SSW.1060 |  |  |  | -49d | 0d | 1280 | K |
| C.KP.WB.SSW.1080 |  | Sheeting in Cladding | 20d | 2026-04-04 | 2026-04-27 | C.KP.WB.SSW.1070 |  |  |  | -49d | 18.8d | 769 | K |

| ID | WBS | Activity | Duration | Start | Finish | Predecessors | Total float | Free float | MSP Activity ID | Responsibility |
| --- | --- | --- | --- | --- | --- | --- | --- | --- | --- | --- |
|  | MEE | **Mechanical / Equipment Erection** |  | 2026-03-16 | 2026-04-21 |  |  |  |  |  |
| C.KP.WB.MEE.1010 |  | EOT Crane | 30d | 2026-03-16 | 2026-04-21 | P.KP.EOT.1050, C.KP.WB.SSW.1030 | 76d | 49d | 1282 | K |
|  | EI | **E&I Works** |  | 2026-06-19 | 2026-07-23 |  |  |  |  |  |
| C.KP.WB.EI.1010 |  | E&I works - Maintenance workshop | 30d | 2026-06-19 | 2026-07-23 | C.KP.WB.MEE.1010, DE.KP.WB.1040 FS+90d, C.KP.WB.EI.1020 FF, MS7 - Erec.Mech.PESt SS, MS8 - Erec.Electr.St SS, MSI5 - Erec.Inst.St. SS | 27d | 90d | 758 | K |
| C.KP.WB.EI.1020 |  | Calibration of Equipments | 15d | 2026-07-07 | 2026-07-23 | P.KP.IN.1050 FS+15d | 27d | 0d | 1284 | K |
|  | KP.CWS | **Cooling Water system pumping station** |  | 2026-03-16 | 2026-08-11 |  |  |  |  |  |
|  | CVRCC | **Civil/RCC Works** |  | 2026-03-16 | 2026-05-23 |  |  |  |  |  |
| C.KP.CWS.CVRCC.1020 |  | Foundation | 40d | 2026-03-16 | 2026-05-02 | C.KP.EW.1230 FF+15d, DE.MISC,1050 SS+60d, MA1040 FS+30d, MA1070 FS+30d | -39d | 0d | 1287 | K |
| C.KP.CWS.CVRCC.1040 |  | Walls up to Ground Floor | 20d | 2026-03-30 | 2026-04-21 | C.KP.CWS.CVRCC.1020 SS+10d | -6d | 15d | 1289 | K |
| C.KP.CWS.CVRCC.1030 |  | Pedestals & Tie Beams | 20d | 2026-04-16 | 2026-05-08 | C.KP.CWS.CVRCC.1020 FF+5d | -39d | 0d | 1288 | K |
| C.KP.CWS.CVRCC.1050 |  | Back filling | 6d | 2026-05-11 | 2026-05-16 | C.KP.CWS.CVRCC.1040, C.KP.CWS.CVRCC.1030 | -21d | 0d | 1290 | K |
| C.KP.CWS.CVRCC.1060 |  | Flooring | 6d | 2026-05-18 | 2026-05-23 | C.KP.CWS.CVRCC.1050 | -21d | 59d | 701 | K |
|  | SSW | **Structural Steel Works** |  | 2026-04-22 | 2026-06-19 |  |  |  |  |  |
| C.KP.CWS.SSW.1010 |  | Columns from Ground to Roof Level | 15d | 2026-04-22 | 2026-05-08 | C.KP.CWS.CVRCC.1030 SS+5d, DE.MISC,1040 SS+120d, P.KP.SS.1030 SS | -39d | 0d | 1292 | K |
| C.KP.CWS.SSW.1020 |  | Tie Beams | 10d | 2026-05-11 | 2026-05-21 | C.KP.CWS.SSW.1010 | -39d | 0d | 1293 | K |
| C.KP.CWS.SSW.1030 |  | Truss @ Roof level | 15d | 2026-05-22 | 2026-06-08 | C.KP.CWS.SSW.1020 | -39d | 0d | 1294 | K |
| C.KP.CWS.SSW.1050 |  | Sheeting in Cladding | 15d | 2026-06-03 | 2026-06-19 | C.KP.CWS.SSW.1030 FF+10d | -14d | 10d | 1296 | K |
| C.KP.CWS.SSW.1040 |  | Sheeting in Roof | 10d | 2026-06-09 | 2026-06-19 | C.KP.CWS.SSW.1030 | -24d | 0d | 1295 | K |
|  | MEE | **Mechanical / Equipment Erection** |  | 2026-06-09 | 2026-07-30 |  |  |  |  |  |
| C.KP.CWS.MEE.1020 |  | Cooling Tower | 45d | 2026-06-09 | 2026-07-30 | P.KP.CWS.1060 FF+10d, C.KP.CWS.SSW.1030 | -39d | 0d | 1299 | K |
| C.KP.CWS.MEE.1010 |  | Cooling Water Pump | 20d | 2026-06-20 | 2026-07-13 | P.KP.CWS.1060, C.KP.CWS.SSW.1040, C.KP.CWS.SSW.1050 FF+10d, P.KP.SP.1050 | -24d | 15d | 1298 | K |
| C.KP.CWS.MEE.1030 |  | Valves, Strainer | 20d | 2026-06-20 | 2026-07-13 | P.KP.CWS.1060, C.KP.CWS.SSW.1040 | -24d | 15d | 1300 | K |
|  | EI | **E&I Works** |  | 2026-06-08 | 2026-08-11 |  |  |  |  |  |
| C.KP.CWS.EI.1020 |  | Calibration of Equipments | 20d | 2026-06-08 | 2026-06-30 | P.KP.IN.1050 FF+10d | -3d | 36d | 1302 | K |
| C.KP.CWS.EI.1010 |  | E&I works - Cooling water system pumping station | 30d | 2026-07-08 | 2026-08-11 | C.KP.CWS.MEE.1030 FF+10d, C.KP.CWS.MEE.1020 FF+10d, C.KP.CWS.MEE.1010 FF+10d, C.KP.CWS.EI.1020 FF, MS7 - Erec.Mech.PESt SS, MS8 - Erec.Electr.St SS, MSI5 - Erec.Inst.St. SS | -39d | 0d | 732 | K |

| ID | WBS | Activity | Duration | Start | Finish | Predecessors | Complete | Planned start | Planned finish | Total float | Free float | MSP Activity ID | Responsibility |
| --- | --- | --- | --- | --- | --- | --- | --- | --- | --- | --- | --- | --- | --- |
|  | KP.PSTD | **Tailing Dam Pump House** |  | 2026-06-25 | 2026-11-09 |  |  |  |  |  |  |  |  |
|  | CVRCC | **Civil/RCC Works** |  | 2026-08-12 | 2026-10-27 |  |  |  |  |  |  |  |  |
| C.KP.PSTD.CVRCC.1030 |  | Pedestals & Tie Beams | 30d | 2026-08-12 | 2026-09-16 | C.KP.PSTD.CVRCC.1020 FF+5d |  |  |  | -83d | 0d | 1306 | K |
| C.KP.PSTD.CVRCC.1020 |  | Foundation | 15d | 2026-08-25 | 2026-09-10 | C.KP.EW.1240 FF+5d, DE.KP.PSTD.1020 SS+30d |  |  |  | -83d | 0d | 1305 | K |
| C.KP.PSTD.CVRCC.1040 |  | Walls up to Ground Floor | 15d | 2026-08-31 | 2026-09-16 | C.KP.PSTD.CVRCC.1020 FF+5d |  |  |  | -80d | 0d | 1307 | K |
| C.KP.PSTD.CVRCC.1050 |  | Back filling | 10d | 2026-10-05 | 2026-10-15 | C.KP.PSTD.CVRCC.1040 SS+7d, C.KP.PSTD.CVRCC.1030, C.KP.PSTD.WP.1010 |  |  |  | -74d | 0d | 1308 | K |
| C.KP.PSTD.CVRCC.1060 |  | Flooring | 10d | 2026-10-16 | 2026-10-27 | C.KP.PSTD.CVRCC.1050 |  |  |  | -74d | 6d | 693 | K |
|  | SSW | **Structural Steel Works** |  | 2026-09-08 | 2026-10-22 |  |  |  |  |  |  |  |  |
| C.KP.PSTD.SSW.1010 |  | Columns from Ground to Roof Level | 15d | 2026-09-08 | 2026-09-24 | C.KP.PSTD.CVRCC.1030 FF+7d, DE.KP.PSTD.1010 SS+120d, P.KP.SS.1030 SS |  |  |  | -83d | 0d | 1311 | K |
| C.KP.PSTD.SSW.1020 |  | Tie Beams | 10d | 2026-09-22 | 2026-10-02 | C.KP.PSTD.SSW.1010 FF+7d |  |  |  | -83d | 0d | 1312 | K |
| C.KP.PSTD.SSW.1030 |  | Truss @ Roof level | 15d | 2026-09-24 | 2026-10-10 | C.KP.PSTD.SSW.1020 FF+7d |  |  |  | -83d | 0d | 1313 | K |
| C.KP.PSTD.SSW.1040 |  | Sheeting in Roof | 10d | 2026-10-06 | 2026-10-16 | C.KP.PSTD.SSW.1030 FF+5d |  |  |  | -83d | 0d | 1314 | K |
| C.KP.PSTD.SSW.1050 |  | Sheeting in Cladding | 10d | 2026-10-12 | 2026-10-22 | C.KP.PSTD.SSW.1040 FF+5d |  |  |  | -83d | 0d | 1315 | K |
|  | SP-II.C.KP.PSTD.WP | **Waterproofing works** |  | 2026-08-31 | 2026-11-09 |  |  |  |  |  |  |  |  |
| C.KP.PSTD.WP.1010 |  | Foundation waterproofing | 30d | 2026-08-31 | 2026-10-03 | C.KP.PSTD.CVRCC.1020 SS+5d |  |  |  | -74d | 0d | 1309 | K |
| C.KP.PSTD.WP.1020 |  | Tank waterproofing | 25d | 2026-10-12 | 2026-11-09 | C.KP.PSTD.CVRCC.1040 FS+21d |  |  |  | -80d | 0d | 680 | K |
|  | MEE | **Mechanical / Equipment Erection** |  | 2026-10-09 | 2026-10-31 |  |  |  |  |  |  |  |  |
| C.KP.PSTD.MEE.1010 |  | Return Water Pump | 20d | 2026-10-09 | 2026-10-31 | P.TM.PU.FR1050, C.KP.PSTD.SSW.1050 FF+8d |  |  |  | -83d | 0d | 1318 | K |
|  | EI | **E&I Works** |  | 2026-06-25 | 2026-10-31 |  |  |  |  |  |  |  |  |
| C.KP.PSTD.EI.1020 |  | Calibration of Equipments | 20d | 2026-06-25 | 2026-07-17 | P.KP.IN.1050 FS+5d |  |  |  | 7d | 90d | 1320 | K |
| C.KP.PSTD.EI.1010 |  | E&I works - Pumping Station at Tailing Dam | 25d | 2026-10-03 | 2026-10-31 | C.KP.PSTD.MEE.1010 FF, DE.KP.PSTD.1030, C.KP.PSTD.EI.1020 FF, MS7 - Erec.Mech.PESt SS, MS8 - Erec.Electr.St SS, MSI5 - Erec.Inst.St. SS |  |  |  | -83d | 0d | 745 | K |
|  | KP.TT | **Tailing Thickener** |  | 2025-02-15 | 2026-07-28 |  |  |  |  |  |  |  |  |
|  | CVRCC | **Civil/RCC Works** |  | 2025-02-15 | 2026-01-25 |  |  |  |  |  |  |  |  |
| C.KP.TT.CVRCC.1020 |  | Foundation | 20d | 2025-02-15 A | 2025-09-10 A | C.KP.EW.1250, DE.KP.TT.1020 SS+60d, MA1040 FS+30d, MA1070 FS+30d | 100% | 2025-04-05 | 2025-04-29 |  |  | 1323 | K |
| C.KP.TT.CVRCC.1030 |  | Pedestals & Tie Beams | 10d | 2025-03-26 A | 2025-11-25 A | C.KP.TT.CVRCC.1020 | 100% | 2025-05-03 | 2025-05-14 |  |  | 1324 | K |
| C.KP.TT.CVRCC.1040 |  | Walls up to Ground Floor | 25d | 2025-07-01 A | 2025-11-25 A | C.KP.TT.CVRCC.1020 | 100% | 2025-07-26 | 2025-08-27 |  |  | 1325 | K |
| C.KP.TT.CVRCC.1070 |  | Walls up From Ground to Roof Level | 25d | 2025-07-12 A | 2025-12-09 A | C.KP.TT.CVRCC.1060 | 100% | 2026-02-23 | 2026-03-25 |  |  | 1329 | K |
| C.KP.TT.CVRCC.1050 |  | Back filling | 10d | 2025-10-07 A | 2025-12-06 A | C.KP.TT.CVRCC.1040, C.KP.TT.CVRCC.1030, C.KP.TT.WW.1010 | 100% | 2025-12-18 | 2025-12-30 |  |  | 1326 | K |
| C.KP.TT.CVRCC.1060 |  | Slab @ Ground Level | 25d | 2025-12-09 A | 2026-01-05 A | C.KP.TT.CVRCC.1050 | 100% | 2026-02-19 | 2026-03-21 |  |  | 1328 | K |
| C.KP.TT.CVRCC.1080 |  | Slab @ Roof Level | 15d | 2025-12-19 A | 2026-01-25 A | C.KP.TT.CVRCC.1070 | 100% | 2026-02-19 | 2026-03-09 |  |  | 686 | K |

| ID | WBS | Activity | Duration | Start | Finish | Predecessors | Complete | Planned start | Planned finish | Total float | Free float | MSP Activity ID | Responsibility |
| --- | --- | --- | --- | --- | --- | --- | --- | --- | --- | --- | --- | --- | --- |
|  | WW | **Waterproofing Works** |  | 2025-02-15 | 2026-04-15 |  |  |  |  |  |  |  |  |
| C.KP.TT.WW.1010 |  | Foundation waterproofing | 20d | 2025-02-15 A | 2025-09-10 A | C.KP.TT.CVRCC.1020 SS+5d | 100% | 2026-02-05 | 2026-02-27 |  |  | 1327 | K |
| C.KP.TT.WW.1020 |  | Tank waterproofing | 25d | 2026-03-16 | 2026-04-15 | C.KP.TT.CVRCC.1080 FS+21d |  |  |  | -19d | 61d | 730 | K |
|  | MEE | **Mechanical / Equipment Erection** |  | 2026-03-16 | 2026-07-04 |  |  |  |  |  |  |  |  |
| C.KP.TT.MEE.1010 |  | Thickener | 15d | 2026-03-16 | 2026-04-03 | P.TM.TT.1050 |  |  |  | -14d | 0d | 1332 | K |
| C.KP.TT.MEE.1020 |  | Thickener Overflow Tank | 10d | 2026-04-04 | 2026-04-15 | C.KP.TT.MEE.1010 |  |  |  | -14d | 0d | 1333 | K |
| C.KP.TT.MEE.1030 |  | Flocculant Day Tank | 10d | 2026-04-16 | 2026-04-27 | C.KP.TT.MEE.1020 |  |  |  | -14d | 12.5d | 1334 | K |
| C.KP.TT.MEE.1040 |  | Flocculant Hopper | 10d | 2026-04-30 | 2026-05-13 | P.TM.FHSF.1050, C.KP.TT.MEE.1030 SS |  |  |  | -26.5d | 0d | 1335 | K |
| C.KP.TT.MEE.1050 |  | Flocculant Hopper Screw Feeder | 10d | 2026-05-08 | 2026-05-21 | P.TM.FHSF.1050, C.KP.TT.MEE.1040 FF+7d |  |  |  | -26.5d | 0d | 1336 | K |
| C.KP.TT.MEE.1060 |  | Agitator (Flocculant Prep Tank) | 10d | 2026-05-18 | 2026-05-29 | P.TM.AG.1050, C.KP.TT.MEE.1050 FF+7d |  |  |  | -26.5d | 0d | 1337 | K |
| C.KP.TT.MEE.1070 |  | Transfer Pump | 10d | 2026-05-26 | 2026-06-06 | P.TM.PU.SP.DO.TW1050, C.KP.TT.MEE.1060 FF+7d |  |  |  | -26.5d | 0d | 1338 | K |
| C.KP.TT.MEE.1080 |  | Flocculant Preparation Tank | 10d | 2026-06-03 | 2026-06-15 | P.TM.FHSF.1050, C.KP.TT.MEE.1070 FF+7d |  |  |  | -26.5d | 0d | 1339 | K |
| C.KP.TT.MEE.1090 |  | Dosing Pump | 10d | 2026-06-11 | 2026-06-23 | P.TM.PU.SP.DO.TW1050, C.KP.TT.MEE.1080 FF+7d |  |  |  | -26.5d | 0d | 1340 | K |
| C.KP.TT.MEE.1100 |  | Tailing Underflow Pump | 10d | 2026-06-23 | 2026-07-04 | P.TM.TUP.1050, C.KP.TT.MEE.1090 |  |  |  | -21.5d | 5d | 1341 | K |
|  | EI | **E&I Works** |  | 2026-06-08 | 2026-07-28 |  |  |  |  |  |  |  |  |
| C.KP.TT.EI.1020 |  | Calibration of Equipments | 20d | 2026-06-08 | 2026-06-30 | P.KP.IN.1050 FF+10d |  |  |  | -3d | 23.5d | 1343 | K |
| C.KP.TT.EI.1010 |  | E&I works - Tailing Thickener | 30d | 2026-06-23 | 2026-07-28 | C.KP.TT.MEE.1100 FF+15d, C.KP.TT.MEE.1090, C.KP.TT.MEE.1080, C.KP.TT.MEE.1070, C.KP.TT.MEE.1060, C.KP.TT.MEE.1050, C.KP.TT.MEE.1040, C.KP.TT.MEE.1030, C.KP.TT.MEE.1020, C.KP.TT.MEE.1010, DE.KP.TT.1030 FS+50d, DE.KP.TOT.1020 FF+90d, C.KP.TT.EI.1020 FF, MS7 - Erec.Mech.PESt SS, MS8 - Erec.Electr.St SS, MSI5 - Erec.Inst.St. SS |  |  |  | -26.5d | 0d | 743 | K |
|  | KP.POB | **Plant Office Building** |  | 2025-01-02 | 2026-07-27 |  |  |  |  |  |  |  |  |
|  | CVRCC | **Civil/RCC Works** |  | 2025-01-02 | 2025-10-27 |  |  |  |  |  |  |  |  |
| C.KP.MOB.CVRCC.1020 |  | Foundation | 20d | 2025-01-02 A | 2025-03-25 A | C.KP.EW.1260, DE.KP.POB.1020 SS+60d, MA1040 FS+30d, MA1070 FS+30d | 100% | 2025-06-28 | 2025-07-22 |  |  | 1346 | K |
| C.KP.MOB.CVRCC.1030 |  | Pedestals & Tie Beams | 10d | 2025-02-11 A | 2025-04-16 A | C.KP.MOB.CVRCC.1020 | 100% | 2025-04-26 | 2025-05-07 |  |  | 1347 | K |
| C.KP.MOB.CVRCC.1040 |  | Walls up to Ground Floor | 25d | 2025-02-11 A | 2025-04-16 A | C.KP.MOB.CVRCC.1020 | 100% | 2025-04-26 | 2025-05-24 |  |  | 1348 | K |
| C.KP.MOB.CVRCC.1050 |  | Back filling | 10d | 2025-04-04 A | 2025-04-16 A | C.KP.MOB.CVRCC.1040, C.KP.MOB.CVRCC.1030, C.KP.MOB.WW.1010 | 100% | 2025-05-26 | 2025-06-05 |  |  | 1349 | K |
| C.KP.MOB.CVRCC.1060 |  | Columns & Walls up From Ground to F1 Level | 15d | 2025-04-17 A | 2025-06-09 A | C.KP.MOB.CVRCC.1030 | 100% | 2025-06-25 | 2025-07-11 |  |  | 1351 | K |
| C.KP.MOB.CVRCC.1070 |  | Slab & Beams @ F1 Level | 10d | 2025-06-10 A | 2025-06-17 A | C.KP.MOB.CVRCC.1060 | 100% | 2025-07-12 | 2025-07-23 |  |  | 1352 | K |
| C.KP.MOB.CVRCC.1080 |  | Columns & Walls up From F1 to Terrace Level | 15d | 2025-07-02 A | 2025-07-25 A | C.KP.MOB.CVRCC.1070 | 100% | 2025-07-25 | 2025-08-12 |  |  | 1353 | K |
| C.KP.MOB.CVRCC.1090 |  | Slab & Beams @ Terrace Level | 10d | 2025-09-18 A | 2025-09-25 A | C.KP.MOB.CVRCC.1080 | 100% | 2025-10-25 | 2025-11-06 |  |  | 1354 | K |
| C.KP.MOB.CVRCC.1100 |  | Above Terrace works | 15d | 2025-10-10 A | 2025-10-27 A | C.KP.MOB.CVRCC.1090 | 100% | 2025-10-25 | 2025-11-12 |  |  | 683 | K |

| ID | WBS | Activity | Duration | Start | Finish | Predecessors | Complete | Remaining | Planned start | Planned finish | Total float | Free float | MSP Activity ID | Responsibility |
| --- | --- | --- | --- | --- | --- | --- | --- | --- | --- | --- | --- | --- | --- | --- |
|  | FW | **Finishing Works** |  | 2025-10-01 | 2026-06-09 |  |  |  |  |  |  |  |  |  |
| C.KP.MOB.FW.1010 |  | Masonry works | 30d | 2025-10-01 A | 2026-03-30 | DE.KP.POB.1010 SS+60d, C.KP.MOB.CVRCC.1090 | 85% | 11d | 2025-11-25 | 2025-12-30 | -70d | 0d | 1356 | K |
| C.KP.MOB.FW.1020 |  | Plastering works - Internal | 30d | 2026-01-02 A | 2026-04-16 | C.KP.MOB.FW.1010 FF+15d | 20% | 24d | 2026-02-05 | 2026-03-12 | -70d | 0d | 1357 | K |
| C.KP.MOB.FW.1030 |  | Flooring works | 45d | 2026-01-02 A | 2026-05-04 | C.KP.MOB.CVRCC.1050 FS+80d, C.KP.MOB.FW.1020 FF+15d | 25% | 33.75d | 2026-02-05 | 2026-04-01 | -70d | 0d | 1358 | K |
| C.KP.MOB.FW.1070 |  | Plastering works - External | 20d | 2026-03-04 A | 2026-05-04 | C.KP.MOB.FW.1020, C.KP.MOB.FW.1010 | 25% | 15d | 2026-04-17 | 2026-05-11 | -30d | 0d | 1361 | K |
| C.KP.MOB.FW.1040 |  | Painting works | 25d | 2026-04-23 | 2026-05-22 | C.KP.MOB.FW.1030 FF+15d, C.KP.MOB.FW.1020 |  |  |  |  | -30d | 0d | 1359 | K |
| C.KP.MOB.FW.1060 |  | Joinery works | 15d | 2026-05-05 | 2026-05-22 | C.KP.MOB.FW.1030, C.KP.MOB.FW.1020 |  |  |  |  | -70d | 10d | 723 | K |
| C.KP.MOB.FW.1080 |  | Cladding works | 25d | 2026-05-05 | 2026-06-03 | C.KP.MOB.FW.1070 |  |  |  |  | -30d | 50d | 718 | K |
| C.KP.MOB.FW.1050 |  | False Ceiling | 25d | 2026-05-12 | 2026-06-09 | C.KP.MOB.FW.1040 FF+15d |  |  |  |  | -30d | 0d | 1360 | K |
|  | WW | **Waterproofing Works** |  | 2025-03-02 | 2026-04-22 |  |  |  |  |  |  |  |  |  |
| C.KP.MOB.WW.1010 |  | Foundation waterproofing | 20d | 2025-03-02 A | 2025-03-25 A | C.KP.MOB.CVRCC.1020 SS+5d | 100% |  | 2026-02-05 | 2026-02-27 |  |  | 1350 | K |
| C.KP.MOB.WW.1030 |  | Terrace waterproofing | 20d | 2026-03-16 | 2026-04-09 | C.KP.MOB.CVRCC.1100 |  |  |  |  | -34d | 46d | 688 | K |
| C.KP.MOB.WW.1020 |  | Toilet waterproofing | 20d | 2026-03-31 | 2026-04-22 | C.KP.MOB.FW.1010 |  |  |  |  | -45d | 35d | 710 | K |
|  | MEP | **MEP Works** |  | 2026-03-16 | 2026-07-27 |  |  |  |  |  |  |  |  |  |
| C.KP.MOB.MEP.1020 |  | Utility works | 50d | 2026-03-16 | 2026-05-15 | C.KP.MOB.CVRCC.1090, MSI6 - Erec.UtilityS SS |  |  |  |  | -54d | 6d | 796 | K |
| C.KP.MOB.MEP.1030 |  | FF & FA works | 50d | 2026-03-16 | 2026-05-15 | C.KP.MOB.CVRCC.1090 |  |  |  |  | -14d | 65d | 792 | K |
| C.KP.MOB.MEP.1010 |  | Electrical works | 50d | 2026-04-10 | 2026-06-08 | C.KP.MOB.FW.1010, DE.KP.POB.1030 FS+75d |  |  |  |  | -9d | 70d | 787 | K |
| C.KP.MOB.MEP.1050 |  | PA system works | 15d | 2026-06-10 | 2026-06-26 | C.KP.MOB.FW.1020, C.KP.MOB.FW.1050 |  |  |  |  | -30d | 49d | 789 | K |
| C.KP.MOB.MEP.1040 |  | HVAC works | 15d | 2026-07-10 | 2026-07-27 | P.KP.VS1050, P.KP.AC.1050, C.KP.MOB.CVRCC.1090, MSI6 - Erec.UtilityS SS |  |  |  |  | 24d | 84d | 794 | K |
|  | KP.OAB | **Outdoor Ablution Block** |  | 2026-03-16 | 2026-08-18 |  |  |  |  |  |  |  |  |  |
|  | CVRCC | **Civil/RCC Works** |  | 2026-03-16 | 2026-06-02 |  |  |  |  |  |  |  |  |  |
| C.KP.OAB.CVRCC.1020 |  | Foundation | 15d | 2026-03-16 | 2026-04-03 | C.KP.EW.1270, DE.MISC,1050 SS+60d, C.KP.MOB.CVRCC.1020, MA1040 FS+30d, MA1070 FS+30d |  |  |  |  | -69d | 0d | 1366 | K |
| C.KP.OAB.CVRCC.1030 |  | Pedestals & Tie Beams | 10d | 2026-04-04 | 2026-04-15 | C.KP.OAB.CVRCC.1020 |  |  |  |  | -9d | 5d | 1367 | K |
| C.KP.OAB.CVRCC.1040 |  | Walls up to Ground Floor | 15d | 2026-04-04 | 2026-04-21 | C.KP.OAB.CVRCC.1020 |  |  |  |  | -69d | 0d | 1368 | K |
| C.KP.OAB.CVRCC.1050 |  | Back filling | 5d | 2026-04-22 | 2026-04-27 | C.KP.OAB.CVRCC.1040, C.KP.OAB.CVRCC.1030, C.KP.OAB.WW.1010 |  |  |  |  | -14d | 55d | 1369 | K |
| C.KP.OAB.CVRCC.1060 |  | Columns & Walls up From Ground to Terrace Level | 15d | 2026-04-22 | 2026-05-08 | C.KP.OAB.CVRCC.1040 |  |  |  |  | -69d | 0d | 1371 | K |
| C.KP.OAB.CVRCC.1070 |  | Slab & Beams @ Terrace Level | 10d | 2026-05-11 | 2026-05-21 | C.KP.OAB.CVRCC.1060 |  |  |  |  | -69d | 0d | 1372 | K |
| C.KP.OAB.CVRCC.1080 |  | Above Terrace works | 10d | 2026-05-22 | 2026-06-02 | C.KP.OAB.CVRCC.1070 |  |  |  |  | -69d | 0d | 694 | K |

| ID | WBS | Activity | Duration | Start | Finish | Predecessors | Total float | Free float | MSP Activity ID | Responsibility |
| --- | --- | --- | --- | --- | --- | --- | --- | --- | --- | --- |
|  | FW | **Finishing Works** |  | 2026-06-03 | 2026-08-18 |  |  |  |  |  |
| C.KP.OAB.FW.1010 |  | Masonry works | 25d | 2026-06-03 | 2026-07-01 | C.KP.OAB.CVRCC.1080, DE.MISC,1030 SS+60d | -69d | 0d | 1374 | K |
| C.KP.OAB.FW.1020 |  | Plastering works - Internal | 20d | 2026-07-02 | 2026-07-24 | C.KP.OAB.FW.1010 | -64d | 0d | 1375 | K |
| C.KP.OAB.FW.1030 |  | Flooring works | 25d | 2026-07-02 | 2026-07-30 | C.KP.OAB.CVRCC.1050, C.KP.OAB.FW.1010, C.KP.OAB.WW.1020 SS | -69d | 0d | 1376 | K |
| C.KP.OAB.FW.1060 |  | Plastering works - External | 15d | 2026-07-02 | 2026-07-18 | C.KP.OAB.FW.1010 | -59d | 10d | 1378 | K |
| C.KP.OAB.FW.1050 |  | Joinery works | 15d | 2026-07-25 | 2026-08-11 | C.KP.OAB.FW.1020 | -64d | 16d | 706 | K |
| C.KP.OAB.FW.1040 |  | Painting works | 15d | 2026-07-31 | 2026-08-18 | C.KP.OAB.FW.1020, C.KP.OAB.FW.1030, C.KP.OAB.FW.1060 | -69d | 11d | 697 | K |
|  | WW | **Waterproofing Works** |  | 2026-03-23 | 2026-07-24 |  |  |  |  |  |
| C.KP.OAB.WW.1010 |  | Foundation waterproofing | 15d | 2026-03-23 | 2026-04-09 | C.KP.OAB.CVRCC.1020 SS+5d | -4d | 10d | 1370 | K |
| C.KP.OAB.WW.1030 |  | Terrace waterproofing | 15d | 2026-06-03 | 2026-06-19 | C.KP.OAB.CVRCC.1080 | -69d | 11d | 704 | K |
| C.KP.OAB.WW.1020 |  | Toilet waterproofing | 20d | 2026-07-02 | 2026-07-24 | C.KP.OAB.FW.1010 | -69d | 0d | 1377 | K |
|  | MEP | **MEP Works** |  | 2026-06-16 | 2026-07-24 |  |  |  |  |  |
| C.KP.OAB.MEP.1020 |  | Utility works | 20d | 2026-06-16 | 2026-07-08 | C.KP.OAB.CVRCC.1070 FS+21d, MSI6 - Erec.UtilityS SS | -60d | 0d | 795 | K |
| C.KP.OAB.MEP.1010 |  | Electrical works | 20d | 2026-07-02 | 2026-07-24 | C.KP.OAB.FW.1010 | -49d | 30d | 790 | K |
|  | KP.SO | **Security Office** |  | 2026-04-04 | 2026-08-05 |  |  |  |  |  |
|  | CVRCC | **Civil/RCC Works** |  | 2026-04-04 | 2026-06-08 |  |  |  |  |  |
| C.KP.SO.CVRCC.1020 |  | Foundation | 15d | 2026-04-04 | 2026-04-21 | C.KP.EW.1280, DE.MISC,1050 SS+60d, C.KP.OAB.CVRCC.1020, MA1040 FS+30d, MA1070 FS+30d | -69d | 0d | 1383 | K |
| C.KP.SO.CVRCC.1030 |  | Pedestals & Tie Beams | 10d | 2026-04-22 | 2026-05-02 | C.KP.SO.CVRCC.1020 | -69d | 0d | 1384 | K |
| C.KP.SO.CVRCC.1040 |  | Walls up to Ground Floor | 10d | 2026-04-22 | 2026-05-02 | C.KP.SO.CVRCC.1020 | -69d | 0d | 1385 | K |
| C.KP.SO.CVRCC.1050 |  | Back filling | 5d | 2026-05-04 | 2026-05-08 | C.KP.SO.CVRCC.1040, C.KP.SO.CVRCC.1030, C.KP.SO.WW.1010 | -34d | 15d | 1386 | K |
| C.KP.SO.CVRCC.1060 |  | Columns & Walls up From Ground to Terrace Level | 15d | 2026-05-04 | 2026-05-21 | C.KP.SO.CVRCC.1040 | -69d | 0d | 1388 | K |
| C.KP.SO.CVRCC.1090 |  | Columns / Pillars for Gate & Fencing - 3 Nos. | 15d | 2026-05-04 | 2026-05-21 | C.KP.SO.CVRCC.1030 | -69d | 11d | 720 | K |
| C.KP.SO.CVRCC.1070 |  | Slab & Beams @ Terrace Level | 10d | 2026-05-22 | 2026-06-02 | C.KP.SO.CVRCC.1060 | -69d | 0d | 1389 | K |
| C.KP.SO.CVRCC.1080 |  | Above Terrace works | 5d | 2026-06-03 | 2026-06-08 | C.KP.SO.CVRCC.1070 | -69d | 0d | 1390 | K |

| ID | WBS | Activity | Duration | Start | Finish | Predecessors | Complete | Remaining | Planned start | Planned finish | Total float | Free float | MSP Activity ID | Responsibility |
| --- | --- | --- | --- | --- | --- | --- | --- | --- | --- | --- | --- | --- | --- | --- |
|  | FW | **Finishing Works** |  | 2026-06-09 | 2026-08-05 |  |  |  |  |  |  |  |  |  |
| C.KP.SO.FW.1010 |  | Masonry works | 20d | 2026-06-09 | 2026-07-01 | C.KP.SO.CVRCC.1080, DE.MISC,1030 SS+60d |  |  |  |  | -69d | 0d | 1392 | K |
| C.KP.SO.FW.1020 |  | Plastering works - Internal | 15d | 2026-07-02 | 2026-07-18 | C.KP.SO.FW.1010 |  |  |  |  | -64d | 0d | 1393 | K |
| C.KP.SO.FW.1030 |  | Flooring works | 15d | 2026-07-02 | 2026-07-18 | C.KP.SO.CVRCC.1050 FS+30d, C.KP.SO.FW.1010, C.KP.SO.WW.1020 SS |  |  |  |  | -49d | 15d | 1394 | K |
| C.KP.SO.FW.1060 |  | Plastering works - External | 15d | 2026-07-02 | 2026-07-18 | C.KP.SO.FW.1010 |  |  |  |  | -64d | 0d | 1396 | K |
| C.KP.SO.FW.1040 |  | Painting works | 15d | 2026-07-20 | 2026-08-05 | C.KP.SO.FW.1010, C.KP.SO.FW.1030 SS, C.KP.SO.FW.1060 |  |  |  |  | -64d | 16d | 713 | K |
| C.KP.SO.FW.1050 |  | Joinery works | 15d | 2026-07-20 | 2026-08-05 | C.KP.SO.FW.1020 |  |  |  |  | -64d | 16d | 684 | K |
|  | WW | **Waterproofing Works** |  | 2026-04-10 | 2026-07-13 |  |  |  |  |  |  |  |  |  |
| C.KP.SO.WW.1010 |  | Foundation waterproofing | 15d | 2026-04-10 | 2026-04-27 | C.KP.SO.CVRCC.1020 SS+5d |  |  |  |  | -29d | 5d | 1387 | K |
| C.KP.SO.WW.1030 |  | Terrace waterproofing | 15d | 2026-06-09 | 2026-06-25 | C.KP.SO.CVRCC.1080 |  |  |  |  | -69d | 11d | 691 | K |
| C.KP.SO.WW.1020 |  | Toilet waterproofing | 10d | 2026-07-02 | 2026-07-13 | C.KP.SO.FW.1010 |  |  |  |  | -49d | 0d | 1395 | K |
|  | MEP | **MEP Works** |  | 2026-06-03 | 2026-07-18 |  |  |  |  |  |  |  |  |  |
| C.KP.SO.MEP.1020 |  | PHE works | 15d | 2026-06-03 | 2026-06-19 | C.KP.SO.CVRCC.1070, MSI6 - Erec.UtilityS SS |  |  |  |  | -44d | 16d | 793 | K |
| C.KP.SO.MEP.1010 |  | Electrical works | 15d | 2026-07-02 | 2026-07-18 | C.KP.SO.FW.1010 |  |  |  |  | -69d | 10d | 791 | K |
|  | KP.LCSS | **LCSS Building** |  | 2026-01-12 | 2026-08-24 |  |  |  |  |  |  |  |  |  |
|  | CVRCC | **Civil / RCC works** |  | 2026-01-12 | 2026-07-07 |  |  |  |  |  |  |  |  |  |
| C.KP.LCSS.CVRCC.1020 |  | Foundation | 30d | 2026-01-12 A | 2026-02-25 A | C.KP.EW.1290 FF+5d, DE.KP.LCSS.1020, MA1040 FS+30d, MA1070 FS+30d | 100% |  | 2026-01-19 | 2026-02-23 |  |  | 1401 | K |
| C.KP.LCSS.CVRCC.1030 |  | Pedestals & Tie Beams | 20d | 2026-02-10 A | 2026-02-27 A | C.KP.LCSS.CVRCC.1020 FF+15d | 100% |  | 2026-03-13 | 2026-04-07 |  |  | 1402 | K |
| C.KP.LCSS.CVRCC.1040 |  | Walls up to Ground Floor | 10d | 2026-02-12 A | 2026-03-28 | C.KP.LCSS.CVRCC.1020 | 25% | 10d | 2026-03-16 | 2026-03-28 | -49d | 0d | 1403 | K |
| C.KP.LCSS.CVRCC.1050 |  | Back filling | 15d | 2026-03-30 | 2026-04-15 | C.KP.LCSS.CVRCC.1040, C.KP.LCSS.CVRCC.1030, C.KP.LCSS.WW.1010 |  |  |  |  | -24d | 15d | 1404 | K |
| C.KP.LCSS.CVRCC.1060 |  | Columns & Walls up From Ground to F1 Level | 15d | 2026-03-30 | 2026-04-15 | C.KP.LCSS.CVRCC.1040 |  |  |  |  | -49d | 0d | 1406 | K |
| C.KP.LCSS.CVRCC.1070 |  | Slab & Beams @ F1 Level | 10d | 2026-04-16 | 2026-04-27 | C.KP.LCSS.CVRCC.1060 |  |  |  |  | -49d | 0d | 1407 | K |
| C.KP.LCSS.CVRCC.1080 |  | Columns & Walls up From F1 to F2 Level | 15d | 2026-04-28 | 2026-05-15 | C.KP.LCSS.CVRCC.1070 |  |  |  |  | -49d | 0d | 1408 | K |
| C.KP.LCSS.CVRCC.1090 |  | Slab & Beams @ F2 Level | 10d | 2026-05-16 | 2026-05-27 | C.KP.LCSS.CVRCC.1080 |  |  |  |  | -49d | 0d | 1409 | K |
| C.KP.LCSS.CVRCC.1100 |  | Columns & Walls up From F2 to Terrace Level | 15d | 2026-05-28 | 2026-06-13 | C.KP.LCSS.CVRCC.1090 |  |  |  |  | -49d | 0d | 1410 | K |
| C.KP.LCSS.CVRCC.1110 |  | Slab & Beams @ Terrace Level | 10d | 2026-06-15 | 2026-06-25 | C.KP.LCSS.CVRCC.1100 |  |  |  |  | -49d | 0d | 1411 | K |
| C.KP.LCSS.CVRCC.1120 |  | Above Terrace works | 10d | 2026-06-26 | 2026-07-07 | C.KP.LCSS.CVRCC.1110 |  |  |  |  | -49d | 0d | 708 | K |

| ID | WBS | Activity | Duration | Start | Finish | Predecessors | Complete | Planned start | Planned finish | Total float | Free float | MSP Activity ID | Responsibility |
| --- | --- | --- | --- | --- | --- | --- | --- | --- | --- | --- | --- | --- | --- |
|  | FW | **Finishing Works** |  | 2026-06-19 | 2026-08-24 |  |  |  |  |  |  |  |  |
| C.KP.LCSS.FW.1010 |  | Masonry works | 21d | 2026-06-19 | 2026-07-13 | C.KP.LCSS.CVRCC.1120 FF+5d, DE.KP.LCSS.1010 SS+60d |  |  |  | -49d | 0d | 1413 | K |
| C.KP.LCSS.FW.1030 |  | Flooring works | 10d | 2026-07-02 | 2026-07-13 | C.KP.LCSS.CVRCC.1050 FS+50d, C.KP.LCSS.FW.1010 FF |  |  |  | -39d | 0d | 1415 | K |
| C.KP.LCSS.FW.1020 |  | Plastering works - Internal | 20d | 2026-07-14 | 2026-08-05 | C.KP.LCSS.FW.1010 |  |  |  | -49d | 0d | 1414 | K |
| C.KP.LCSS.FW.1060 |  | Plastering works - External | 20d | 2026-07-14 | 2026-08-05 | C.KP.LCSS.FW.1010 |  |  |  | -49d | 0d | 1416 | K |
| C.KP.LCSS.FW.1040 |  | Painting works | 15d | 2026-08-06 | 2026-08-24 | C.KP.LCSS.FW.1020 |  |  |  | -49d | 31d | 709 | K |
| C.KP.LCSS.FW.1050 |  | Joinery works | 15d | 2026-08-06 | 2026-08-24 | C.KP.LCSS.FW.1030, C.KP.LCSS.FW.1020 |  |  |  | -49d | 31d | 725 | K |
| C.KP.LCSS.FW.1070 |  | Cladding works | 15d | 2026-08-06 | 2026-08-24 | C.KP.LCSS.FW.1060 |  |  |  | -49d | 31d | 726 | K |
|  | WW | **Waterproofing Works** |  | 2026-01-12 | 2026-07-30 |  |  |  |  |  |  |  |  |
| C.KP.LCSS.WW.1010 |  | Foundation waterproofing | 20d | 2026-01-12 A | 2026-02-25 A | C.KP.LCSS.CVRCC.1020 SS+5d | 100% | 2026-02-05 | 2026-02-27 |  |  | 1405 | K |
| C.KP.LCSS.WW.1020 |  | Terrace waterproofing | 20d | 2026-07-08 | 2026-07-30 | C.KP.LCSS.CVRCC.1120 |  |  |  | -24d | 56d | 712 | K |
|  | MEP | **MEP Works** |  | 2026-06-26 | 2026-08-11 |  |  |  |  |  |  |  |  |
| C.KP.LCSS.MEP.1020 |  | FF & FDA works | 25d | 2026-06-26 | 2026-07-24 | C.KP.LCSS.FW.1030 FF+10d, P.KP.TS.1050 FF+7d, DE.KP.LCSS.1030 |  |  |  | -24d | 15d | 1420 | K |
| C.KP.LCSS.MEP.1030 |  | HVAC works | 25d | 2026-06-26 | 2026-07-24 | C.KP.LCSS.FW.1030 FF+10d, P.KP.VS1050, P.KP.AC.1050 FF+7d, DE.KP.LCSS.1040 |  |  |  | -24d | 0d | 1421 | K |
| C.KP.LCSS.MEP.1060 |  | LT Switchgear | 25d | 2026-06-26 | 2026-07-24 | C.KP.LCSS.FW.1030 FF+10d, P.KP.LTSGP.1050 FF+5d, DE.KP.LCSS.1030 |  |  |  | -24d | 15d | 1424 | K |
| C.KP.LCSS.MEP.1070 |  | LT MCC | 25d | 2026-06-26 | 2026-07-24 | C.KP.LCSS.FW.1030 FF+10d, P.KP.LTMP.1050 FF+5d, DE.KP.LCSS.1030, P.KP.HTPC.1050, P.KP.LTPC.1050 FF+5d |  |  |  | -24d | 15d | 1425 | K |
| C.KP.LCSS.MEP.1090 |  | Cable Try Erection | 25d | 2026-06-26 | 2026-07-24 | C.KP.LCSS.FW.1030 FF+10d, P.KP.CT.1050 |  |  |  | -24d | 15d | 1426 | K |
| C.KP.LCSS.MEP.1100 |  | Cable Laying & Termination works | 25d | 2026-06-26 | 2026-07-24 | C.KP.LCSS.FW.1030 FF+10d, P.KP.HTPC.1050, P.KP.LTPC.1050 FF+5d |  |  |  | -24d | 15d | 1427 | K |
| C.KP.LCSS.MEP.1110 |  | VFD Pannels & PLC | 25d | 2026-06-26 | 2026-07-24 | C.KP.LCSS.FW.1030 FF+10d, P.KP.VFD.1050 |  |  |  | -24d | 15d | 1428 | K |
| C.KP.LCSS.MEP.1120 |  | Battery Charger, Battery Bank, UPS & Other works | 25d | 2026-06-26 | 2026-07-24 | C.KP.LCSS.FW.1030 FF+10d, P.KP.UPS.1050, P.KP.BB&C.1050 |  |  |  | -24d | 15d | 1429 | K |
| C.KP.LCSS.MEP.1130 |  | Automation system | 25d | 2026-06-26 | 2026-07-24 | C.KP.LCSS.FW.1030 FF+10d, P.KP.AS.1050 FF+5d, DE.KP.LCSS.1030, P.KP.UPS.1050 |  |  |  | -24d | 15d | 740 | K |
| C.KP.LCSS.MEP.1140 |  | Calibration of Equipments | 25d | 2026-06-26 | 2026-07-24 | C.KP.LCSS.FW.1030 FF+10d, P.KP.IN.1050, C.KP.LCSS.MEP.1030 SS |  |  |  | -14d | 0d | 1430 | K |
| C.KP.LCSS.MEP.1040 |  | Telephone system works | 15d | 2026-07-14 | 2026-07-30 | C.KP.LCSS.FW.1030, P.KP.TS.1050, DE.KP.LCSS.1030 |  |  |  | -29d | 10d | 1422 | K |
| C.KP.LCSS.MEP.1050 |  | HV MCC | 15d | 2026-07-14 | 2026-07-30 | C.KP.LCSS.FW.1030, P.KP.HVM.1050, DE.KP.LCSS.1040, P.KP.BB&C.1050 |  |  |  | -29d | 10d | 1423 | K |
| C.KP.LCSS.MEP.1150 |  | Testing & Charging | 5d | 2026-07-20 | 2026-07-24 | C.KP.LCSS.FW.1030 FF+10d, C.KP.LCSS.MEP.1140 FF |  |  |  | -14d | 65d | 788 | K |
| C.KP.LCSS.MEP.1010 |  | Transformer | 15d | 2026-07-25 | 2026-08-11 | C.KP.LCSS.FW.1030 FS+10d, P.KP.TR1050 FF+10d, DE.KP.LCSS.1030 |  |  |  | -39d | 0d | 1419 | K |

| ID | WBS | Activity | Type | Duration | Start | Finish | Predecessors | Total float | Free float | MSP Activity ID | Responsibility |
| --- | --- | --- | --- | --- | --- | --- | --- | --- | --- | --- | --- |
|  | KP.MIS | **Other / Misc. Structures** |  |  | 2026-03-16 | 2026-11-25 |  |  |  |  |  |
|  | CP | **Control Pulpits** |  |  | 2026-08-11 | 2026-11-06 |  |  |  |  |  |
| C.KP.MIS.CP.1040 |  | E&I works |  | 75d | 2026-08-11 | 2026-11-06 | C.KP.MIS.CP.1030 FF+10d, DE.MISC,1060 SS+90d, MS7 - Erec.Mech.PESt SS, MS8 - Erec.Electr.St SS, MSI5 - Erec.Inst.St. SS | -78d | 1d | 759 | K |
| C.KP.MIS.CP.1010 |  | Civil / RCC works |  | 30d | 2026-09-05 | 2026-10-09 | C.KP.EW.1320, DE.MISC,1050 SS+60d, MA1040 FS+30d, MA1070 FS+30d | -78d | 0d | 1433 | K |
| C.KP.MIS.CP.1020 |  | Str. Steel works |  | 30d | 2026-09-14 | 2026-10-17 | C.KP.MIS.CP.1010 FF+7d, DE.MISC,1040 SS+120d | -78d | 0d | 1434 | K |
| C.KP.MIS.CP.1030 |  | Roofing / Cladding |  | 20d | 2026-10-03 | 2026-10-26 | C.KP.MIS.CP.1020 FF+7d | -78d | 0d | 1435 | K |
|  | ET | **Electrical Trenches** |  |  | 2026-06-15 | 2026-11-25 |  |  |  |  |  |
| C.MIS.ET.1020 |  | E&I works |  | 140d | 2026-06-15 | 2026-11-25 | C.MIS.ET.1010 FF+10d, DE.MISC,1060 SS+90d, MS7 - Erec.Mech.PESt SS, MS8 - Erec.Electr.St SS, MSI5 - Erec.Inst.St. SS | -79d | 0d | 742 | K |
| C.MIS.ET.1010 |  | Civil / RCC works |  | 60d | 2026-09-05 | 2026-11-13 | C.KP.EW.1320, DE.MISC,1050 SS+60d, MA1040 FS+30d, MA1070 FS+30d | -79d | 0d | 700 | K |
|  | CG | **Cable Gallery** |  |  | 2026-07-31 | 2026-11-19 |  |  |  |  |  |
| C.MIS.CG.1010 |  | Civil / RCC works |  | 30d | 2026-07-31 | 2026-09-04 | C.KP.EW.1320 FF, DE.MISC,1050 SS+60d, DE.KP.PCG.1020 FS+25d, MA1070 FS+30d | -74d | 0d | 721 | K |
| C.MIS.CG.1020 |  | Str. Steel works |  | 70d | 2026-08-19 | 2026-11-07 | C.MIS.CG.1010 SS+15d, DE.MISC,1040 SS+120d | -74d | 0d | 1438 | K |
| C.MIS.CG.1030 |  | E&I works |  | 75d | 2026-08-25 | 2026-11-19 | C.MIS.CG.1020 FF+10d, DE.MISC,1060 SS+90d, MS7 - Erec.Mech.PESt SS, MS8 - Erec.Electr.St SS, MSI5 - Erec.Inst.St. SS | -74d | 5d | 750 | K |
|  | OGPS | **On ground pipe support** |  |  | 2026-03-23 | 2026-09-16 |  |  |  |  |  |
| C.MIS.OGPS.1020 |  | Laying of Pipe line |  | 150d | 2026-03-23 | 2026-09-16 | C.MIS.OGPS.1010 FF+10d, DE.MISC,1020 SS+90d | -19d | 60d | 747 | K |
| C.MIS.OGPS.1010 |  | Civil / RCC works |  | 50d | 2026-07-08 | 2026-09-04 | C.KP.EW.1320 FF, DE.MISC,1050 SS+60d, BE.KP.U.1060, MA1040 FS+30d, MA1070 FS+30d | -19d | 0d | 695 | K |
|  | DN | **Drain** |  |  | 2026-03-16 | 2026-08-05 |  |  |  |  |  |
| C.MIS.DN.1010 |  | Civil / RCC works |  | 120d | 2026-03-16 | 2026-08-05 | DE.KP.RD.1010 FF+10d, MA1040 FS+30d, MA1070 FS+30d | -14d | 66d | 690 | K |
|  | EL | **Earthling & Lightening** |  |  | 2026-10-03 | 2026-11-06 |  |  |  |  |  |
| EL |  | Earthling & Lightening |  | 30d | 2026-10-03 | 2026-11-06 | P.KP.E&LM.1050, C.KP.CB.EI.1010 SS, C.KP.HBF.EI.1010 SS, C.KP.TCP.EI.1010 SS, C.KP.TH3.EI.1010 SS, C.KP.TH4.EI.1010 SS, C.KP.TH5.EI.1010 SS, C.KP.TH6.EI.1010 SS, C.KP.C801.EI.1010 SS, C.KP.C806.EI.1010 SS, C.KP.C809.EI.1010 SS, C.KP.C810.EI.1010 SS, C.KP.C823.EI.1010 SS, C.KP.C829.EI.1010 SS, C.KP.C832.EI.1010 SS, C.KP.DFDS.EI.1010 SS, C.KP.FFPH.EI.1010 SS, C.KP.PWPH.EI.1010 SS, C.KP.WB.EI.1010 SS, C.KP.PSTD.EI.1010 SS, C.KP.MIS.CP.1040 SS, C.MIS.ET.1020 SS, C.MIS.CG.1030 SS | -63d | 20d | 868 | K |
|  | PC | **Pre-commissioning Activities / Preliminary Acceptance** |  |  | 2026-07-28 | 2026-11-26 |  |  |  |  |  |
| SP-II.PC.1130.TT |  | Tailing Thickener |  | 25d | 2026-07-28 | 2026-08-27 | C.KP.TT.EI.1010, P.KP.E&LM.1050 FS+60d, P.KP.P&F.1050, P.KP.V.1050, P.KP.IN.1050 | -26.5d | 0d | 1455 | K/T/H |
| SP-II.PC.1080.DFDS |  | Compressor Cum Dust Suppression Pump House |  | 25d | 2026-07-31 | 2026-08-29 | C.KP.DFDS.EI.1010, P.KP.CT.1050 FS+75d, P.KP.E&LM.1050 FS+50d, P.KP.LTCC.1050 FS+58d, P.KP.P&F.1050, P.KP.V.1050, P.KP.IN.1050 | -29d | 0d | 1450 | K/T/H |
| SP-II.PC.1010.SB |  | Silo Building |  | 25d | 2026-08-12 | 2026-09-10 | C.KP.SB.EI.1010, P.KP.CT.1050 FS+75d, P.KP.E&LM.1050 FS+50d, P.KP.LTCC.1050 FS+50d, C.KP.SB.MEE.1050 FF, P.KP.IN.1050 | -39d | 0d | 1443 | K/T/H |
| SP-II.PC.1110.CWS |  | Cooling Water system pumping station |  | 25d | 2026-08-12 | 2026-09-10 | C.KP.CWS.EI.1010, P.KP.E&LM.1050 FS+60d, P.KP.P&F.1050, P.KP.V.1050, P.KP.IN.1050 | -39d | 0d | 1453 | K/T/H |
| SP-II.PC.1140.LCSS |  | LCSS Building |  | 25d | 2026-08-12 | 2026-09-10 | C.KP.LCSS.MEP.1130, C.KP.LCSS.MEP.1070, C.KP.LCSS.MEP.1060, C.KP.LCSS.MEP.1050, C.KP.LCSS.MEP.1040, C.KP.LCSS.MEP.1030, C.KP.LCSS.MEP.1020, C.KP.LCSS.MEP.1010, P.KP.BD.1050 FS+40d, P.KP.CT.1050 FS+75d, P.KP.E&LM.1050 FS+40d, P.KP.VCB.1050 FS+50d, P.KP.LTCC.1050 FS+15d, P.KP.IN.1050, C.KP.LCSS.MEP.1090, C.KP.LCSS.MEP.1100, C.KP.LCSS.MEP.1110, C.KP.LCSS.MEP.1120 | -39d | 0d | 1456 | K/T/H |
| SP-II.PC.1040.HBF |  | HBF Building |  | 25d | 2026-08-19 | 2026-09-16 | C.KP.HBF.EI.1010, P.KP.CT.1050 FS+75d, P.KP.E&LM.1050 FS+80d, P.KP.LTCC.1050 FS+65d, P.KP.P&F.1050, P.KP.V.1050, P.KP.IN.1050 | -44d | 0d | 1446 | K/T/H |
| SP-II.PC.1030.CHB |  | Classifier & Hydrocyclone Building |  | 25d | 2026-08-24 | 2026-09-21 | C.KP.CB.EI.1010, P.KP.CT.1050 FS+75d, P.KP.E&LM.1050 FS+100d, P.KP.LTCC.1050 FS+75d, P.KP.P&F.1050, P.KP.V.1050, P.KP.IN.1050 | -48d | 0d | 1445 | K/T/H |
| SP-II.PC.1060.TH |  | Transfer House 3, 4, 5 & 6 |  | 25d | 2026-08-24 | 2026-09-21 | C.KP.TH3.EI.1010, C.KP.TH4.EI.1010, C.KP.TH5.EI.1010, C.KP.TH6.EI.1010, P.KP.CT.1050 FS+75d, P.KP.E&LM.1050 FS+100d, P.KP.LTCC.1050 FS+75d, P.KP.IN.1050 | -48d | 0d | 1448 | K/T/H |
| SP-II.PC.1090.FFPH |  | Fire Fighting Pump House |  | 25d | 2026-08-24 | 2026-09-21 | C.KP.FFPH.EI.1010, P.KP.E&LM.1050 FS+67d, P.KP.P&F.1050, P.KP.V.1050, P.KP.IN.1050 | -48d | 0d | 1451 | K/T/H |
| SP-II.PC.1100.PWPH |  | Process Water Pump House |  | 25d | 2026-08-25 | 2026-09-22 | C.KP.PWPH.EI.1010, P.KP.E&LM.1050 FS+60d, P.KP.P&F.1050, P.KP.P(CW).1050 FS+30d, P.KP.V.1050, P.KP.IN.1050 | -49d | 0d | 1452 | K/T/H |
| SP-II.PC.1050.TCP |  | Tertiary Crusher Plant |  | 25d | 2026-09-03 | 2026-10-01 | C.KP.TCP.EI.1010, P.KP.CT.1050 FS+75d, P.KP.E&LM.1050 FS+50d, P.KP.LTCC.1050 FS+25d, P.KP.P&F.1050, P.KP.V.1050, P.KP.IN.1050 | -57d | 0d | 1447 | K/T/H |
| SP-II.PC.1070.CDH |  | Conveyors incl. Drive House |  | 25d | 2026-09-21 | 2026-10-19 | C.KP.C801.EI.1010, C.KP.C806.EI.1010, C.KP.C809.EI.1010, C.KP.C810.EI.1010, C.KP.C823.EI.1010, C.KP.C829.EI.1010, C.KP.C832.EI.1010, P.KP.BCD.1050, P.KP.CT.1050 FS+75d, P.KP.E&LM.1050 FS+100d, P.KP.LTCC.1050 FS+75d, P.HT.CI.1050, P.KP.IN.1050 | -72d | 0d | 1449 | K/T/H |
| SP-II.PC.1020.SC |  | Screen Building |  | 25d | 2026-09-26 | 2026-10-26 | KP.SC.EI.1010, P.KP.CT.1050 FS+75d, P.KP.E&LM.1050 FS+100d, P.KP.LTCC.1050 FS+75d, P.KP.IN.1050 | -77.8d | 0d | 1444 | K/T/H |
| SP-II.PC.1120.PSTD |  | Tailing Dam Pump House |  | 25d | 2026-10-03 | 2026-10-31 | C.KP.PSTD.EI.1010 SS, P.KP.E&LM.1050 FS+25d, P.KP.P&F.1050, P.KP.V.1050, P.KP.IN.1050 | -83d | 0d | 1454 | K/T/H |
| MS9 - PAC Comp. |  | PAC Completion | milestone | 0d | 2026-11-26 | 2026-11-26 | P.KP.MISC.1050 FF, MS2 - DE FF, P.KP.CCTV.1050 FF+75d, P.KP.FDA.1050 FF, P.KP.WSE.1050 FF+50d, MS5 - Const.Comp. FF, MSI4 - Civil End FF, MS7 - Erec.Mech.PE FF, P.KP.BVM.1050 FF | -80d | 3d | 1457 | K/T/H |

| ID | WBS | Activity | Type | Duration | Start | Finish | Predecessors | Total float | Free float | MSP Activity ID | Responsibility |
| --- | --- | --- | --- | --- | --- | --- | --- | --- | --- | --- | --- |
|  | CM | **Commissioning Activities** |  |  | 2026-08-27 | 2026-11-30 |  |  |  |  |  |
| SP-II.CM.1130.TT10 |  | Tailing Thickener |  | 25d | 2026-08-27 | 2026-09-25 | SP-II.PC.1130.TT | -26.5d | 56.5d | 1471 | K/T/H |
| SP-II.CM.1080.DFDS10 |  | Compressor Cum Dust Suppression Pump House |  | 25d | 2026-08-31 | 2026-09-28 | SP-II.PC.1080.DFDS | -29d | 54d | 1466 | K/T/H |
| SP-II.CM.1010.SB10 |  | Silo Building |  | 25d | 2026-09-11 | 2026-10-09 | SP-II.PC.1010.SB | -39d | 44d | 1459 | K/T/H |
| SP-II.CM.1110.CWS10 |  | Cooling Water system pumping station |  | 25d | 2026-09-11 | 2026-10-09 | SP-II.PC.1110.CWS | -39d | 44d | 1469 | K/T/H |
| SP-II.CM.1140.LCSS10 |  | LCSS Building |  | 25d | 2026-09-11 | 2026-10-09 | SP-II.PC.1140.LCSS | -39d | 44d | 1472 | K/T/H |
| SP-II.CM.1040.HBF10 |  | HBF Building |  | 25d | 2026-09-17 | 2026-10-15 | SP-II.PC.1040.HBF | -44d | 39d | 1462 | K/T/H |
| SP-II.CM.1030.CHB10 |  | Classifier & Hydrocyclone Building |  | 25d | 2026-09-22 | 2026-10-20 | SP-II.PC.1030.CHB | -48d | 35d | 1461 | K/T/H |
| SP-II.CM.1060.TH10 |  | Transfer House 3, 4, 5 & 6 |  | 25d | 2026-09-22 | 2026-10-20 | SP-II.PC.1060.TH | -48d | 35d | 1464 | K/T/H |
| SP-II.CM.1090.FFPH10 |  | Fire Fighting Pump House |  | 25d | 2026-09-22 | 2026-10-20 | SP-II.PC.1090.FFPH | -48d | 35d | 1467 | K/T/H |
| SP-II.CM.1100.PWPH10 |  | Process Water Pump House |  | 25d | 2026-09-23 | 2026-10-21 | SP-II.PC.1100.PWPH | -49d | 34d | 1468 | K/T/H |
| SP-II.CM.1050.TCP10 |  | Tertiary Crusher Plant |  | 25d | 2026-10-02 | 2026-10-30 | SP-II.PC.1050.TCP | -57d | 26d | 1463 | K/T/H |
| SP-II.CM.1070.CDH10 |  | Conveyors |  | 25d | 2026-10-20 | 2026-11-17 | SP-II.PC.1070.CDH | -72d | 11d | 1465 | K/T/H |
| SP-II.CM.1020.SC10 |  | Screen Building |  | 25d | 2026-10-26 | 2026-11-24 | SP-II.PC.1020.SC | -77.8d | 5.2d | 1460 | K/T/H |
| SP-II.CM.1120.PSTD10 |  | Tailing Dam Pump House |  | 25d | 2026-11-02 | 2026-11-30 | SP-II.PC.1120.PSTD | -83d | 0d | 1470 | K/T/H |
| MS10 - Comm. Comp. |  | Commissioning Completion | milestone | 0d | 2026-11-30 | 2026-11-30 | SP-II.CM.1010.SB10, SP-II.CM.1020.SC10, SP-II.CM.1030.CHB10, SP-II.CM.1040.HBF10, SP-II.CM.1050.TCP10, SP-II.CM.1060.TH10, SP-II.CM.1070.CDH10, SP-II.CM.1080.DFDS10, SP-II.CM.1090.FFPH10, SP-II.CM.1100.PWPH10, SP-II.CM.1110.CWS10, SP-II.CM.1120.PSTD10, SP-II.CM.1130.TT10, SP-II.CM.1140.LCSS10, P.KP.WSE.1050 FF+50d, P.TM.DM.1050, MS9 - PAC Comp. FF | -83d | 0d | 1473 | K/T/H |

## Activity codes

| Code | Value | Meaning |
| --- | --- | --- |
| Responsibility | ALL | NMDC / MND / KPIL / TMML / HTIPL |
